# Vivienda RC

Schedule from MS Project XML, 2026-02-05 to 2026-08-07, A marks actual dates.

## Calendars

- Calendario Argentino 2024: Mon-Fri 09:00-13:00, 15:00-19:00; Sat-Sun off. Exceptions (off unless hours are given): 2024-12-25 to 2033-12-25 (Navidad, recurring), 2025-01-01 to 2034-01-01 (Año nuevo 2025, recurring), 2025-02-10 to 2034-02-10 (Carnaval 2025, recurring), 2025-03-24 to 2034-03-24 (Día Nacional de la Memoria por la Verdad y la Justicia, recurring), 2025-04-02 to 2034-04-02 (Día del Veterano y de los Caídos en la Guerra de Malvinas, recurring), 2025-05-01 to 2034-05-01 (Día del Trabajador, recurring), 2025-05-25 to 2034-05-25 (Dia de la revolucion de Mayo, recurring), 2025-06-20 to 2034-06-20 (Día de la Bandera, recurring), 2025-07-09 to 2034-07-09 (Día de la Independencia, recurring), 2025-08-18 to 2034-08-18 (Paso a la Inmortalidad del Gral. José de San Martín (17/08), recurring), 2025-10-13 to 2034-10-13 (Día del Respeto a la Diversidad Cultural (12/10), recurring), 2025-11-18 to 2034-11-18 (Día de la Soberanía Nacional (20/11), recurring), 2025-12-08 to 2034-12-08 (Día de la Virgen, recurring).

## Resources

| Resource |
| --- |
| Mariana V |

## Schedule

| ID | WBS | Task | Duration | Start | Finish | Predecessors | Complete | Remaining | Baseline start | Baseline finish | Baseline duration | Total slack | Resources | Work | Actual work | Texto1 | Texto2 | Texto3 |
| --- | --- | --- | --- | --- | --- | --- | --- | --- | --- | --- | --- | --- | --- | --- | --- | --- | --- | --- |
| 1 | 1 | **LOSA MOGUETTA** | 126d? | 2026-02-05 A | 2026-08-07 |  | 99% | 0.56d? | 2026-02-05 | 2026-05-14 | 67d? | 0d |  | 1808h | 1808h |  |  |  |
| 2 | 1.1 | Obra Losa Moguetta | 132d | 2026-02-05 A | 2026-08-07 A |  | 100% |  | 2026-02-05 | 2026-05-08 | 67d |  | Mariana V | 1056h | 1056h |  |  |  |
| 3 | 1.2 | **VIGAS ESTRUCTURALES** | 5d | 2026-02-05 A | 2026-02-12 A |  | 100% |  | 2026-02-05 | 2026-02-12 | 5d |  |  | 440h | 440h |  |  |  |
| 4 | 1.2.1 | ✔V1 0,30*0,33 | 5d | 2026-02-05 A | 2026-02-12 A |  | 100% |  | 2026-02-05 | 2026-02-12 | 5d |  | Mariana V | 40h | 40h | Albañileria | Planta Baja | Seguimiento |
| 5 | 1.2.2 | ✔V2 0,80*0,30 | 5d | 2026-02-05 A | 2026-02-12 A |  | 100% |  | 2026-02-05 | 2026-02-12 | 5d |  | Mariana V | 40h | 40h | Albañileria | Planta Baja | Seguimiento |
| 6 | 1.2.3 | ✔V3 0,50*0,30 | 5d | 2026-02-05 A | 2026-02-12 A |  | 100% |  | 2026-02-05 | 2026-02-12 | 5d |  | Mariana V | 40h | 40h | Albañileria | Planta Baja | Seguimiento |
| 7 | 1.2.4 | ✔V4 - V6 0,55*0,30 | 5d | 2026-02-05 A | 2026-02-12 A |  | 100% |  | 2026-02-05 | 2026-02-12 | 5d |  | Mariana V | 40h | 40h | Albañileria | Planta Baja | Seguimiento |
| 8 | 1.2.5 | ✔V20 0,60*0,30 | 5d | 2026-02-05 A | 2026-02-12 A |  | 100% |  | 2026-02-05 | 2026-02-12 | 5d |  | Mariana V | 40h | 40h | Albañileria | Planta Baja | Seguimiento |
| 9 | 1.2.6 | ✔V21 - 23 0,55*0,30 | 5d | 2026-02-05 A | 2026-02-12 A |  | 100% |  | 2026-02-05 | 2026-02-12 | 5d |  | Mariana V | 40h | 40h | Albañileria | Planta Baja | Seguimiento |
| 10 | 1.2.7 | ✔V22 0,30*0,18 | 5d | 2026-02-05 A | 2026-02-12 A |  | 100% |  | 2026-02-05 | 2026-02-12 | 5d |  | Mariana V | 40h | 40h | Albañileria | Planta Baja | Seguimiento |
| 11 | 1.2.8 | ✔V24 0,60*0,30 | 5d | 2026-02-05 A | 2026-02-12 A |  | 100% |  | 2026-02-05 | 2026-02-12 | 5d |  | Mariana V | 40h | 40h | Albañileria | Planta Baja | Seguimiento |
| 12 | 1.2.9 | ✔V5 (ajuste según plano) | 5d | 2026-02-05 A | 2026-02-12 A |  | 100% |  | 2026-02-05 | 2026-02-12 | 5d |  | Mariana V | 40h | 40h | Albañileria | Planta Baja | Seguimiento |
| 13 | 1.2.10 | ✔NB + NB2 (ajuste según plano) | 5d | 2026-02-05 A | 2026-02-12 A |  | 100% |  | 2026-02-05 | 2026-02-12 | 5d |  | Mariana V | 40h | 40h | Albañileria | Planta Baja | Seguimiento |
| 14 | 1.2.11 | ✔EH (ajuste según plano) | 5d | 2026-02-05 A | 2026-02-12 A |  | 100% |  | 2026-02-05 | 2026-02-12 | 5d |  | Mariana V | 40h | 40h | Albañileria | Planta Baja | Seguimiento |
| 15 | 1.3 | **LOSAS** | 64d? | 2026-02-05 A | 2026-05-11 |  | 98% | 1.6d? | 2026-02-11 | 2026-05-14 | 64d? | 62d |  | 312h | 312h |  |  |  |
| 16 | 1.3.1 | ✔Equipo de SINIS | 6d | 2026-02-11 A | 2026-02-18 A | 4FS-2d | 100% |  | 2026-02-11 | 2026-02-18 | 6d |  | Mariana V | 48h | 48h | Albañileria | Planta Baja |  |
| 17 | 1.3.2 | ✔LNPB Losa Nervurada 30 cm | 23d | 2026-02-16 A | 2026-03-18 A | 16FS-3d | 100% |  | 2026-02-16 | 2026-03-30 | 30d |  | Mariana V | 184h | 184h | Albañileria | Planta Baja | Seguimiento |
| 18 | 1.3.3 | Desencofrado | 7d | 2026-04-27 A | 2026-05-06 A | 17FS+37ed | 100% |  | 2026-04-30 | 2026-05-11 | 7d |  | Mariana V | 56h | 56h | Albañileria | Planta Baja | Seguimiento |
| 19 | 1.3.4 | Devolución de SINIS | 3d | 2026-05-07 A | 2026-05-11 A | 18 | 100% |  | 2026-05-12 | 2026-05-14 | 3d |  | Mariana V | 24h | 24h | Albañileria | Planta Baja | Seguimiento |
