# VIvienda Hermanos Rossi

Schedule from MS Project XML, 2025-07-01 to 2028-04-10, A marks actual dates.

## Calendars

- Calendario Argentino 2024: Mon-Fri 09:00-13:00, 15:00-19:00; Sat-Sun off. Exceptions (off unless hours are given): 2024-12-25 to 2033-12-25 (Navidad, recurring), 2025-01-01 to 2034-01-01 (Año nuevo 2025, recurring), 2025-02-10 to 2034-02-10 (Carnaval 2025, recurring), 2025-03-24 to 2034-03-24 (Día Nacional de la Memoria por la Verdad y la Justicia, recurring), 2025-04-02 to 2034-04-02 (Día del Veterano y de los Caídos en la Guerra de Malvinas, recurring), 2025-05-01 to 2034-05-01 (Día del Trabajador, recurring), 2025-05-25 to 2034-05-25 (Dia de la revolucion de Mayo, recurring), 2025-06-20 to 2034-06-20 (Día de la Bandera, recurring), 2025-07-09 to 2034-07-09 (Día de la Independencia, recurring), 2025-08-18 to 2034-08-18 (Paso a la Inmortalidad del Gral. José de San Martín (17/08), recurring), 2025-10-13 to 2034-10-13 (Día del Respeto a la Diversidad Cultural (12/10), recurring), 2025-11-18 to 2034-11-18 (Día de la Soberanía Nacional (20/11), recurring), 2025-12-08 to 2034-12-08 (Día de la Virgen, recurring).

## Resources

| Resource |
| --- |
| Gabriela Rojo |
| Julian Steib |
| Posventa |
| Alexandra Arevalo |

## Schedule

| ID | WBS | Task | Type | Duration | Start | Finish | Predecessors | Complete | Remaining | Baseline start | Baseline finish | Baseline duration | Baseline 1 start | Baseline 1 finish | Total slack | Constraint | Resources | Work | Actual work | Texto3 | Texto1 | Texto2 |
| --- | --- | --- | --- | --- | --- | --- | --- | --- | --- | --- | --- | --- | --- | --- | --- | --- | --- | --- | --- | --- | --- | --- |
| 1 | 1 | **VIVIENDAS HERMANOS ROSSI** |  | 695d? | 2025-07-01 A | 2028-04-10 |  | 41% | 406.81d? | 2025-07-01 | 2028-05-13 | 718d? | 2025-07-01 | 2028-01-09 | 0d |  |  | 43312h | 17828.7h |  |  |  |
| 2 | 1.1 | ✔Recepción de Pliego |  | 22d | 2025-07-01 A | 2025-07-31 A |  | 100% |  | 2025-07-01 | 2025-07-31 | 22d | 2025-07-01 | 2025-07-31 |  | start no earlier than 2025-07-01 | Gabriela Rojo | 176h | 176h |  |  |  |
| 3 | 1.2 | **✔Gestiones** |  | 35d | 2025-08-01 A | 2025-09-19 A |  | 100% |  | 2025-08-01 | 2025-09-19 | 35d | 2025-08-01 | 2025-09-19 |  |  |  | 552h | 552h |  |  |  |
| 4 | 1.2.1 | ✔Gestiones CAPC |  | 24d | 2025-08-01 A | 2025-09-04 A | 2 | 100% |  | 2025-08-01 | 2025-09-04 | 24d | 2025-08-01 | 2025-09-04 |  |  | Gabriela Rojo | 192h | 192h |  |  |  |
| 5 | 1.2.2 | ✔Gestiones Municipales |  | 35d | 2025-08-01 A | 2025-09-19 A | 2 | 100% |  | 2025-08-01 | 2025-09-19 | 35d | 2025-08-01 | 2025-09-19 |  |  | Gabriela Rojo | 280h | 280h |  |  |  |
| 6 | 1.2.3 | ✔Gestiones de Personal |  | 10d | 2025-09-08 A | 2025-09-19 A | 5FF | 100% |  | 2025-09-08 | 2025-09-19 | 10d | 2025-09-08 | 2025-09-19 |  |  | Gabriela Rojo | 80h | 80h |  |  |  |
| 7 | 1.3 | **Obra - Vivienda Hermanos Rossi** |  | 413d | 2025-09-19 A | 2027-05-19 |  | 9% | 375.33d | 2025-09-19 | 2027-05-19 | 413d | 2025-09-19 | 2027-05-19 | 225d |  |  | 6456h | 588.8h |  |  |  |
| 8 | 1.3.1 | ✔Firma Acta Inicio de Obra | milestone | 0d | 2025-09-19 A | 2025-09-19 A | 3 | 100% |  | 2025-09-19 | 2025-09-19 |  | 2025-09-19 | 2025-09-19 |  |  | Julian Steib |  |  |  |  |  |
| 9 | 1.3.2 | Vivieda Hermanos Rossi Contratada |  | 433d | 2025-09-22 | 2027-05-19 | 8 |  |  | 2025-09-22 | 2027-05-19 | 433d | 2025-09-22 | 2027-05-19 | 222d |  | Julian Steib | 3464h |  |  |  |  |
| 10 | 1.3.3 | Obra Vivieda Hermanos Rossi |  | 374d | 2025-09-22 A | 2027-02-25 |  | 20% | 300.4d |  |  |  | 2025-09-22 | 2027-01-14 | 282d | start no earlier than 2025-09-22 | Alexandra Arevalo | 2992h | 588.8h | Seguimiento |  |  |
| 11 | 1.4 | **CRONOGRAMA VIVIENDA ROSSI** |  | 390d? | 2025-09-22 A | 2027-04-16 |  | 61% | 151.2d? | 2025-09-22 | 2027-05-19 | 413d? | 2025-09-22 | 2027-01-14 | 0d |  |  | 27488h | 16511.8h |  |  |  |
| 12 | 1.4.1 | **TAREAS PRELIMINARES** |  | 78d | 2025-09-22 A | 2026-01-14 A |  | 100% |  | 2025-09-22 | 2026-01-14 | 78d | 2025-09-22 | 2026-01-14 |  |  |  | 608h | 608h |  |  |  |
| 13 | 1.4.1.1 | ✔CERCO PERIMETRAL | milestone | 0d | 2025-09-22 A | 2025-09-22 A |  | 100% |  | 2025-09-22 | 2025-09-23 | 2d | 2025-09-22 | 2025-09-22 |  | start no earlier than 2025-09-22 | Alexandra Arevalo |  |  | Seguimiento | Albañileria |  |
| 14 | 1.4.1.2 | ✔REPLANTEO DE OBRA | milestone | 0d | 2025-10-08 A | 2025-10-08 A | 17 | 100% |  | 2025-10-08 | 2025-10-09 | 2d | 2025-10-08 | 2025-10-08 |  |  | Alexandra Arevalo |  |  | Seguimiento | Albañileria |  |
| 15 | 1.4.1.3 | ✔ARMADO DE PILAR CON TABLERO DE OBRA | milestone | 0d | 2025-09-22 A | 2025-09-22 A |  | 100% |  | 2025-09-22 | 2025-09-22 | 1d | 2025-09-22 | 2025-09-22 |  | start no earlier than 2025-09-22 | Alexandra Arevalo |  |  | Seguimiento | Electricista |  |
| 16 | 1.4.1.4 | ✔MOVIMIENTO DE SUELO (Monto a confirmar una vez iniciada la obra) |  | 76d | 2025-09-24 A | 2026-01-14 A | 15FS+2d | 100% |  | 2025-09-24 | 2026-01-14 | 76d | 2025-09-24 | 2026-01-14 |  |  | Alexandra Arevalo | 608h | 608h | Seguimiento | Externo |  |
| 17 | 1.4.1.5 | ✔LIMPIEZA Y NIVELACIÓN (Monto a confirmar una vez iniciada la obra) | milestone | 0d | 2025-10-03 A | 2025-10-03 A | 16 | 100% |  | 2025-10-03 | 2025-10-07 | 3d | 2025-10-03 | 2025-10-03 |  |  | Alexandra Arevalo |  |  | Seguimiento | Externo |  |
| 18 | 1.4.1.6 | ✔AGUA DE OBRA (valor conexión Cooperativa agua) | milestone | 0d | 2025-09-22 A | 2025-09-22 A |  | 100% |  | 2025-09-22 | 2025-09-22 | 1d | 2025-09-22 | 2025-09-22 |  | start no earlier than 2025-09-22 | Alexandra Arevalo |  |  | Seguimiento | Plomeria |  |
| 19 | 1.4.1.7 | ✔LUZ DE OBRA (valor conexión Epec) | milestone | 0d | 2025-09-22 A | 2025-09-22 A |  | 100% |  | 2025-09-22 | 2025-09-22 | 1d | 2025-09-22 | 2025-09-22 |  | start no earlier than 2025-09-22 | Alexandra Arevalo |  |  | Seguimiento | Electricista |  |
| 20 | 1.4.2 | **PILOTES** |  | 78d | 2025-10-22 A | 2026-02-13 A |  | 100% |  | 2025-10-22 | 2026-01-29 | 68d | 2025-10-22 | 2026-02-04 |  |  |  | 536h | 536h |  |  |  |
| 21 | 1.4.2.1 | ✔EXCAVACIÓN DE PILOTES |  | 10d | 2026-01-15 A | 2026-01-28 A | 16 | 100% |  | 2026-01-15 | 2026-01-23 | 7d | 2026-01-15 | 2026-01-28 |  |  | Alexandra Arevalo | 80h | 80h | Seguimiento | Externo |  |
| 22 | 1.4.2.2 | ✔P1 - Pilotes (40cm diametro) - 5 unidades - Prof. 3 mts aprox |  | 15d | 2026-01-23 A | 2026-02-13 A | 21FF+11d | 100% |  | 2026-01-12 | 2026-01-29 | 14d | 2026-01-15 | 2026-02-04 |  | start no earlier than 2025-09-10 | Alexandra Arevalo | 120h | 120h | Seguimiento | Albañileria | Subsuelo 1 |
| 23 | 1.4.2.3 | ✔P2 - Pilotes (50cm diametro) - 4 unidades - Prof. 3 mts aprox |  | 15d | 2026-01-23 A | 2026-02-13 A | 21FF+11d | 100% |  | 2026-01-12 | 2026-01-29 | 14d | 2026-01-15 | 2026-02-04 |  |  | Alexandra Arevalo | 120h | 120h | Seguimiento | Albañileria | Planta Baja |
| 24 | 1.4.2.4 | ✔Zapata |  | 13d | 2025-10-22 A | 2025-11-07 A |  | 100% |  | 2025-10-22 | 2025-11-19 | 20d | 2025-10-22 | 2025-11-07 |  | start no earlier than 2025-10-22 | Alexandra Arevalo | 104h | 104h | Seguimiento | Albañileria | Subsuelo 1 |
| 25 | 1.4.2.5 | ✔Mamposteria de Nivelación SS1 |  | 5d | 2025-11-10 A | 2025-11-14 A | 28 | 100% |  | 2025-11-20 | 2025-11-26 | 5d | 2025-11-10 | 2025-11-14 |  |  | Alexandra Arevalo | 40h | 40h | Seguimiento | Albañileria | Subsuelo 1 |
| 26 | 1.4.2.6 | ✔Mamposteria de Nivelación PB |  | 9d | 2026-01-19 A | 2026-01-29 A | 79, 80 | 100% |  | 2025-12-31 | 2026-01-06 | 4d | 2026-01-19 | 2026-01-29 |  |  | Alexandra Arevalo | 72h | 72h | Seguimiento | Albañileria | Planta Baja |

| ID | WBS | Task | Duration | Start | Finish | Predecessors | Complete | Remaining | Baseline start | Baseline finish | Baseline duration | Baseline 1 start | Baseline 1 finish | Total slack | Free slack | Resources | Work | Actual work | Texto1 | Texto2 | Texto3 |
| --- | --- | --- | --- | --- | --- | --- | --- | --- | --- | --- | --- | --- | --- | --- | --- | --- | --- | --- | --- | --- | --- |
| 27 | 1.4.3 | **VIGAS DE FUNDACIÓN** | 76d | 2025-10-23 A | 2026-02-12 A |  | 100% |  | 2025-11-03 | 2026-02-03 | 63d | 2025-10-23 | 2026-02-04 |  |  |  | 464h | 464h |  |  |  |
| 28 | 1.4.3.1 | ✔VF - 0,30 x 0,35 | 12d | 2025-10-23 A | 2025-11-07 A | 24FF | 100% |  | 2025-11-03 | 2025-11-19 | 12d | 2025-10-23 | 2025-11-07 |  |  | Alexandra Arevalo | 96h | 96h | Albañileria | Subsuelo 1 | Seguimiento |
| 29 | 1.4.3.2 | ✔VF1 - 0,30 x 0,40 | 12d | 2025-10-23 A | 2025-11-07 A | 24FF | 100% |  | 2025-11-03 | 2025-11-19 | 12d | 2025-10-23 | 2025-11-07 |  |  | Alexandra Arevalo | 96h | 96h | Albañileria | Subsuelo 1 | Seguimiento |
| 30 | 1.4.3.3 | ✔VF2 - 0,30 x 0,45 | 12d | 2025-10-23 A | 2025-11-07 A | 24FF | 100% |  | 2025-11-03 | 2025-11-19 | 12d | 2025-10-23 | 2025-11-07 |  |  | Alexandra Arevalo | 96h | 96h | Albañileria | Subsuelo 1 | Seguimiento |
| 31 | 1.4.3.4 | ✔VF - 0,30 x 0,35 | 11d | 2026-01-28 A | 2026-02-12 A | 23SS+3d | 100% |  | 2026-01-19 | 2026-02-03 | 12d | 2026-01-20 | 2026-02-04 |  |  | Alexandra Arevalo | 88h | 88h | Albañileria | Planta Baja | Seguimiento |
| 32 | 1.4.3.5 | ✔VF1 - 0,30 x 0,40 | 11d | 2026-01-28 A | 2026-02-12 A | 23SS+3d | 100% |  | 2026-01-19 | 2026-02-03 | 12d | 2026-01-20 | 2026-02-04 |  |  | Alexandra Arevalo | 88h | 88h | Albañileria | Planta Baja | Seguimiento |
| 33 | 1.4.4 | **COLUMNAS + ENCADENADOS VERTICALES** | 123d | 2025-11-21 A | 2026-05-21 A |  | 100% |  | 2025-12-02 | 2026-04-03 | 83d | 2025-11-21 | 2026-04-08 |  |  |  | 1840h | 1840h |  |  |  |
| 34 | 1.4.4.1 | ✔C1 (6 columnas) | 18d | 2025-11-21 A | 2025-12-17 A | 102 | 100% |  | 2025-12-02 | 2025-12-09 | 5d | 2025-11-21 | 2025-12-17 |  |  | Alexandra Arevalo | 144h | 144h | Albañileria | Subsuelo 1 | Seguimiento |
| 35 | 1.4.4.2 | ✔C1 s (11 columnas) | 18d | 2025-11-21 A | 2025-12-17 A | 102 | 100% |  | 2025-12-02 | 2025-12-09 | 5d | 2025-11-21 | 2025-12-17 |  |  | Alexandra Arevalo | 144h | 144h | Albañileria | Subsuelo 1 | Seguimiento |
| 36 | 1.4.4.3 | ✔C2 (1 columna) | 18d | 2025-11-21 A | 2025-12-17 A | 102 | 100% |  | 2025-12-02 | 2025-12-09 | 5d | 2025-11-21 | 2025-12-17 |  |  | Alexandra Arevalo | 144h | 144h | Albañileria | Subsuelo 1 | Seguimiento |
| 37 | 1.4.4.4 | ✔C3 s (2 columnas) | 18d | 2025-11-21 A | 2025-12-17 A | 102 | 100% |  | 2025-12-02 | 2025-12-09 | 5d | 2025-11-21 | 2025-12-17 |  |  | Alexandra Arevalo | 144h | 144h | Albañileria | Subsuelo 1 | Seguimiento |
| 38 | 1.4.4.5 | ✔C5 (2 columnas) | 18d | 2025-11-21 A | 2025-12-17 A | 102 | 100% |  | 2025-12-02 | 2025-12-09 | 5d | 2025-11-21 | 2025-12-17 |  |  | Alexandra Arevalo | 144h | 144h | Albañileria | Subsuelo 1 | Seguimiento |
| 39 | 1.4.4.6 | ✔C1 (18 columnas) | 7d | 2026-02-04 A | 2026-02-13 A | 101 | 100% |  | 2026-01-12 | 2026-01-20 | 7d | 2026-02-04 | 2026-02-13 |  |  | Alexandra Arevalo | 56h | 56h | Albañileria | Planta Baja | Seguimiento |
| 40 | 1.4.4.7 | ✔C2 (5 columnas) | 7d | 2026-02-04 A | 2026-02-13 A | 101 | 100% |  | 2026-01-12 | 2026-01-20 | 7d | 2026-02-04 | 2026-02-13 |  |  | Alexandra Arevalo | 56h | 56h | Albañileria | Planta Baja | Seguimiento |
| 41 | 1.4.4.8 | ✔C3 (5 columnas) | 7d | 2026-02-04 A | 2026-02-13 A | 101 | 100% |  | 2026-01-12 | 2026-01-20 | 7d | 2026-02-04 | 2026-02-13 |  |  | Alexandra Arevalo | 56h | 56h | Albañileria | Planta Baja | Seguimiento |
| 42 | 1.4.4.9 | ✔C6 (3 columnas) | 27d | 2026-02-04 A | 2026-03-13 A | 101 | 100% |  | 2026-01-12 | 2026-01-20 | 7d | 2026-02-04 | 2026-02-13 |  |  | Alexandra Arevalo | 216h | 216h | Albañileria | Planta Baja | Seguimiento |
| 43 | 1.4.4.10 | ✔C1 (19 columnas) | 17d | 2026-04-28 A | 2026-05-21 A | 83 | 100% |  | 2026-03-25 | 2026-04-03 | 7d | 2026-03-30 | 2026-04-08 |  |  | Alexandra Arevalo | 136h | 136h | Albañileria | Primer Piso | Seguimiento |
| 44 | 1.4.4.11 | ✔C2 (2 columnas) | 17d | 2026-04-28 A | 2026-05-21 A | 83 | 100% |  | 2026-03-25 | 2026-04-03 | 7d | 2026-03-30 | 2026-04-08 |  |  | Alexandra Arevalo | 136h | 136h | Albañileria | Primer Piso | Seguimiento |
| 45 | 1.4.4.12 | ✔C3 (2 columnas) | 17d | 2026-04-28 A | 2026-05-21 A | 83 | 100% |  | 2026-03-25 | 2026-04-03 | 7d | 2026-03-30 | 2026-04-08 |  |  | Alexandra Arevalo | 136h | 136h | Albañileria | Primer Piso | Seguimiento |
| 46 | 1.4.4.13 | ✔C4 (3 columnas) | 17d | 2026-04-28 A | 2026-05-21 A | 83 | 100% |  | 2026-03-25 | 2026-04-03 | 7d | 2026-03-30 | 2026-04-08 |  |  | Alexandra Arevalo | 136h | 136h | Albañileria | Primer Piso | Seguimiento |
| 47 | 1.4.4.14 | ✔Ce (7 columnas) | 7d | 2026-02-04 A | 2026-02-13 A | 101 | 100% |  | 2026-01-12 | 2026-01-20 | 7d | 2026-02-04 | 2026-02-13 |  |  | Alexandra Arevalo | 56h | 56h | Albañileria | Planta Baja | Seguimiento |
| 48 | 1.4.4.15 | ✔Ce (17 columnas) | 17d | 2026-04-28 A | 2026-05-21 A | 83 | 100% |  | 2026-03-25 | 2026-04-03 | 7d | 2026-03-30 | 2026-04-08 |  |  | Alexandra Arevalo | 136h | 136h | Albañileria | Primer Piso | Seguimiento |
| 49 | 1.4.5 | **TABIQUES DE HORMIGON VISTO** | 199d | 2025-11-10 A | 2026-08-28 |  | 66% | 67.95d | 2025-11-20 | 2026-05-14 | 119d | 2025-11-10 | 2026-05-12 | 107d |  |  | 984h | 648h |  |  |  |
| 50 | 1.4.5.1 | ✔T1 - TABIQUES DE HORMIGON VISTO contencion cantero y cochera PSB - esp: 20cm | 26d | 2025-11-10 A | 2025-12-17 A | 28, 29, 30 | 100% |  | 2025-11-20 | 2025-12-16 | 18d | 2025-11-10 | 2025-12-17 |  |  | Alexandra Arevalo | 208h | 208h | Albañileria | Subsuelo 1 | Seguimiento |
| 51 | 1.4.5.2 | ✔T1 - TABIQUES DE HORMIGON VISTO cantero PB - esp: 20cm | 10d | 2026-01-19 A | 2026-01-30 A | 80 | 100% |  | 2025-12-31 | 2026-01-14 | 10d | 2026-01-19 | 2026-01-30 |  |  | Alexandra Arevalo | 80h | 80h | Albañileria | Planta Baja | Seguimiento |
| 52 | 1.4.5.3 | ✔T1 - TABIQUES DE HORMIGON VISTO PA - esp: 20cm - Etapa 1 | 45d | 2026-04-28 A | 2026-07-01 A | 82 | 100% |  | 2026-03-25 | 2026-05-14 | 35d | 2026-03-30 | 2026-05-12 |  |  | Alexandra Arevalo | 360h | 360h | Albañileria | Primer Piso | Seguimiento |
| 53 | 1.4.5.4 | T1 - TABIQUES DE HORMIGON VISTO PA - esp: 20cm - Etapa 2 | 42d | 2026-07-02 | 2026-08-28 | 52 |  |  |  |  |  |  |  | 107d | 0d | Alexandra Arevalo | 336h |  | Albañileria | Primer Piso | Seguimiento |

| ID | WBS | Task | Duration | Start | Finish | Predecessors | Complete | Baseline start | Baseline finish | Baseline duration | Baseline 1 start | Baseline 1 finish | Resources | Work | Actual work | Texto1 | Texto2 | Texto3 |
| --- | --- | --- | --- | --- | --- | --- | --- | --- | --- | --- | --- | --- | --- | --- | --- | --- | --- | --- |
| 54 | 1.4.6 | **VIGAS ESTRUCTURALES + ENCADENADOS HORIZONTALES** | 141d | 2025-12-15 A | 2026-07-08 A |  | 100% | 2026-01-15 | 2026-05-29 | 92d | 2025-12-15 | 2026-05-21 |  | 4024h | 4024h |  |  |  |
| 55 | 1.4.6.1 | ✔V1 - 0,18 x 0,30 | 7d | 2025-12-15 A | 2025-12-23 A | 79SS | 100% | 2026-01-23 | 2026-02-05 | 10d | 2025-12-15 | 2025-12-23 | Alexandra Arevalo | 56h | 56h | Albañileria | Subsuelo 1 | Seguimiento |
| 56 | 1.4.6.2 | ✔V2 - 0,18 x 0,30 | 7d | 2025-12-15 A | 2025-12-23 A | 79SS | 100% | 2026-01-23 | 2026-02-05 | 10d | 2025-12-15 | 2025-12-23 | Alexandra Arevalo | 56h | 56h | Albañileria | Subsuelo 1 | Seguimiento |
| 57 | 1.4.6.3 | ✔V3 - 0,18 x 0,35 | 7d | 2025-12-15 A | 2025-12-23 A | 79SS | 100% | 2026-01-23 | 2026-02-05 | 10d | 2025-12-15 | 2025-12-23 | Alexandra Arevalo | 56h | 56h | Albañileria | Subsuelo 1 | Seguimiento |
| 58 | 1.4.6.4 | ✔V4 - 0,18 x 0,40 | 7d | 2025-12-15 A | 2025-12-23 A | 79SS | 100% | 2026-01-23 | 2026-02-05 | 10d | 2025-12-15 | 2025-12-23 | Alexandra Arevalo | 56h | 56h | Albañileria | Subsuelo 1 | Seguimiento |
| 59 | 1.4.6.5 | ✔V5 - 0,18 x 0,45 | 7d | 2025-12-15 A | 2025-12-23 A | 79SS | 100% | 2026-01-23 | 2026-02-05 | 10d | 2025-12-15 | 2025-12-23 | Alexandra Arevalo | 56h | 56h | Albañileria | Subsuelo 1 | Seguimiento |
| 60 | 1.4.6.6 | ✔V6 - 0,18 x 0,45 | 7d | 2025-12-15 A | 2025-12-23 A | 79SS | 100% | 2026-01-23 | 2026-02-05 | 10d | 2025-12-15 | 2025-12-23 | Alexandra Arevalo | 56h | 56h | Albañileria | Subsuelo 1 | Seguimiento |
| 61 | 1.4.6.7 | ✔VL - 0,25 x 0,50 | 7d | 2025-12-15 A | 2025-12-23 A | 79SS | 100% | 2026-01-23 | 2026-02-05 | 10d | 2025-12-15 | 2025-12-23 | Alexandra Arevalo | 56h | 56h | Albañileria | Subsuelo 1 | Seguimiento |
| 62 | 1.4.6.8 | ✔Vh - 0,18 x h | 7d | 2025-12-15 A | 2025-12-23 A | 79SS | 100% | 2026-01-23 | 2026-02-05 | 10d | 2025-12-15 | 2025-12-23 | Alexandra Arevalo | 56h | 56h | Albañileria | Subsuelo 1 | Seguimiento |
| 63 | 1.4.6.9 | ✔V1 - 0,18 x 0,30 | 50d | 2026-02-02 A | 2026-04-15 A | 51 | 100% | 2026-01-15 | 2026-01-28 | 10d | 2026-02-02 | 2026-02-11 | Alexandra Arevalo | 400h | 400h | Albañileria | Planta Baja | Seguimiento |
| 64 | 1.4.6.10 | ✔V2 - 0,18 x 0,30 | 50d | 2026-02-02 A | 2026-04-15 A | 51 | 100% | 2026-01-15 | 2026-01-28 | 10d | 2026-02-02 | 2026-02-11 | Alexandra Arevalo | 400h | 400h | Albañileria | Planta Baja | Seguimiento |
| 65 | 1.4.6.11 | ✔V3 - 0,18 x 0,35 | 50d | 2026-02-02 A | 2026-04-15 A | 51 | 100% | 2026-01-15 | 2026-01-28 | 10d | 2026-02-02 | 2026-02-11 | Alexandra Arevalo | 400h | 400h | Albañileria | Planta Baja | Seguimiento |
| 66 | 1.4.6.12 | ✔V4 - 0,18 x 0,40 | 50d | 2026-02-02 A | 2026-04-15 A | 51 | 100% | 2026-01-15 | 2026-01-28 | 10d | 2026-02-02 | 2026-02-11 | Alexandra Arevalo | 400h | 400h | Albañileria | Planta Baja | Seguimiento |
| 67 | 1.4.6.13 | ✔V3e - 0,18 x 0,40 | 50d | 2026-02-02 A | 2026-04-15 A | 51 | 100% | 2026-01-15 | 2026-01-28 | 10d | 2026-02-02 | 2026-02-11 | Alexandra Arevalo | 400h | 400h | Albañileria | Planta Baja | Seguimiento |
| 68 | 1.4.6.14 | ✔VL - 0,25 x 0,50 | 50d | 2026-02-02 A | 2026-04-15 A | 51 | 100% | 2026-01-15 | 2026-01-28 | 10d | 2026-02-02 | 2026-02-11 | Alexandra Arevalo | 400h | 400h | Albañileria | Planta Baja | Seguimiento |
| 69 | 1.4.6.15 | ✔VL1 - 0,28 x 0,50 | 50d | 2026-02-02 A | 2026-04-15 A | 51 | 100% | 2026-01-15 | 2026-01-28 | 10d | 2026-02-02 | 2026-02-11 | Alexandra Arevalo | 400h | 400h | Albañileria | Planta Baja | Seguimiento |
| 70 | 1.4.6.16 | ✔EH 0.18X0.18 | 36d | 2026-03-20 A | 2026-05-13 A | 51FS+33d | 100% | 2026-01-15 | 2026-01-28 | 10d | 2026-02-02 | 2026-02-11 | Alexandra Arevalo | 288h | 288h | Albañileria | Planta Baja | Seguimiento |
| 71 | 1.4.6.17 | ✔EH1 0.18X0.18 | 7d | 2026-03-20 A | 2026-03-31 A | 51FS+33d | 100% | 2026-05-15 | 2026-05-29 | 10d | 2026-05-13 | 2026-05-21 | Alexandra Arevalo | 56h | 56h | Albañileria | Primer Piso | Seguimiento |
| 72 | 1.4.6.18 | ✔V1 - 0,18 x 0,30 | 7d | 2026-06-04 A | 2026-06-12 A | 98, 99, 97 | 100% | 2026-05-08 | 2026-05-21 | 10d | 2026-04-28 | 2026-05-07 | Alexandra Arevalo | 56h | 56h | Albañileria | Primer Piso | Seguimiento |
| 73 | 1.4.6.19 | ✔V2 - 0,18 x 0,30 | 7d | 2026-06-04 A | 2026-06-12 A | 98, 99, 97 | 100% | 2026-05-08 | 2026-05-21 | 10d | 2026-04-28 | 2026-05-07 | Alexandra Arevalo | 56h | 56h | Albañileria | Primer Piso | Seguimiento |
| 74 | 1.4.6.20 | ✔V3 - 0,18 x 0,35 | 7d | 2026-06-04 A | 2026-06-12 A | 98, 99, 97 | 100% | 2026-05-08 | 2026-05-21 | 10d | 2026-04-28 | 2026-05-07 | Alexandra Arevalo | 56h | 56h | Albañileria | Primer Piso | Seguimiento |
| 75 | 1.4.6.21 | ✔V4 - 0,18 x 0,40 | 11d | 2026-06-24 A | 2026-07-08 A | 52FS-11d | 100% | 2026-05-15 | 2026-05-29 | 10d | 2026-05-13 | 2026-05-21 | Alexandra Arevalo | 88h | 88h | Albañileria | Primer Piso | Seguimiento |
| 76 | 1.4.6.22 | ✔VL - 0,25 x 0,50 | 11d | 2026-06-24 A | 2026-07-08 A | 52FS-11d | 100% | 2026-05-15 | 2026-05-29 | 10d | 2026-05-13 | 2026-05-21 | Alexandra Arevalo | 88h | 88h | Albañileria | Primer Piso | Seguimiento |
| 77 | 1.4.6.23 | ✔VL1e - 0,25 x 0,30 | 11d | 2026-06-24 A | 2026-07-08 A | 52FS-11d | 100% | 2026-05-15 | 2026-05-29 | 10d | 2026-05-13 | 2026-05-21 | Alexandra Arevalo | 88h | 88h | Albañileria | Primer Piso | Seguimiento |

| ID | WBS | Task | Duration | Start | Finish | Predecessors | Complete | Remaining | Baseline start | Baseline finish | Baseline duration | Baseline 1 start | Baseline 1 finish | Total slack | Constraint | Resources | Work | Actual work | Texto1 | Texto2 | Texto3 |
| --- | --- | --- | --- | --- | --- | --- | --- | --- | --- | --- | --- | --- | --- | --- | --- | --- | --- | --- | --- | --- | --- |
| 78 | 1.4.7 | **LOSAS** | 129d | 2025-12-15 A | 2026-06-22 |  | 99% | 0d | 2025-12-01 | 2026-06-12 | 132d | 2025-12-15 | 2026-06-10 | 0d |  | Alexandra Arevalo | 2432h | 1663.85h | Albañileria | Subsuelo 1 |  |
| 79 | 1.4.7.1 | ✔Losa Maciza 8 cm - Planta Subsuelo | 23d | 2025-12-15 A | 2026-01-16 A | 92 | 100% |  | 2025-12-01 | 2025-12-30 | 20d | 2025-12-15 | 2026-01-16 |  | start no earlier than 2025-12-01 | Alexandra Arevalo | 184h | 184h | Albañileria | Subsuelo 1 | Seguimiento |
| 80 | 1.4.7.2 | ✔Losa Viguetas 22 cm - Planta Subsuelo | 23d | 2025-12-15 A | 2026-01-16 A | 92 | 100% |  | 2025-12-01 | 2025-12-30 | 20d | 2025-12-15 | 2026-01-16 |  | start no earlier than 2025-12-01 | Alexandra Arevalo | 184h | 184h | Albañileria | Subsuelo 1 | Seguimiento |
| 81 | 1.4.7.3 | ✔Losa Viguetas 22 cm - Planta Baja | 28d | 2026-03-17 A | 2026-04-27 A | 96 | 100% |  | 2026-02-09 | 2026-03-23 | 30d | 2026-02-26 | 2026-03-27 |  |  | Alexandra Arevalo | 224h | 224h | Albañileria | Planta Baja | Seguimiento |
| 82 | 1.4.7.4 | ✔Losa Viguetas 17 cm - Planta Baja | 28d | 2026-03-17 A | 2026-04-27 A | 96 | 100% |  | 2026-02-09 | 2026-03-23 | 30d | 2026-02-26 | 2026-03-27 |  |  | Alexandra Arevalo | 224h | 224h | Albañileria | Planta Baja | Seguimiento |
| 83 | 1.4.7.5 | ✔Losa Maciza 8 cm HORMIGÓN VISTO - Planta Baja | 28d | 2026-03-17 A | 2026-04-27 A | 96 | 100% |  | 2026-02-09 | 2026-03-23 | 30d | 2026-02-26 | 2026-03-27 |  |  | Alexandra Arevalo | 224h | 224h | Albañileria | Planta Baja | Seguimiento |
| 84 | 1.4.7.6 | ✔Losa Viguetas 17 cm - Planta Alta | 15d | 2026-06-02 A | 2026-06-22 A | 52FS-22d | 100% |  | 2026-05-15 | 2026-06-12 | 20d | 2026-05-13 | 2026-06-10 |  |  | Alexandra Arevalo | 120h | 120h | Albañileria | Primer Piso | Seguimiento |
| 85 | 1.4.7.7 | ✔Pases electricidad gral ss1 | 5d | 2026-01-12 A | 2026-01-16 A | 80FF | 100% |  | 2025-12-23 | 2025-12-30 | 5d | 2026-01-12 | 2026-01-16 |  |  | Alexandra Arevalo | 40h | 40h | Electricista |  | Seguimiento |
| 86 | 1.4.7.8 | ✔Pases plomería gral ss1 | 5d | 2026-01-12 A | 2026-01-16 A | 80FF | 100% |  | 2025-12-23 | 2025-12-30 | 5d | 2026-01-12 | 2026-01-16 |  |  | Alexandra Arevalo | 40h | 40h | Plomeria |  | Seguimiento |
| 87 | 1.4.7.9 | ✔Pases electricidad gral pb | 5d | 2026-04-21 A | 2026-04-27 A | 82FF | 100% |  | 2026-03-17 | 2026-03-23 | 5d | 2026-03-20 | 2026-03-27 |  |  | Alexandra Arevalo | 40h | 40h | Electricista |  | Seguimiento |
| 88 | 1.4.7.10 | ✔Pases plomería gral pb | 5d | 2026-04-21 A | 2026-04-27 A | 82FF | 100% |  | 2026-03-17 | 2026-03-23 | 5d | 2026-03-20 | 2026-03-27 |  |  | Alexandra Arevalo | 40h | 40h | Plomeria |  | Seguimiento |
| 89 | 1.4.7.11 | ✔Pases electricidad gral pa | 5d | 2026-06-16 A | 2026-06-22 A | 84FF | 100% |  | 2026-06-08 | 2026-06-12 | 5d | 2026-06-04 | 2026-06-10 |  |  | Alexandra Arevalo | 40h | 40h | Electricista |  | Seguimiento |
| 90 | 1.4.7.12 | ✔Pases plomería gral pa | 5d | 2026-06-16 A | 2026-06-22 A | 84FF | 100% |  | 2026-06-08 | 2026-06-12 | 5d | 2026-06-04 | 2026-06-10 |  |  | Alexandra Arevalo | 40h | 40h | Plomeria |  | Seguimiento |
| 91 | 1.4.8 | **MAMPOSTERIA** | 126d | 2025-11-21 A | 2026-05-27 A |  | 100% |  | 2025-12-02 | 2026-05-07 | 106d | 2025-11-21 | 2026-04-27 |  |  |  | 1528h | 1528h |  |  |  |
| 92 | 1.4.8.1 | XMAMP. LADRILLO CERAMICO HUECO PORTANTE 12x18x33 | 20d | 2025-11-21 A | 2025-12-19 A | 102 | 100% |  | 2025-12-02 | 2025-12-23 | 15d | 2025-11-21 | 2025-12-19 |  |  | Alexandra Arevalo | 160h | 160h | Albañileria | Subsuelo 1 | Seguimiento |
| 93 | 1.4.8.2 | ✔MAMP. LADRILLO CERAMICO HUECO PORTANTE 18x18x33 | 20d | 2025-11-21 A | 2025-12-19 A | 102 | 100% |  | 2025-12-02 | 2025-12-23 | 15d | 2025-11-21 | 2025-12-19 |  |  | Alexandra Arevalo | 160h | 160h | Albañileria | Subsuelo 1 | Seguimiento |
| 94 | 1.4.8.3 | ✔MAMP. LADRILLO CERAMICO HUECO PORTANTE 8x18x33 | 35d | 2026-03-06 A | 2026-04-27 A | 83FF | 100% |  | 2026-01-12 | 2026-02-06 | 20d | 2026-02-04 | 2026-02-25 |  |  | Alexandra Arevalo | 280h | 280h | Albañileria | Planta Baja | Seguimiento |
| 95 | 1.4.8.4 | ✔MAMP. LADRILLO CERAMICO HUECO PORTANTE 12x18x33 | 28d | 2026-02-04 A | 2026-03-16 A | 101 | 100% |  | 2026-01-12 | 2026-02-06 | 20d | 2026-02-04 | 2026-02-25 |  |  | Alexandra Arevalo | 224h | 224h | Albañileria | Planta Baja | Seguimiento |
| 96 | 1.4.8.5 | ✔MAMP. LADRILLO CERAMICO HUECO PORTANTE 18x18x33 | 28d | 2026-02-04 A | 2026-03-16 A | 101 | 100% |  | 2026-01-12 | 2026-02-06 | 20d | 2026-02-04 | 2026-02-25 |  |  | Alexandra Arevalo | 224h | 224h | Albañileria | Planta Baja | Seguimiento |
| 97 | 1.4.8.6 | ✔MAMP. LADRILLO CERAMICO HUECO PORTANTE 8x18x33 | 20d | 2026-04-28 A | 2026-05-27 A | 81 | 100% |  | 2026-03-25 | 2026-05-07 | 30d | 2026-03-30 | 2026-04-27 |  |  | Alexandra Arevalo | 160h | 160h | Albañileria | Primer Piso | Seguimiento |
| 98 | 1.4.8.7 | ✔MAMP. LADRILLO CERAMICO HUECO PORTANTE 12x18x33 | 20d | 2026-04-28 A | 2026-05-27 A | 81 | 100% |  | 2026-03-25 | 2026-05-07 | 30d | 2026-03-30 | 2026-04-27 |  |  | Alexandra Arevalo | 160h | 160h | Albañileria | Primer Piso | Seguimiento |
| 99 | 1.4.8.8 | ✔MAMP. LADRILLO CERAMICO HUECO PORTANTE 18x18x33 | 20d | 2026-04-28 A | 2026-05-27 A | 81 | 100% |  | 2026-03-25 | 2026-05-07 | 30d | 2026-03-30 | 2026-04-27 |  |  | Alexandra Arevalo | 160h | 160h | Albañileria | Primer Piso | Seguimiento |
| 100 | 1.4.9 | **AISLACIÓN MUROS** | 57d | 2025-11-17 A | 2026-02-09 A |  | 100% |  | 2025-11-27 | 2026-01-22 | 38d | 2025-11-17 | 2026-02-09 |  |  |  | 112h | 112h |  |  |  |
| 101 | 1.4.9.1 | ✔CAPA AISLADORA HORIZONTAL | 3d | 2026-01-30 A | 2026-02-03 A | 26 | 100% |  | 2026-01-07 | 2026-01-09 | 3d | 2026-01-30 | 2026-02-03 |  |  | Alexandra Arevalo | 24h | 24h | Albañileria | Planta Baja | Seguimiento |
| 102 | 1.4.9.2 | ✔CAPA AISLADORA HORIZONTAL | 3d | 2025-11-17 A | 2025-11-20 A | 25 | 100% |  | 2025-11-27 | 2025-12-01 | 3d | 2025-11-17 | 2025-11-20 |  |  | Alexandra Arevalo | 24h | 24h | Albañileria | Subsuelo 1 | Seguimiento |
| 103 | 1.4.9.3 | ✔CAPA AISLADORA VERTICAL | 8d | 2026-01-29 A | 2026-02-09 A | 119, 121, 120 | 100% |  | 2026-01-16 | 2026-01-22 | 5d | 2026-01-29 | 2026-02-09 |  |  | Alexandra Arevalo | 64h | 64h | Albañileria | Subsuelo 1 | Seguimiento |

| ID | WBS | Task | Duration | Start | Finish | Predecessors | Complete | Remaining | Baseline start | Baseline finish | Baseline duration | Baseline 1 start | Baseline 1 finish | Total slack | Free slack | Constraint | Resources | Work | Actual work | Texto1 | Texto2 | Texto3 |
| --- | --- | --- | --- | --- | --- | --- | --- | --- | --- | --- | --- | --- | --- | --- | --- | --- | --- | --- | --- | --- | --- | --- |
| 104 | 1.4.10 | **CONTRAPISO** | 73d | 2025-10-28 A | 2026-02-12 A |  | 100% |  | 2026-01-12 | 2026-10-16 | 192d | 2026-02-04 | 2026-08-19 |  |  |  |  | 168h | 168h |  |  |  |
| 105 | 1.4.10.1 | ✔HORMIGON P/ CONTRAPISO: INT: e= 10cm | 6d | 2026-02-04 A | 2026-02-12 A | 101, 102 | 100% |  | 2026-01-12 | 2026-01-16 | 5d | 2026-02-04 | 2026-02-11 |  |  |  | Alexandra Arevalo | 48h | 48h | Albañileria | Planta Baja | Seguimiento |
| 106 | 1.4.10.2 | ✔HORMIGON P/ CONTRAPISO: EXT sub y planta baja: e= 10cm | 15d | 2025-10-28 A | 2025-11-17 A |  | 100% |  | 2026-09-18 | 2026-10-16 | 20d | 2026-07-22 | 2026-08-19 |  |  | finish no earlier than 2025-11-17 | Alexandra Arevalo | 120h | 120h | Albañileria | Planta Baja | Seguimiento |
| 107 | 1.4.11 | **CARPETA DE NIVELACIÓN** | 7d | 2026-10-02 | 2026-10-12 |  |  |  | 2026-08-19 | 2026-11-12 | 61d | 2026-06-19 | 2026-07-01 | 71d |  |  |  | 264h |  |  |  |  |
| 108 | 1.4.11.1 | CARPETA DE NIVELACIÓN: ESP: 4 CM - INTERIOR PSS | 7d | 2026-10-02 | 2026-10-12 | 252 |  |  | 2026-11-04 | 2026-11-12 | 7d | 2026-06-19 | 2026-06-29 | 119d | 0d |  | Alexandra Arevalo | 56h |  | Albañileria | Subsuelo 1 | Seguimiento |
| 109 | 1.4.11.2 | CARPETA DE NIVELACIÓN: ESP: 4 CM - INTERIOR PB | 7d | 2026-10-02 | 2026-10-12 | 252 |  |  | 2026-11-04 | 2026-11-12 | 7d | 2026-06-19 | 2026-06-29 | 126d |  |  | Alexandra Arevalo | 56h |  | Albañileria | Planta Baja | Seguimiento |
| 110 | 1.4.11.3 | CARPETA DE NIVELACIÓN: ESP: 4 CM - EXTERIOR PB | 7d | 2026-10-02 | 2026-10-12 | 252 |  |  | 2026-11-04 | 2026-11-12 | 7d | 2026-06-19 | 2026-06-29 | 126d |  |  | Alexandra Arevalo | 56h |  | Albañileria | Planta Baja | Seguimiento |
| 111 | 1.4.11.4 | CARPETA DE NIVELACIÓN: ESP: 4 CM - INTERIOR PA | 7d | 2026-10-02 | 2026-10-12 | 252 |  |  | 2026-11-04 | 2026-11-12 | 7d | 2026-06-19 | 2026-06-29 | 71d | 0d |  | Alexandra Arevalo | 56h |  | Albañileria | Primer Piso | Seguimiento |
| 112 | 1.4.11.5 | CARPETA DE NIVELACIÓN SOBRE CARGA CUBIERTA | 5d | 2026-10-02 | 2026-10-08 | 252 |  |  | 2026-08-19 | 2026-08-27 | 7d | 2026-06-25 | 2026-07-01 | 81d | 0d | finish no earlier than 2026-08-28 | Alexandra Arevalo | 40h |  | Albañileria | Cubierta | Seguimiento |
| 113 | 1.4.12 | **CUBIERTA** | 181d | 2026-01-29 A | 2026-10-20 |  | 31% | 124.11d | 2026-06-15 | 2026-09-07 | 59d | 2026-06-11 | 2026-07-13 | 121d |  |  |  | 280h | 88h |  |  |  |
| 114 | 1.4.12.1 | Tanque y parapetos | 7d | 2026-07-08 | 2026-07-17 | 84FS+11d |  |  | 2026-06-15 | 2026-06-23 | 7d | 2026-06-11 | 2026-06-19 | 186d |  |  | Alexandra Arevalo | 56h |  | Albañileria | Cubierta | Seguimiento |
| 115 | 1.4.12.2 | ✔Cubierta común sobre Losa - Hormigón de pendiente 10cm | 11d | 2026-01-29 A | 2026-02-12 A |  | 100% |  |  |  |  |  |  |  |  | finish no earlier than 2026-02-12 | Alexandra Arevalo | 88h | 88h | Albañileria | Planta Baja | Seguimiento |
| 116 | 1.4.12.3 | Cubierta común sobre Losa - Hormigón de pendiente 10cm | 10d | 2026-08-14 | 2026-08-28 | 53FF |  |  | 2026-06-15 | 2026-06-26 | 10d | 2026-06-11 | 2026-06-24 | 157d |  |  | Alexandra Arevalo | 80h |  | Albañileria | Cubierta | Seguimiento |
| 117 | 1.4.12.4 | IMPERMEABILIZACIÓN EN LOSA Y PARAPETOS* | 7d | 2026-10-09 | 2026-10-20 | 112 |  |  | 2026-08-28 | 2026-09-07 | 7d | 2026-07-02 | 2026-07-13 | 81d | 0d |  | Alexandra Arevalo | 56h |  | Externo | Cubierta | Seguimiento |
| 118 | 1.4.13 | **REVOQUES EXT + INT** | 162d | 2026-03-12 A | 2026-11-03 |  | 81% | 30.52d | 2025-12-24 | 2026-09-17 | 183d | 2025-12-22 | 2026-08-13 | 111d |  |  |  | 2760h | 2240h |  |  |  |
| 119 | 1.4.13.1 | X REVOQUE GRUESO C/ AZOTADO HIDROF. CEMENTICIO EN MAMP. EXTERIOR | 60d | 2026-03-12 A | 2026-06-09 A | 92, 93FS+55d | 100% |  | 2025-12-24 | 2026-01-15 | 15d | 2025-12-22 | 2026-01-28 |  |  |  | Alexandra Arevalo | 480h | 480h | Albañileria | Subsuelo 1 | Seguimiento |
| 120 | 1.4.13.2 | X REVOQUE GRUESO C/ AZOTADO HIDROF. CEMENTICIO EN MAMP. EXTERIOR | 60d | 2026-03-12 A | 2026-06-09 A | 92, 93FS+55d | 100% |  | 2025-12-24 | 2026-01-15 | 15d | 2025-12-22 | 2026-01-28 |  |  |  | Alexandra Arevalo | 480h | 480h | Albañileria | Subsuelo 1 | Seguimiento |
| 121 | 1.4.13.3 | ✔REVOQUE GRUESO C/ AZOTADO HIDROF. CEMENTICIO EN MAMP. INTERIOR | 60d | 2026-05-11 A | 2026-08-04 A | 92, 93FS+94d | 100% |  | 2025-12-24 | 2026-01-15 | 15d | 2025-12-22 | 2026-01-28 |  |  |  | Alexandra Arevalo | 480h | 480h | Albañileria | Subsuelo 1 | Seguimiento |
| 122 | 1.4.13.4 | X REVOQUE FINO EXTERIOR | 15d | 2026-07-20 A | 2026-08-07 A | 111 | 100% |  | 2026-08-28 | 2026-09-17 | 15d | 2026-06-30 | 2026-07-21 |  |  |  | Alexandra Arevalo | 120h | 120h | Albañileria | Subsuelo 1 | Seguimiento |
| 123 | 1.4.13.5 | ✔REVOQUE GRUESO C/ AZOTADO HIDROF. CEMENTICIO EN MAMP. EXTERIOR | 34d | 2026-06-17 A | 2026-08-04 A | 95, 96FS+62d | 100% |  | 2026-02-09 | 2026-03-02 | 15d | 2026-02-26 | 2026-03-18 |  |  |  | Alexandra Arevalo | 272h | 272h | Albañileria | Planta Baja | Seguimiento |
| 124 | 1.4.13.6 | REVOQUE GRUESO C/ AZOTADO HIDROF. CEMENTICIO EN MAMP. EXTERIOR | 12d | 2026-07-30 A | 2026-08-14 A | 95, 96FS+92d | 100% |  | 2026-02-09 | 2026-03-02 | 15d | 2026-02-26 | 2026-03-18 |  |  |  | Alexandra Arevalo | 96h | 96h | Albañileria | Planta Baja | Seguimiento |
| 125 | 1.4.13.7 | ✔REVOQUE GRUESO C/ AZOTADO HIDROF. CEMENTICIO EN MAMP. INTERIOR | 34d | 2026-06-17 A | 2026-08-04 A | 95, 96FS+62d | 100% |  | 2026-02-09 | 2026-03-02 | 15d | 2026-02-26 | 2026-03-18 |  |  |  | Alexandra Arevalo | 272h | 272h | Albañileria | Planta Baja | Seguimiento |
| 126 | 1.4.13.8 | REVOQUE FINO EXTERIOR | 15d | 2026-10-14 | 2026-11-03 | 111 |  |  | 2026-08-28 | 2026-09-17 | 15d | 2026-06-30 | 2026-07-21 | 111d |  |  | Alexandra Arevalo | 120h |  | Albañileria | Planta Baja | Seguimiento |
| 127 | 1.4.13.9 | REVOQUE GRUESO C/ AZOTADO HIDROF. CEMENTICIO EN MAMP. EXTERIOR | 25d | 2026-07-13 | 2026-08-14 | 124FF |  |  | 2026-05-08 | 2026-05-29 | 15d | 2026-04-28 | 2026-05-19 | 0d |  |  | Alexandra Arevalo | 200h |  | Albañileria | Primer Piso | Seguimiento |
| 128 | 1.4.13.10 | REVOQUE GRUESO C/ AZOTADO HIDROF. CEMENTICIO EN MAMP. INTERIOR | 25d | 2026-07-27 | 2026-08-31 | 127FF+10d |  |  | 2026-05-08 | 2026-05-29 | 15d | 2026-04-28 | 2026-05-19 | 0d |  |  | Alexandra Arevalo | 200h |  | Albañileria | Primer Piso | Seguimiento |
| 129 | 1.4.13.11 | ✔IMPERMEABILIZACIÓN P/ PIEDRAS | 5d | 2026-06-23 A | 2026-06-29 A | 84 | 100% |  | 2026-08-11 | 2026-08-17 | 5d | 2026-08-07 | 2026-08-13 |  |  |  | Alexandra Arevalo | 40h | 40h | Albañileria |  | Seguimiento |

Notes:
- 114: Revisar ITEM
- 115: Sobre Losa de SS
- 119: Cancelado
- 120: Cancelado
- 122: Cancelado

| ID | WBS | Task | Duration | Start | Finish | Predecessors | Complete | Remaining | Baseline start | Baseline finish | Baseline duration | Baseline 1 start | Baseline 1 finish | Total slack | Free slack | Constraint | Resources | Work | Actual work | Texto1 | Texto2 | Texto3 |
| --- | --- | --- | --- | --- | --- | --- | --- | --- | --- | --- | --- | --- | --- | --- | --- | --- | --- | --- | --- | --- | --- | --- |
| 130 | 1.4.14 | **ENGROSADO + ENLUCIDO DE YESO** | 15d | 2026-10-21 | 2026-11-10 |  |  |  | 2026-09-08 | 2026-09-28 | 15d | 2026-07-14 | 2026-08-03 | 81d |  |  |  | 360h |  |  |  |  |
| 131 | 1.4.14.1 | ENGROSADO + ENLUCIDO YESO | 15d | 2026-10-21 | 2026-11-10 | 117 |  |  | 2026-09-08 | 2026-09-28 | 15d | 2026-07-14 | 2026-08-03 | 81d | 0d |  | Alexandra Arevalo | 120h |  | Yesero | Subsuelo 1 | Seguimiento |
| 132 | 1.4.14.2 | ENGROSADO + ENLUCIDO YESO | 15d | 2026-10-21 | 2026-11-10 | 117 |  |  | 2026-09-08 | 2026-09-28 | 15d | 2026-07-14 | 2026-08-03 | 106d |  |  | Alexandra Arevalo | 120h |  | Yesero | Planta Baja | Seguimiento |
| 133 | 1.4.14.3 | ENGROSADO + ENLUCIDO YESO | 15d | 2026-10-21 | 2026-11-10 | 117 |  |  | 2026-09-08 | 2026-09-28 | 15d | 2026-07-14 | 2026-08-03 | 106d |  |  | Alexandra Arevalo | 120h |  | Yesero | Primer Piso | Seguimiento |
| 134 | 1.4.15 | **CIELORRASO** | 31d | 2026-10-12 | 2026-11-25 |  |  |  | 2026-09-29 | 2026-10-12 | 10d | 2026-08-04 | 2026-08-17 | 96d |  |  |  | 336h |  |  |  |  |
| 135 | 1.4.15.1 | C2 - Cielorraso suspendido de placa de durock | 10d | 2026-11-11 | 2026-11-25 | 131 |  |  | 2026-09-29 | 2026-10-12 | 10d | 2026-08-04 | 2026-08-17 | 81d | 0d |  | Alexandra Arevalo | 80h |  | Durlero |  | Seguimiento |
| 136 | 1.4.15.2 | C6 - Cajón de durlock | 10d | 2026-11-11 | 2026-11-25 | 131 |  |  | 2026-09-29 | 2026-10-12 | 10d | 2026-08-04 | 2026-08-17 | 96d |  |  | Alexandra Arevalo | 80h |  | Durlero |  | Seguimiento |
| 137 | 1.4.15.3 | Cielorraso de madera | 22d | 2026-10-12 | 2026-11-10 | 154 |  |  |  |  |  |  |  | 106d |  |  | Alexandra Arevalo | 176h |  | Externo | Primer Piso | Seguimiento |
| 138 | 1.4.16 | **ASADOR** | 10d | 2026-08-10 | 2026-08-24 |  |  |  | 2026-02-09 | 2026-02-12 | 3d | 2026-02-26 | 2026-03-02 | 156d |  |  |  | 80h |  |  |  |  |
| 139 | 1.4.16.1 | ASADOR y Horno adicional | 10d | 2026-08-10 | 2026-08-24 |  |  |  | 2026-02-09 | 2026-02-12 | 3d | 2026-02-26 | 2026-03-02 | 156d | 0d | start no earlier than 2026-08-10 | Alexandra Arevalo | 80h |  | Albañileria | Planta Baja | Seguimiento |
| 140 | 1.4.17 | **VEREDAS PERIMETRALES** | 71d | 2026-07-01 | 2026-10-09 |  |  |  | 2026-01-19 | 2026-01-23 | 5d | 2026-02-12 | 2026-02-18 | 127d |  |  |  | 40h |  |  |  |  |
| 141 | 1.4.17.1 | Definición de Paisajismo | 66d | 2026-07-01 | 2026-10-02 |  |  |  |  |  |  |  |  | 127d | 0d | start no earlier than 2026-07-01 |  |  |  |  |  |  |
| 142 | 1.4.17.2 | VEREDAS PERIMETRALES CON CORDÓN - ancho 40cm | 5d | 2026-10-05 | 2026-10-09 | 105FS+66d, 141 |  |  | 2026-01-19 | 2026-01-23 | 5d | 2026-02-12 | 2026-02-18 | 127d |  |  | Alexandra Arevalo | 40h |  | Albañileria | Planta Baja | Seguimiento |
| 143 | 1.4.18 | **COLUMNAS Y VIGAS METÁLICAS** | 145d | 2026-04-01 A | 2026-10-28 |  | 49% | 73.58d | 2026-01-21 | 2026-07-13 | 118d | 2026-02-16 | 2026-07-08 | 115d |  |  |  | 1072h | 528h |  |  |  |
| 144 | 1.4.18.1 | ✔Cm1- 2UPN140 (5 columnas) 3,50 mts de largo | 10d | 2026-04-01 A | 2026-04-15 A | 81SS+10d | 100% |  | 2026-01-21 | 2026-01-29 | 7d | 2026-02-16 | 2026-02-24 |  |  |  | Alexandra Arevalo | 80h | 80h | Herrería | Planta Baja | Seguimiento |
| 145 | 1.4.18.2 | ✔Cm3- 2UPN100 (2 columnas) 3,50 mts de largo | 10d | 2026-04-01 A | 2026-04-15 A | 81SS+10d | 100% |  | 2026-01-21 | 2026-01-26 | 4d | 2026-02-16 | 2026-02-19 |  |  |  | Alexandra Arevalo | 80h | 80h | Herrería | Planta Baja | Seguimiento |
| 146 | 1.4.18.3 | ✔Cm4- 2UPN200 (2 columnas) 3,5 mts de largo | 4d | 2026-05-22 A | 2026-05-28 A | 43 | 100% |  | 2026-04-06 | 2026-04-09 | 4d | 2026-04-09 | 2026-04-14 |  |  |  | Alexandra Arevalo | 32h | 32h | Herrería | Primer Piso | Seguimiento |
| 147 | 1.4.18.4 | Viga Met. - IPN300 | 14d | 2026-08-31 | 2026-09-17 | 81, 53 |  |  | 2026-01-21 | 2026-02-09 | 14d | 2026-02-16 | 2026-03-05 | 143d |  |  | Alexandra Arevalo | 112h |  | Herrería | Planta Baja | Seguimiento |
| 148 | 1.4.18.5 | ✔Viga Met. - IPN300 | 14d | 2026-05-22 A | 2026-06-11 A | 43 | 100% |  | 2026-04-06 | 2026-04-23 | 14d | 2026-04-09 | 2026-04-28 |  |  |  | Alexandra Arevalo | 112h | 112h | Herrería | Primer Piso | Seguimiento |
| 149 | 1.4.18.6 | Viga Met. - IPN300 + UPN300 | 14d | 2026-08-31 | 2026-09-17 | 81, 53 |  |  | 2026-01-21 | 2026-02-09 | 14d | 2026-02-16 | 2026-03-05 | 143d |  |  | Alexandra Arevalo | 112h |  | Herrería | Planta Baja | Seguimiento |
| 150 | 1.4.18.7 | ✔Viga Met. - IPN300 + UPN300 | 14d | 2026-05-22 A | 2026-06-11 A | 43 | 100% |  | 2026-04-06 | 2026-04-23 | 14d | 2026-04-09 | 2026-04-28 |  |  |  | Alexandra Arevalo | 112h | 112h | Herrería | Primer Piso | Seguimiento |
| 151 | 1.4.18.8 | ✔Viga Met. - IPN400 + UPN400 | 14d | 2026-05-22 A | 2026-06-11 A | 43 | 100% |  | 2026-04-06 | 2026-04-23 | 14d | 2026-04-09 | 2026-04-28 |  |  |  | Alexandra Arevalo | 112h | 112h | Herrería | Primer Piso | Seguimiento |
| 152 | 1.4.18.9 | Escalera con nervio central de IPN 300, con descanso (ver distribucion en plano) (9,3 m de IPN) | 20d | 2026-09-30 | 2026-10-28 | 53FS+22d |  |  | 2026-03-25 | 2026-04-22 | 20d | 2026-03-30 | 2026-04-27 | 107d | 0d |  | Alexandra Arevalo | 160h |  | Herrería | Subsuelo 1 | Seguimiento |
| 153 | 1.4.18.10 | Escalera con nervio central de IPN 300, con descanso (ver distribucion en plano) (9,3 m de IPN) | 20d | 2026-09-30 | 2026-10-28 | 53FS+22d |  |  | 2026-06-15 | 2026-07-13 | 20d | 2026-06-11 | 2026-07-08 | 115d |  |  | Alexandra Arevalo | 160h |  | Herrería | Planta Baja | Seguimiento |

Notes:
- 142: Sin definición de paisaje

| ID | WBS | Task | Duration | Start | Finish | Predecessors | Complete | Remaining | Baseline start | Baseline finish | Baseline duration | Baseline 1 start | Baseline 1 finish | Total slack | Free slack | Constraint | Resources | Work | Actual work | Texto1 | Texto2 | Texto3 |
| --- | --- | --- | --- | --- | --- | --- | --- | --- | --- | --- | --- | --- | --- | --- | --- | --- | --- | --- | --- | --- | --- | --- |
| 154 | 1.4.19 | **CUBIERTA METÁLICA** | 21d | 2026-09-11 | 2026-10-09 |  |  |  | 2026-02-09 | 2026-06-15 | 86d | 2026-02-26 | 2026-06-11 | 107d | 0d |  |  | 336h |  |  |  |  |
| 155 | 1.4.19.1 | Cubierta Liviana Metálica - pend. 2% - escur. a canaleta - chapa sinusoidal | 21d | 2026-09-11 | 2026-10-09 | 152SF+8d |  |  | 2026-02-09 | 2026-03-10 | 21d | 2026-02-26 | 2026-03-27 | 107d |  |  | Alexandra Arevalo | 168h |  | Herrería | Planta Baja | Seguimiento |
| 156 | 1.4.19.2 | Cubierta Liviana Metálica - pend. 15% - escur. a canaleta - chapa sinusoidal (ver planos) | 21d | 2026-09-11 | 2026-10-09 | 152SF+8d |  |  | 2026-05-15 | 2026-06-15 | 21d | 2026-05-13 | 2026-06-11 | 107d |  |  | Alexandra Arevalo | 168h |  | Herrería | Primer Piso | Seguimiento |
| 157 | 1.4.20 | **CONDUCTOS METÁLICOS** | 89d | 2026-04-23 A | 2026-08-31 |  | 38% | 55.62d | 2026-02-13 | 2026-02-17 | 3d | 2026-03-03 | 2026-03-05 | 156d |  |  |  | 64h | 24h |  |  |  |
| 158 | 1.4.20.1 | .✔ASADOR PB - conducto descarga 2,30m aprx - 30 diam. | 3d | 2026-04-23 A | 2026-04-27 A | 83FF | 100% |  | 2026-02-13 | 2026-02-17 | 3d | 2026-03-03 | 2026-03-05 |  |  |  | Alexandra Arevalo | 24h | 24h | Herrería | Planta Baja | Seguimiento |
| 159 | 1.4.20.2 | Adicional - Conducto de Horno | 5d | 2026-08-25 | 2026-08-31 | 139 |  |  |  |  |  |  |  | 156d |  |  | Alexandra Arevalo | 40h |  | Herrería | Planta Baja | Seguimiento |
| 160 | 1.4.21 | **CERRAMIENTO METÁLICOS** | 4d | 2026-12-21 | 2026-12-24 |  |  |  | 2027-01-11 | 2027-01-14 | 4d | 2026-09-18 | 2026-09-23 | 76d |  |  |  | 32h |  |  |  |  |
| 161 | 1.4.21.1 | Cerramiento en Ventana Toilette (perfiles en vertical separados entre ellos 25 cm) | 4d | 2026-12-21 | 2026-12-24 | 234 |  |  | 2027-01-11 | 2027-01-14 | 4d | 2026-09-18 | 2026-09-23 | 76d |  |  | Alexandra Arevalo | 32h |  | Herrería | Planta Baja | Seguimiento |
| 162 | 1.4.22 | **PORTON METALICO COCHERA** | 4d | 2027-01-04 | 2027-01-07 |  |  |  | 2027-01-21 | 2027-01-26 | 4d | 2026-09-30 | 2026-10-05 | 68d |  |  |  | 32h |  |  |  |  |
| 163 | 1.4.22.1 | Portón metálico de la cochera (2,50m x 8,60m) | 4d | 2027-01-04 | 2027-01-07 | 238 |  |  | 2027-01-21 | 2027-01-26 | 4d | 2026-09-30 | 2026-10-05 | 68d |  |  | Alexandra Arevalo | 32h |  | Externo | Subsuelo 1 | Seguimiento |
| 164 | 1.4.23 | **INSTALACIONES PLUVIALES** | 160d | 2026-01-21 A | 2026-09-10 |  | 79% | 34d | 2025-12-26 | 2026-06-19 | 120d | 2026-01-21 | 2026-07-15 | 148d |  |  |  | 1280h | 1008h |  |  |  |
| 165 | 1.4.23.1 | Desagues pluviales (sin zinguería) | 160d | 2026-01-21 A | 2026-09-10 | 105SS-10d | 79% | 34d | 2025-12-26 | 2026-06-19 | 120d | 2026-01-21 | 2026-07-15 | 148d |  |  | Alexandra Arevalo | 1280h | 1008h | Plomeria |  | Seguimiento |
| 166 | 1.4.24 | **INSTALACIONES CLOACALES** | 30d | 2026-06-11 A | 2026-07-23 A |  | 100% |  | 2026-05-08 | 2026-06-26 | 35d | 2026-05-13 | 2026-07-01 |  |  |  |  | 240h | 240h |  |  |  |
| 167 | 1.4.24.1 | ✔Instalación de cloacas para un baño en PB y tres baños en PA, pileta de cocina, pileta de lavadero, lavavajilla, lavarropas. | 25d | 2026-06-11 A | 2026-07-16 A | 83FS+30d | 100% |  | 2026-05-08 | 2026-06-12 | 25d | 2026-05-13 | 2026-06-17 |  |  |  | Alexandra Arevalo | 200h | 200h | Plomeria |  | Seguimiento |
| 168 | 1.4.24.2 | ✔Colocación de 5 cámara de inspección (según detalle técnico) | 5d | 2026-07-17 A | 2026-07-23 A | 167 | 100% |  | 2026-06-15 | 2026-06-19 | 5d | 2026-06-18 | 2026-06-24 |  |  |  | Alexandra Arevalo | 40h | 40h | Plomeria |  | Seguimiento |
| 169 | 1.4.25 | **INSTALACIONES AGUA** | 157d | 2026-06-11 A | 2027-01-26 |  | 32% | 106.35d | 2026-05-08 | 2027-02-15 | 193d | 2026-05-13 | 2026-10-23 | 55d |  |  |  | 496h | 160h |  |  |  |
| 170 | 1.4.25.1 | Instalación de agua fría y caliente para un baño PB y tres en PA, pileta de cocina, pileta de lavadero, lavavajilla, lavarropas. | 50d | 2026-06-11 A | 2026-08-21 | 83FS+30d | 40% | 30d | 2026-05-08 | 2026-06-12 | 25d | 2026-05-13 | 2026-06-17 | 157d | 0d |  | Alexandra Arevalo | 400h | 160h | Plomeria |  | Seguimiento |
| 171 | 1.4.25.2 | Alimentación de agua para válvulas de inodoros desde tanques | 5d | 2026-08-24 | 2026-08-28 | 170 |  |  | 2026-06-15 | 2026-06-19 | 5d | 2026-06-11 | 2026-06-17 | 157d |  |  | Alexandra Arevalo | 40h |  | Plomeria |  | Seguimiento |
| 172 | 1.4.25.3 | Alimentación de agua a tanques y canillas en patio | 5d | 2026-08-24 | 2026-08-28 | 170 |  |  | 2026-06-15 | 2026-06-19 | 5d | 2026-06-11 | 2026-06-17 | 157d |  |  | Alexandra Arevalo | 40h |  | Plomeria |  | Seguimiento |
| 173 | 1.4.25.4 | Instalación de bomba hidroneumática bajo tanque | 2d | 2027-01-25 | 2027-01-26 | 238FS+15d |  |  | 2027-02-12 | 2027-02-15 | 2d | 2026-10-22 | 2026-10-23 | 55d |  |  | Alexandra Arevalo | 16h |  | Plomeria |  | Seguimiento |
| 174 | 1.4.26 | **INSTALACIONES GAS** | 230d | 2026-05-15 A | 2027-04-16 |  | 16% | 193.8d | 2026-03-03 | 2027-05-19 | 303d | 2026-03-19 | 2027-01-14 | 0d |  |  |  | 864h | 136h |  |  |  |
| 175 | 1.4.26.1 | ✔Instalación de gas para anafe, horno, termotanque | 17d | 2026-05-15 A | 2026-06-09 A |  | 100% |  | 2026-03-03 | 2026-03-23 | 15d | 2026-03-19 | 2026-04-10 |  |  | start no earlier than 2026-05-15 | Alexandra Arevalo | 136h | 136h | Plomeria | Planta Baja | Seguimiento |
| 176 | 1.4.26.2 | Adicional - Instalación Horno Asador | 11d | 2026-08-10 | 2026-08-24 | 139FF |  |  |  |  |  |  |  | 161d |  |  | Alexandra Arevalo | 88h |  |  | Planta Baja | Seguimiento |
| 177 | 1.4.26.3 | Factibilidad de gas y plano aprobación de cañerías | 33d | 2026-06-10 | 2026-07-27 | 175 |  |  | 2026-03-25 | 2026-04-15 | 15d | 2026-04-13 | 2026-05-04 | 71d | 0d |  | Alexandra Arevalo | 264h |  | Plomeria |  | Seguimiento |
| 178 | 1.4.26.4 | Segunda inspección parcial de cañerías y ventilaciones | 10d | 2026-07-28 | 2026-08-10 | 177 |  |  | 2026-04-16 | 2026-04-29 | 10d | 2026-05-05 | 2026-05-18 | 71d | 0d |  | Alexandra Arevalo | 80h |  | Plomeria |  | Seguimiento |
| 179 | 1.4.26.5 | Solicitud de servicio domiciliario (no incluye aranceles Ecogas) | 7d | 2027-04-08 | 2027-04-16 | 180 |  |  | 2027-05-11 | 2027-05-19 | 7d | 2027-01-06 | 2027-01-14 | 0d |  |  | Alexandra Arevalo | 56h |  | Plomeria |  | Seguimiento |
| 180 | 1.4.26.6 | Final de gas con artefactos colocados | 15d | 2027-03-16 | 2027-04-07 | 247FS+5d |  |  | 2027-04-20 | 2027-05-10 | 15d | 2026-12-14 | 2027-01-05 | 0d |  |  | Alexandra Arevalo | 120h |  | Plomeria |  | Seguimiento |
| 181 | 1.4.26.7 | Ventilaciones para gas. Conductos y rejillas | 15d | 2026-07-13 | 2026-07-31 | 175FS+22d |  |  | 2026-03-25 | 2026-04-15 | 15d | 2026-04-13 | 2026-05-04 | 176d |  |  | Alexandra Arevalo | 120h |  | Plomeria |  | Seguimiento |

| ID | WBS | Task | Duration | Start | Finish | Predecessors | Complete | Remaining | Baseline start | Baseline finish | Baseline duration | Baseline 1 start | Baseline 1 finish | Total slack | Free slack | Constraint | Resources | Work | Actual work | Texto1 | Texto3 | Texto2 |
| --- | --- | --- | --- | --- | --- | --- | --- | --- | --- | --- | --- | --- | --- | --- | --- | --- | --- | --- | --- | --- | --- | --- |
| 182 | 1.4.27 | **INSTALACION A°A° Y CALEFACCIÓN CENTRALIZADO (POR CONDUCTOS)** | 114d | 2026-10-01 | 2027-03-17 |  |  |  | 2026-06-15 | 2027-04-07 | 203d | 2026-06-18 | 2026-12-15 | 20d |  |  |  | 192h |  |  |  |  |
| 183 | 1.4.27.1 | 1 EQUIPO CON 6 CONDUCTOS | 7d | 2027-03-09 | 2027-03-17 | 228FS+40d |  |  | 2027-03-29 | 2027-04-07 | 7d | 2026-12-04 | 2026-12-15 | 20d |  |  | Alexandra Arevalo | 56h |  | Externo | Seguimiento |  |
| 184 | 1.4.27.2 | 2 EQUIPOS CON 4 CONDUCTOS CADA EQUIPO | 7d | 2027-03-09 | 2027-03-17 | 228FS+40d |  |  | 2027-03-29 | 2027-04-07 | 7d | 2026-12-04 | 2026-12-15 | 20d |  |  | Alexandra Arevalo | 56h |  | Externo | Seguimiento |  |
| 185 | 1.4.27.3 | Instalación Aire central PB y PA | 10d | 2026-10-01 | 2026-10-15 |  |  |  | 2026-06-15 | 2026-06-23 | 7d | 2026-06-18 | 2026-06-26 | 124d |  | start no earlier than 2026-10-01 | Alexandra Arevalo | 80h |  | Plomeria | Seguimiento |  |
| 186 | 1.4.28 | **INSTALACION ELÉCTRICA** | 281d | 2026-01-12 A | 2027-02-25 |  | 53% | 132.09d | 2025-12-23 | 2027-03-16 | 306d | 2026-01-12 | 2026-11-24 | 34d |  |  |  | 936h | 496h |  |  |  |
| 187 | 1.4.28.1 | ✔AMURADO DE CAJAS Y CANALIZACIÓN EN LOSA O CIELORASO | 5d | 2026-01-12 A | 2026-01-16 A | 79FF | 100% |  | 2025-12-23 | 2025-12-30 | 5d | 2026-01-12 | 2026-01-16 |  |  |  | Alexandra Arevalo | 40h | 40h | Electricista | Seguimiento | Subsuelo 1 |
| 188 | 1.4.28.2 | ✔AMURADO DE CAJAS Y CANALIZACIÓN EN LOSA O CIELORASO | 5d | 2026-04-21 A | 2026-04-27 A | 81FF | 100% |  | 2026-03-17 | 2026-03-23 | 5d | 2026-03-20 | 2026-03-27 |  |  |  | Alexandra Arevalo | 40h | 40h | Electricista | Seguimiento | Planta Baja |
| 189 | 1.4.28.3 | ✔AMURADO DE CAJAS Y CANALIZACIÓN EN LOSA O CIELORASO | 5d | 2026-06-16 A | 2026-06-22 A | 84FF | 100% |  | 2026-06-08 | 2026-06-12 | 5d | 2026-06-04 | 2026-06-10 |  |  |  | Alexandra Arevalo | 40h | 40h | Electricista | Seguimiento | Primer Piso |
| 190 | 1.4.28.4 | ✔AMURADO DE CAJAS Y CANALIZACIÓN EN MUROS | 15d | 2026-03-19 A | 2026-04-10 A | 119, 120 | 100% |  | 2026-01-16 | 2026-02-05 | 15d | 2026-01-29 | 2026-02-19 |  |  |  | Alexandra Arevalo | 120h | 120h | Electricista | Seguimiento | Subsuelo 1 |
| 191 | 1.4.28.5 | ✔AMURADO DE CAJAS Y CANALIZACIÓN EN MUROS | 15d | 2026-06-01 A | 2026-06-19 A |  | 100% |  | 2026-03-03 | 2026-03-23 | 15d | 2026-03-19 | 2026-04-10 |  |  | start no earlier than 2026-06-01 | Alexandra Arevalo | 120h | 120h | Electricista | Seguimiento | Planta Baja |
| 192 | 1.4.28.6 | AMURADO DE CAJAS Y CANALIZACIÓN EN MUROS | 30d | 2026-07-06 A | 2026-08-17 | 127FS-29d | 50% | 15d | 2026-09-18 | 2026-10-08 | 15d | 2026-08-14 | 2026-09-04 | 165d |  |  | Alexandra Arevalo | 240h | 120h | Electricista | Seguimiento | Primer Piso |
| 193 | 1.4.28.7 | ✔AMURADO DE TABLEROS SECCIONALES | 2d | 2026-05-20 A | 2026-05-21 A | 192FS-44d | 100% |  | 2026-10-09 | 2026-10-12 | 2d | 2026-09-07 | 2026-09-08 |  |  |  | Alexandra Arevalo | 16h | 16h | Electricista | Seguimiento |  |
| 194 | 1.4.28.8 | CABLEADO GENERAL 220V | 15d | 2027-01-11 | 2027-01-29 | 238FS+5d |  |  | 2027-01-28 | 2027-02-18 | 15d | 2026-10-07 | 2026-10-28 | 52d |  |  | Alexandra Arevalo | 120h |  | Electricista | Seguimiento |  |
| 195 | 1.4.28.9 | GUIAS TESTIGOS DE SEÑALES DÉBILES | 10d | 2027-01-04 | 2027-01-15 | 238 |  |  | 2027-01-21 | 2027-02-03 | 10d | 2026-09-30 | 2026-10-14 | 62d |  |  | Alexandra Arevalo | 80h |  | Electricista | Seguimiento |  |
| 196 | 1.4.28.10 | ARMADO DE INTERRUPTORES Y TOMAS | 10d | 2027-02-08 | 2027-02-22 | 226FS+20d |  |  | 2027-02-26 | 2027-03-11 | 10d | 2026-11-05 | 2026-11-19 | 34d | 0d |  | Alexandra Arevalo | 80h |  | Electricista | Seguimiento |  |
| 197 | 1.4.28.11 | ARMADO DEL TABLERO GENERAL | 3d | 2027-02-23 | 2027-02-25 | 196 |  |  | 2027-03-12 | 2027-03-16 | 3d | 2026-11-20 | 2026-11-24 | 34d |  |  | Alexandra Arevalo | 24h |  | Electricista | Seguimiento |  |
| 198 | 1.4.28.12 | ARMADO DEL PILAR Y TABLERO DE OBRA TRIFÁSICO | 2d | 2027-02-23 | 2027-02-24 | 196 |  |  | 2027-03-12 | 2027-03-15 | 2d | 2026-11-20 | 2026-11-23 | 35d |  |  | Alexandra Arevalo | 16h |  | Electricista | Seguimiento |  |
| 199 | 1.4.29 | **PISOS INTERIORES** | 30d | 2026-10-14 | 2026-11-25 |  |  |  | 2026-11-25 | 2027-01-08 | 30d | 2026-07-10 | 2026-08-21 | 71d |  |  |  | 960h |  |  |  |  |
| 200 | 1.4.29.1 | S1 - COCINA-LIVING-COMEDOR-PASILLO-DESPENSA (Porcelanato Simil Madera 60x120) | 30d | 2026-10-14 | 2026-11-25 | 111 |  |  | 2026-11-25 | 2027-01-08 | 30d | 2026-07-10 | 2026-08-21 | 71d | 0d |  | Alexandra Arevalo | 240h |  | Albañileria | Seguimiento | Planta Baja |
| 201 | 1.4.29.2 | S3 - LAVADERO Y TOILETTE (Porcelanato de 60x120 - a definir) | 30d | 2026-10-14 | 2026-11-25 | 111 |  |  | 2026-11-25 | 2027-01-08 | 30d | 2026-07-10 | 2026-08-21 | 96d |  |  | Alexandra Arevalo | 240h |  | Albañileria | Seguimiento | Planta Baja |
| 202 | 1.4.29.3 | S1 - DORMITORIOS-VESTIDOR-PASILLOS-BALCONES (Porcelanato Simil Madera 60x120) | 30d | 2026-10-14 | 2026-11-25 | 111 |  |  | 2026-11-25 | 2027-01-08 | 30d | 2026-07-10 | 2026-08-21 | 96d |  |  | Alexandra Arevalo | 240h |  | Albañileria | Seguimiento | Primer Piso |
| 203 | 1.4.29.4 | S3 - BAÑOS (Porcelanato de 60x120 - a definir) | 30d | 2026-10-14 | 2026-11-25 | 111 |  |  | 2026-11-25 | 2027-01-08 | 30d | 2026-07-10 | 2026-08-21 | 93d | 0d |  | Alexandra Arevalo | 240h |  | Albañileria | Seguimiento | Primer Piso |
| 204 | 1.4.30 | **REVESTIMIENTOS EXTERIORES** | 106d | 2026-08-17 | 2027-01-19 |  |  |  | 2026-08-19 | 2027-02-05 | 118d | 2026-08-14 | 2026-10-16 | 60d |  |  |  | 800h |  |  |  |  |
| 205 | 1.4.30.1 | R5 - rev. Texturado plástico color gris oscuro tono a definir - ext | 20d | 2026-12-10 | 2027-01-08 | 238SS-7d |  |  | 2026-12-30 | 2027-01-27 | 20d | 2026-09-09 | 2026-10-06 | 60d | 0d |  | Alexandra Arevalo | 160h |  | Albañileria | Seguimiento |  |
| 206 | 1.4.30.2 | R6 - rev. De piedra formato natural de color a definir - ext | 20d | 2026-08-17 | 2026-09-14 | 129FS+33d |  |  | 2026-08-19 | 2026-09-15 | 20d | 2026-08-14 | 2026-09-11 | 146d | 0d |  | Alexandra Arevalo | 160h |  | Albañileria | Seguimiento | Subsuelo 1 |
| 207 | 1.4.30.3 | R5 - rev. Texturado plástico color gris oscuro tono a definir - ext | 20d | 2026-12-10 | 2027-01-08 | 238SS-7d |  |  | 2026-12-30 | 2027-01-27 | 20d | 2026-09-09 | 2026-10-06 | 67d |  |  | Alexandra Arevalo | 160h |  | Albañileria | Seguimiento |  |
| 208 | 1.4.30.4 | R6 - rev. De piedra formato natural de color a definir - ext | 20d | 2026-08-17 | 2026-09-14 | 206SS |  |  | 2026-08-19 | 2026-09-15 | 20d | 2026-08-14 | 2026-09-11 | 146d |  |  | Alexandra Arevalo | 160h |  | Albañileria | Seguimiento | Planta Baja |
| 209 | 1.4.30.5 | R8 - rev. De ladrillos refractarios - ext | 3d | 2026-11-26 | 2026-11-30 | 203 |  |  | 2027-01-11 | 2027-01-13 | 3d | 2026-08-24 | 2026-08-26 | 93d |  |  | Alexandra Arevalo | 24h |  | Albañileria | Seguimiento |  |
| 210 | 1.4.30.6 | R11 - rev. Tipo wpc simil madera - ext | 5d | 2027-01-11 | 2027-01-15 | 205 |  |  | 2027-01-28 | 2027-02-03 | 5d | 2026-10-07 | 2026-10-14 | 62d |  |  | Alexandra Arevalo | 40h |  | Albañileria | Seguimiento | Planta Baja |
| 211 | 1.4.30.7 | R10 - rev. De hormigón visto - ext | 7d | 2027-01-11 | 2027-01-19 | 205 |  |  | 2027-01-28 | 2027-02-05 | 7d | 2026-10-07 | 2026-10-16 | 60d |  |  | Alexandra Arevalo | 56h |  | Albañileria | Seguimiento |  |
| 212 | 1.4.30.8 | R11 - rev. Tipo wpc simil madera - ext | 5d | 2027-01-11 | 2027-01-15 | 205 |  |  | 2027-01-28 | 2027-02-03 | 5d | 2026-10-07 | 2026-10-14 | 62d |  |  | Alexandra Arevalo | 40h |  | Albañileria | Seguimiento | Primer Piso |

| ID | WBS | Task | Duration | Start | Finish | Predecessors | Baseline start | Baseline finish | Baseline duration | Baseline 1 start | Baseline 1 finish | Total slack | Free slack | Resources | Work | Texto1 | Texto3 |
| --- | --- | --- | --- | --- | --- | --- | --- | --- | --- | --- | --- | --- | --- | --- | --- | --- | --- |
| 213 | 1.4.31 | **PISOS EXTERIORES** | 25d | 2026-11-26 | 2027-01-04 |  | 2027-01-11 | 2027-02-15 | 25d | 2026-08-24 | 2026-09-25 | 71d |  |  | 600h |  |  |
| 214 | 1.4.31.1 | S8 - INGRESO COCHERA - COCHERA - Adoquines de Hormigón | 25d | 2026-11-26 | 2027-01-04 | 200 | 2027-01-11 | 2027-02-15 | 25d | 2026-08-24 | 2026-09-25 | 71d |  | Alexandra Arevalo | 200h | Albañileria | Seguimiento |
| 215 | 1.4.31.2 | S2 - INGRESO PEATONAL - Cemento alisado transitable exterior | 15d | 2026-11-26 | 2026-12-17 | 200 | 2027-01-11 | 2027-01-29 | 15d | 2026-08-24 | 2026-09-11 | 81d |  | Alexandra Arevalo | 120h | Albañileria | Seguimiento |
| 216 | 1.4.31.3 | S4 - CANTEROS - Piedra partida | 15d | 2026-11-26 | 2026-12-17 | 200 | 2027-01-11 | 2027-01-29 | 15d | 2026-08-24 | 2026-09-11 | 81d |  | Alexandra Arevalo | 120h | Albañileria | Seguimiento |
| 217 | 1.4.31.4 | S5 - GALERIA PILETA Y SOLARIUM - Revestimiento Travertino | 20d | 2026-11-26 | 2026-12-24 | 200 | 2027-01-11 | 2027-02-05 | 20d | 2026-08-24 | 2026-09-18 | 76d |  | Alexandra Arevalo | 160h | Albañileria | Seguimiento |
| 218 | 1.4.32 | **ZOCALOS** | 74d | 2026-10-14 | 2027-01-29 |  | 2026-11-13 | 2027-02-18 | 65d | 2026-06-30 | 2026-10-28 | 52d |  |  | 696h |  |  |
| 219 | 1.4.32.1 | S8 - INGRESO COCHERA - COCHERA - Adoquines de Hormigón | 15d | 2027-01-11 | 2027-01-29 | 238FS+5d | 2027-01-28 | 2027-02-18 | 15d | 2026-10-07 | 2026-10-28 | 52d |  | Alexandra Arevalo | 120h | Albañileria | Seguimiento |
| 220 | 1.4.32.2 | S5 - GALERIA PILETA Y SOLARIUM - Revestimiento Travertino | 5d | 2027-01-11 | 2027-01-15 | 238FS+5d | 2027-01-28 | 2027-02-03 | 5d | 2026-10-07 | 2026-10-14 | 62d |  | Alexandra Arevalo | 40h | Albañileria | Seguimiento |
| 221 | 1.4.32.3 | S1 - COCINA-LIVING-COMEDOR-PASILLO-DESPENSA (Porcelanato Simil Madera 60x120) | 15d | 2027-01-11 | 2027-01-29 | 238FS+5d | 2027-01-28 | 2027-02-18 | 15d | 2026-10-07 | 2026-10-28 | 52d |  | Alexandra Arevalo | 120h | Albañileria | Seguimiento |
| 222 | 1.4.32.4 | S3 - LAVADERO-TOILETTE-TENDER (Porcelanato de 60x120 - a definir) | 15d | 2027-01-11 | 2027-01-29 | 238FS+5d | 2027-01-28 | 2027-02-18 | 15d | 2026-10-07 | 2026-10-28 | 52d |  | Alexandra Arevalo | 120h | Albañileria | Seguimiento |
| 223 | 1.4.32.5 | S1 - DORMITORIOS-VESTIDOR-PASILLOS-BALCONES (Porcelanato Simil Madera 60x120) | 15d | 2027-01-11 | 2027-01-29 | 238FS+5d | 2027-01-28 | 2027-02-18 | 15d | 2026-10-07 | 2026-10-28 | 52d |  | Alexandra Arevalo | 120h | Albañileria | Seguimiento |
| 224 | 1.4.32.6 | S3 - BAÑOS (Porcelanato de 60x120 - a definir) | 15d | 2027-01-11 | 2027-01-29 | 238FS+5d | 2027-01-28 | 2027-02-18 | 15d | 2026-10-07 | 2026-10-28 | 52d |  | Alexandra Arevalo | 120h | Albañileria | Seguimiento |
| 225 | 1.4.32.7 | Banquinas | 7d | 2026-10-14 | 2026-10-22 | 108 | 2026-11-13 | 2026-11-24 | 7d | 2026-06-30 | 2026-07-08 | 119d |  | Alexandra Arevalo | 56h | Albañileria | Seguimiento |
| 226 | 1.4.33 | **PINTURA INTERIOR** | 27d | 2026-11-30 | 2027-01-08 |  | 2026-12-18 | 2027-01-27 | 27d | 2026-08-31 | 2026-10-06 | 27d | 0d |  | 856h |  |  |
| 227 | 1.4.33.1 | LATEX INTERIOR PSB | 20d | 2026-12-10 | 2027-01-08 | 238SS-7d | 2026-12-30 | 2027-01-27 | 20d | 2026-09-09 | 2026-10-06 | 34d | 0d | Alexandra Arevalo | 160h | Pintura | Seguimiento |
| 228 | 1.4.33.2 | LATEX INTERIOR PB | 20d | 2026-12-10 | 2027-01-08 | 238SS-7d | 2026-12-30 | 2027-01-27 | 20d | 2026-09-09 | 2026-10-06 | 20d | 0d | Alexandra Arevalo | 160h | Pintura | Seguimiento |
| 229 | 1.4.33.3 | LATEX INTERIOR PA | 20d | 2026-12-10 | 2027-01-08 | 238SS-7d | 2026-12-30 | 2027-01-27 | 20d | 2026-09-09 | 2026-10-06 | 34d |  | Alexandra Arevalo | 160h | Pintura | Seguimiento |
| 230 | 1.4.33.4 | LATEX CIELORRASO | 20d | 2026-12-10 | 2027-01-08 | 238SS-7d | 2026-12-30 | 2027-01-27 | 20d | 2026-09-09 | 2026-10-06 | 34d |  | Alexandra Arevalo | 160h | Pintura | Seguimiento |
| 231 | 1.4.33.5 | LATEX CIELORRASO | 20d | 2026-12-10 | 2027-01-08 | 238SS-7d | 2026-12-30 | 2027-01-27 | 20d | 2026-09-09 | 2026-10-06 | 34d |  | Alexandra Arevalo | 160h | Pintura | Seguimiento |
| 232 | 1.4.33.6 | ENDUIDO INTERIOR | 7d | 2026-11-30 | 2026-12-10 | 227SF | 2026-12-18 | 2026-12-30 | 7d | 2026-08-31 | 2026-09-09 | 54d |  | Alexandra Arevalo | 56h | Pintura | Seguimiento |
| 233 | 1.4.34 | **PINTURA EXTERIOR** | 5d | 2026-12-14 | 2026-12-21 |  | 2027-01-04 | 2027-01-11 | 5d | 2026-09-11 | 2026-09-18 | 76d |  |  | 40h |  |  |
| 234 | 1.4.34.1 | ESMALTE SINTÉTICO | 5d | 2026-12-14 | 2026-12-21 | 238SF | 2027-01-04 | 2027-01-11 | 5d | 2026-09-11 | 2026-09-18 | 76d | 0d | Alexandra Arevalo | 40h | Pintura | Seguimiento |
| 235 | 1.4.35 | **ABERTURAS** | 91d | 2026-08-21 | 2026-12-31 |  | 2027-01-11 | 2027-01-20 | 8d | 2026-05-20 | 2026-09-29 | 0d |  |  | 128h |  |  |
| 236 | 1.4.35.1 | Puertas de madera | 4d | 2026-12-28 | 2026-12-31 | 237 | 2027-01-11 | 2027-01-14 | 4d | 2026-09-24 | 2026-09-29 | 72d |  | Alexandra Arevalo | 32h | Externo | Seguimiento |
| 237 | 1.4.35.2 | Puertas de aluminio | 4d | 2026-12-21 | 2026-12-24 | 240 | 2027-01-11 | 2027-01-14 | 4d | 2026-09-18 | 2026-09-23 | 72d | 0d | Alexandra Arevalo | 32h | Externo | Seguimiento |
| 238 | 1.4.35.3 | Aberturas de aluminio* | 8d | 2026-12-21 | 2026-12-31 | 240 | 2027-01-11 | 2027-01-20 | 8d | 2026-09-18 | 2026-09-29 | 0d |  | Alexandra Arevalo | 64h | Externo | Seguimiento |
| 239 | 1.4.35.4 | Colocación de premarcos | 5d | 2026-08-21 | 2026-08-27 | 128FS-7d |  |  |  | 2026-05-20 | 2026-05-27 | 0d |  |  |  |  | Seguimiento |
| 240 | 1.4.35.5 | Medición y fabricaciónde premarcos | 3d | 2026-12-16 | 2026-12-18 | 239FS+110ed |  |  |  | 2026-09-15 | 2026-09-17 | 0d |  |  |  |  | Seguimiento |

| ID | WBS | Task | Type | Duration | Start | Finish | Predecessors | Baseline start | Baseline finish | Baseline duration | Baseline 1 start | Baseline 1 finish | Total slack | Free slack | Constraint | Resources | Work | Texto1 | Texto3 | Texto2 |
| --- | --- | --- | --- | --- | --- | --- | --- | --- | --- | --- | --- | --- | --- | --- | --- | --- | --- | --- | --- | --- |
| 241 | 1.4.36 | **VARIOS** |  | 366d? | 2025-09-22 | 2027-03-11 |  | 2025-09-22 | 2027-04-15 | 389d? | 2025-09-22 | 2026-12-09 | 24d |  |  |  | 320h |  |  |  |
| 242 | 1.4.36.1 | PISCINA con desborde infinito* |  | 20d | 2027-01-25 | 2027-02-22 | 238FS+15d | 2027-02-12 | 2027-03-11 | 20d | 2026-10-22 | 2026-11-19 | 37d |  |  | Alexandra Arevalo | 160h | Externo | Seguimiento |  |
| 243 | 1.4.36.2 | Pérgola de listones de madera* |  | 1d? | 2025-09-22 | 2025-09-22 |  | 2025-09-22 | 2025-09-22 | 1d? | 2025-09-22 | 2025-09-22 | 389d |  | start no earlier than 2025-09-22 | Alexandra Arevalo | 8h | Externo | Seguimiento |  |
| 244 | 1.4.36.3 | Pozo de agua |  | 3d | 2027-01-25 | 2027-01-27 | 238FS+15d | 2027-02-12 | 2027-02-16 | 3d | 2026-10-22 | 2026-10-26 | 54d |  |  | Alexandra Arevalo | 24h | Externo | Seguimiento |  |
| 245 | 1.4.36.4 | Instalación de artefactos electricos |  | 3d | 2027-01-18 | 2027-01-20 | 248 | 2027-02-19 | 2027-02-23 | 3d | 2026-10-15 | 2026-10-19 | 59d |  |  | Alexandra Arevalo | 24h | Electricista | Seguimiento |  |
| 246 | 1.4.36.5 | Instalación de artefactos sanitarios |  | 3d | 2027-03-09 | 2027-03-11 | 247 | 2027-04-13 | 2027-04-15 | 3d | 2026-12-04 | 2026-12-09 | 24d |  |  | Alexandra Arevalo | 24h | Plomeria | Seguimiento |  |
| 247 | 1.4.36.6 | Mesadas colocación |  | 5d | 2027-03-02 | 2027-03-08 | 248FS+30d | 2027-04-06 | 2027-04-12 | 5d | 2026-11-27 | 2026-12-03 | 0d |  |  | Alexandra Arevalo | 40h | Externo | Seguimiento | Subsuelo 2 |
| 248 | 1.4.36.7 | Muebles colocación |  | 5d | 2027-01-11 | 2027-01-15 | 238FS+5d | 2027-02-12 | 2027-02-18 | 5d | 2026-10-07 | 2026-10-14 | 0d |  |  | Alexandra Arevalo | 40h | Externo | Seguimiento | Subsuelo 2 |
| 249 | 1.4.37 | **Instalaciones Calefacción** |  | 64d | 2026-09-16 | 2026-12-17 |  | 2026-10-14 | 2026-11-03 | 15d | 2026-05-19 | 2026-09-08 | 71d |  |  | Alexandra Arevalo | 728h |  |  |  |
| 250 | 1.4.37.1 | Colector |  | 15d | 2026-11-26 | 2026-12-17 | 135 | 2026-10-14 | 2026-11-03 | 15d | 2026-08-19 | 2026-09-08 | 81d |  |  | Alexandra Arevalo | 120h | Externo | Seguimiento | Planta Baja |
| 251 | 1.4.37.2 | Piso radiante planta baja |  | 5d | 2026-09-16 | 2026-09-22 | 178FS+25d | 2026-10-14 | 2026-11-03 | 15d | 2026-05-19 | 2026-06-09 | 71d | 0d |  | Alexandra Arevalo | 40h | Externo | Seguimiento | Planta Baja |
| 252 | 1.4.37.3 | Piso radiante planta alta |  | 7d | 2026-09-23 | 2026-10-01 | 251 | 2026-10-14 | 2026-11-03 | 15d | 2026-05-29 | 2026-06-18 | 71d | 0d |  | Alexandra Arevalo | 56h | Externo | Seguimiento | Primer Piso |
| 253 | 1.5 | Firma Acta recepcion Provisoria | milestone | 0d | 2027-04-16 | 2027-04-16 | 11 | 2027-05-19 | 2027-05-19 |  | 2027-01-14 | 2027-01-14 | 0d |  |  |  |  |  |  |  |
| 254 | 1.6 | Posventa |  | 12emo | 2027-04-16 | 2028-04-10 | 253 | 2027-05-19 | 2028-05-13 | 12emo | 2027-01-14 | 2028-01-09 | 0d |  |  | Posventa | 8640h |  |  |  |

Notes:
- 242: Sin contratar
- 243: Item a definir
