# Vivienda Venturelli - Bernal

Schedule from MS Project XML, 2026-06-01 to 2028-03-04, A marks actual dates.

## Calendars

- Calendario Argentino 2024: Mon-Fri 09:00-13:00, 15:00-19:00; Sat-Sun off. Exceptions (off unless hours are given): 2024-12-25 to 2033-12-25 (Navidad, recurring), 2025-01-01 to 2034-01-01 (Año nuevo 2025, recurring), 2025-02-10 to 2034-02-10 (Carnaval 2025, recurring), 2025-03-24 to 2034-03-24 (Día Nacional de la Memoria por la Verdad y la Justicia, recurring), 2025-04-02 to 2034-04-02 (Día del Veterano y de los Caídos en la Guerra de Malvinas, recurring), 2025-05-01 to 2034-05-01 (Día del Trabajador, recurring), 2025-05-25 to 2034-05-25 (Dia de la revolucion de Mayo, recurring), 2025-06-20 to 2034-06-20 (Día de la Bandera, recurring), 2025-07-09 to 2034-07-09 (Día de la Independencia, recurring), 2025-08-18 to 2034-08-18 (Paso a la Inmortalidad del Gral. José de San Martín (17/08), recurring), 2025-10-13 to 2034-10-13 (Día del Respeto a la Diversidad Cultural (12/10), recurring), 2025-11-18 to 2034-11-18 (Día de la Soberanía Nacional (20/11), recurring), 2025-12-08 to 2034-12-08 (Día de la Virgen, recurring).

## Resources

| Resource |
| --- |
| Gabriela Rojo |
| Posventa |
| Proyectos |
| Mariana V |

## Schedule

| ID | WBS | Task | Type | Duration | Start | Finish | Predecessors | Complete | Remaining | Baseline start | Baseline finish | Baseline duration | Total slack | Free slack | Constraint | Resources | Work | Actual work |
| --- | --- | --- | --- | --- | --- | --- | --- | --- | --- | --- | --- | --- | --- | --- | --- | --- | --- | --- |
| 1 | 1 | **Vivienda Venturelli - Bernal** |  | 443d? | 2026-06-01 A | 2028-03-04 |  | 10% | 398.52d? | 2026-06-01 | 2027-04-01 | 210d? | 0d |  |  |  | 25219.2h | 2918.63h |
| 2 | 1.1 | Obra Vivienda Venturelli - Bernal Contratada |  | 210d | 2026-06-01 | 2027-04-01 | 4SS |  |  | 2026-06-01 | 2027-04-01 | 210d | 0d |  | must start on 2026-06-01 | Gabriela Rojo | 1680h |  |
| 3 | 1.2 | Obra Vivienda Venturelli - Bernal | milestone | 0d | 2026-06-01 A | 2026-06-01 A | 4FF | 100% |  | 2026-06-01 | 2026-06-01 |  |  |  |  |  |  |  |
| 4 | 1.3 | **OBRA VIVIENDA VENTURELLI - BERNAL** |  | 194.4d? | 2026-06-01 A | 2027-03-10 |  | 33% | 129.47d? | 2026-06-01 | 2027-03-31 | 208.4d? | 248.6d | 0d | start no earlier than 2026-06-01 |  | 14899.2h | 2918.63h |
| 5 | 1.3.1 | **TAREAS PRELIMINARES** |  | 4.5d | 2026-06-01 A | 2026-06-05 A |  | 100% |  | 2026-06-01 | 2026-06-05 | 4.5d |  |  |  |  | 76h | 76h |
| 6 | 1.3.1.1 | Estudio de Suelos |  | 3d | 2026-06-01 A | 2026-06-03 A |  | 100% |  | 2026-06-01 | 2026-06-03 | 3d |  |  | start no earlier than 2026-04-27 | Mariana V | 24h | 24h |
| 7 | 1.3.1.2 | Calculo Estructural |  | 3d | 2026-06-01 A | 2026-06-03 A |  | 100% |  | 2026-06-01 | 2026-06-03 | 3d |  |  |  | Mariana V | 24h | 24h |
| 8 | 1.3.1.3 | Cerco Perimetral |  | 2d | 2026-06-02 A | 2026-06-03 A |  | 100% |  | 2026-06-02 | 2026-06-03 | 2d |  |  |  | Mariana V | 16h | 16h |
| 9 | 1.3.1.4 | Replanteo de Obra |  | 1.5d | 2026-06-04 A | 2026-06-05 A | 13 | 100% |  | 2026-06-04 | 2026-06-05 | 1.5d |  |  | start no earlier than 2026-04-27 | Mariana V | 12h | 12h |
| 10 | 1.3.2 | **CONFORMACIÓN DE TERRENO** |  | 72.4d | 2026-06-02 A | 2026-09-14 |  | 56% | 31.68d | 2026-06-02 | 2026-09-22 | 78.4d | 369.6d |  |  | Mariana V | 675.2h | 168.57h |
| 11 | 1.3.2.1 | Extracción de árboles |  | 2d | 2026-06-02 A | 2026-06-03 A |  | 100% |  | 2026-06-02 | 2026-06-03 | 2d |  |  | start no earlier than 2026-06-02 | Mariana V | 16h | 16h |
| 12 | 1.3.2.2 | Demora por clima |  | 4d | 2026-06-04 A | 2026-06-09 A | 11 | 100% |  | 2026-06-04 | 2026-06-09 | 4d |  |  |  |  |  |  |
| 13 | 1.3.2.3 | Excavación terreno |  | 3d | 2026-06-10 A | 2026-06-12 A | 12 | 100% |  | 2026-06-10 | 2026-06-12 | 3d |  |  |  | Mariana V | 24h | 24h |
| 14 | 1.3.2.4 | Relleno de terreno |  | 7d | 2026-09-03 | 2026-09-14 | 72FS+1d |  |  | 2026-09-11 | 2026-09-22 | 7d | 369.6d |  |  | Mariana V | 56h |  |
| 15 | 1.3.3 | **ESTRUCTURA Y ALBAÑILERIA** |  | 189.9d | 2026-06-05 A | 2027-03-10 |  | 36% | 120.63d | 2026-06-01 | 2027-03-31 | 208.4d | 248.6d |  |  | Mariana V | 9210.4h | 2674.06h |
| 16 | 1.3.3.1 | **Pilotes de H°** |  | 23.5d | 2026-06-05 A | 2026-07-08 A |  | 100% |  | 2026-06-01 | 2026-06-01 | 1d |  |  |  | Mariana V | 372h | 372h |
| 17 | 1.3.3.1.1 | EXCAVACIÓN DE PILOTES* (presupuesto prov. por empresa tercerizada) - 41 pilotes con ensanche mecánico p/ campana |  | 9d | 2026-06-25 A | 2026-07-07 A | 18 | 100% |  | 2026-06-25 | 2026-07-07 | 9d |  |  |  | Mariana V | 72h | 72h |
| 18 | 1.3.3.1.2 | Demora por conflicto externo con empresa pilotera |  | 11d | 2026-06-10 A | 2026-06-24 A | 12 | 100% |  | 2026-06-10 | 2026-06-24 | 11d |  |  |  |  |  |  |
| 19 | 1.3.3.1.3 | Armadura y llenado de H° |  | 12d | 2026-06-05 A | 2026-06-23 A | 9 | 100% |  | 2026-06-05 | 2026-06-23 | 12d |  |  |  | Mariana V | 96h | 96h |
| 20 | 1.3.3.1.4 | Hormigón de pozos |  | 1d | 2026-07-01 A | 2026-07-02 A | 17SF+6% | 100% |  | 2026-07-01 | 2026-07-02 | 1d |  |  |  | Mariana V | 8h | 8h |
| 21 | 1.3.3.1.5 | Hormigón de pozos 2da etapa |  | 1d | 2026-07-08 A | 2026-07-08 A | 17 | 100% |  | 2026-07-08 | 2026-07-08 | 1d |  |  |  | Mariana V | 8h | 8h |
| 22 | 1.3.3.2 | **Zapata Continua** |  | 10d | 2026-06-16 A | 2026-06-30 A |  | 100% |  | 2026-06-01 | 2026-06-01 | 1d |  |  |  | Mariana V | 320h | 320h |
| 23 | 1.3.3.2.1 | CAB 01 - 60x60 |  | 10d | 2026-06-16 A | 2026-06-30 A | 28FF | 100% |  | 2026-07-14 | 2026-07-28 | 10d |  |  |  | Mariana V | 80h | 80h |
| 24 | 1.3.3.2.2 | CAB 02 - 110x80 |  | 10d | 2026-06-16 A | 2026-06-30 A | 28FF | 100% |  | 2026-07-14 | 2026-07-28 | 10d |  |  |  | Mariana V | 80h | 80h |
| 25 | 1.3.3.2.3 | CAB 03 - 120x80 |  | 10d | 2026-06-16 A | 2026-06-30 A | 28FF | 100% |  | 2026-07-14 | 2026-07-28 | 10d |  |  |  | Mariana V | 80h | 80h |

| ID | WBS | Task | Duration | Start | Finish | Predecessors | Complete | Remaining | Baseline start | Baseline finish | Baseline duration | Total slack | Resources | Work | Actual work |
| --- | --- | --- | --- | --- | --- | --- | --- | --- | --- | --- | --- | --- | --- | --- | --- |
| 26 | 1.3.3.3 | **Vigas de Fundación y Riostra** | 27.9d | 2026-06-23 A | 2026-08-03 A |  | 100% |  | 2026-06-01 | 2026-06-01 | 1d |  | Mariana V | 591.2h | 591.2h |
| 27 | 1.3.3.3.1 | Excavación de vigas | 20d | 2026-07-02 A | 2026-07-31 A | 20 | 100% |  | 2026-07-02 | 2026-07-14 | 7d |  | Mariana V | 160h | 160h |
| 28 | 1.3.3.3.2 | Viga de Fundación - VF1 - (25x40) | 5d | 2026-06-23 A | 2026-06-30 A | 19 | 100% |  | 2026-07-14 | 2026-07-28 | 10d |  | Mariana V | 40h | 40h |
| 29 | 1.3.3.3.3 | Viga de Fundación - VF2 - (40x25) | 5d | 2026-06-23 A | 2026-06-30 A | 19 | 100% |  | 2026-07-14 | 2026-07-28 | 10d |  | Mariana V | 40h | 40h |
| 30 | 1.3.3.3.4 | Viga de Fundación - VF3 - (60x25) | 5d | 2026-06-23 A | 2026-06-30 A | 19 | 100% |  | 2026-07-14 | 2026-07-28 | 10d |  | Mariana V | 40h | 40h |
| 31 | 1.3.3.3.5 | Viga de Fundación - VF4 - (60x40) | 5d | 2026-06-23 A | 2026-06-30 A | 19 | 100% |  | 2026-07-14 | 2026-07-28 | 10d |  | Mariana V | 40h | 40h |
| 32 | 1.3.3.3.6 | Viga Riostra VR01 (25x25) | 5d | 2026-06-23 A | 2026-06-30 A | 19 | 100% |  | 2026-07-14 | 2026-07-28 | 10d |  | Mariana V | 40h | 40h |
| 33 | 1.3.3.3.7 | Hormigón de riostra | 1d | 2026-07-31 A | 2026-08-03 A | 27 | 100% |  | 2026-07-29 | 2026-07-30 | 1d |  | Mariana V | 8h | 8h |
| 34 | 1.3.3.4 | **Columnas.** | 8d | 2026-10-23 A | 2026-11-04 |  | 30% | 5.6d | 2026-06-01 | 2026-06-01 | 1d | 333.6d | Mariana V | 512h | 153.6h |
| 35 | 1.3.3.4.1 | C01 - (0,18x0,25) - 12 unid | 8d | 2026-10-23 A | 2026-11-04 | 63 | 30% | 5.6d | 2026-09-11 | 2026-09-23 | 8d | 333.6d | Mariana V | 64h | 19.2h |
| 36 | 1.3.3.4.2 | C02 - (0,18x0,76) - 5 unid | 8d | 2026-10-23 A | 2026-11-04 | 63 | 30% | 5.6d | 2026-09-11 | 2026-09-23 | 8d | 333.6d | Mariana V | 64h | 19.2h |
| 37 | 1.3.3.4.3 | C03 - (0,20x0,20) - 26 unid | 8d | 2026-10-23 A | 2026-11-04 | 63 | 30% | 5.6d | 2026-09-11 | 2026-09-23 | 8d | 333.6d | Mariana V | 64h | 19.2h |
| 38 | 1.3.3.4.4 | C04 - (0,18x0,38) - 1 unid | 8d | 2026-10-23 A | 2026-11-04 | 63 | 30% | 5.6d | 2026-09-11 | 2026-09-23 | 8d | 333.6d | Mariana V | 64h | 19.2h |
| 39 | 1.3.3.4.5 | C05 - (0,18x0,58) - 2 unid | 8d | 2026-10-23 A | 2026-11-04 | 63 | 30% | 5.6d | 2026-09-11 | 2026-09-23 | 8d | 333.6d | Mariana V | 64h | 19.2h |
| 40 | 1.3.3.4.6 | C06 - (0,27x0,20) - 2 unid | 8d | 2026-10-23 A | 2026-11-04 | 63 | 30% | 5.6d | 2026-09-11 | 2026-09-23 | 8d | 333.6d | Mariana V | 64h | 19.2h |
| 41 | 1.3.3.4.7 | C07 - (0,40x0,40) - 2 unid | 8d | 2026-10-23 A | 2026-11-04 | 63 | 30% | 5.6d | 2026-09-11 | 2026-09-23 | 8d | 333.6d | Mariana V | 64h | 19.2h |
| 42 | 1.3.3.5 | **Encadenado Vertical** | 8d | 2026-10-23 | 2026-11-04 |  |  |  | 2026-06-01 | 2026-06-01 | 1d | 333.6d | Mariana V | 128h |  |
| 43 | 1.3.3.5.1 | CE1 - (0,18x0,18) - 52 unid | 8d | 2026-10-23 | 2026-11-04 | 63 |  |  | 2026-09-11 | 2026-09-23 | 8d | 333.6d | Mariana V | 64h |  |
| 44 | 1.3.3.6 | **Encadenado Horizontal** | 8d | 2026-10-23 | 2026-11-04 |  |  |  | 2026-06-01 | 2026-06-01 | 1d | 333.6d | Mariana V | 256h |  |
| 45 | 1.3.3.6.1 | VE - (0,18x0,20) | 8d | 2026-10-23 | 2026-11-04 | 63 |  |  | 2026-09-11 | 2026-09-23 | 8d | 333.6d | Mariana V | 64h |  |
| 46 | 1.3.3.6.2 | VE2 - (0,20x0,20) | 8d | 2026-10-23 | 2026-11-04 | 63 |  |  | 2026-09-11 | 2026-09-23 | 8d | 333.6d | Mariana V | 64h |  |
| 47 | 1.3.3.6.3 | VE3 - (0,20x0,30) | 8d | 2026-10-23 | 2026-11-04 | 63 |  |  | 2026-09-11 | 2026-09-23 | 8d | 333.6d | Mariana V | 64h |  |
| 48 | 1.3.3.7 | **Vigas Estructurales** | 39d | 2026-11-09 | 2027-01-07 |  |  |  | 2026-06-01 | 2026-06-01 | 1d | 0d | Mariana V | 520h |  |
| 49 | 1.3.3.7.1 | Vigas estructurales - (18x15),(18x21),(18x25),(18x36),(18x40),(18x46),(18x50),(18x54),(18x54),(18x60),(18x68),(18x74) | 7d | 2026-11-09 | 2026-11-19 | 64 |  |  | 2026-10-07 | 2026-10-22 | 10d | 0d | Mariana V | 56h |  |
| 50 | 1.3.3.7.2 | Vigas estructurales - (20x110),(20x150) | 7d | 2026-11-09 | 2026-11-19 | 64 |  |  | 2026-10-07 | 2026-10-22 | 10d | 323.6d | Mariana V | 56h |  |
| 51 | 1.3.3.7.3 | Vigas estructurales - (27x21),(29x110),(38x20),(50x21) | 7d | 2026-11-09 | 2026-11-19 | 64 |  |  | 2026-10-07 | 2026-10-22 | 10d | 323.6d | Mariana V | 56h |  |
| 52 | 1.3.3.7.4 | Viga estructural - (18x30) | 5d | 2026-12-30 | 2027-01-07 | 65 |  |  | 2026-12-09 | 2026-12-16 | 5d | 291.6d | Mariana V | 40h |  |

Notes:
- 27: Demora en 10 días más por no tener espacio para acopiar tierra

| ID | WBS | Task | Duration | Start | Finish | Predecessors | Complete | Remaining | Baseline start | Baseline finish | Baseline duration | Total slack | Free slack | Resources | Work | Actual work |
| --- | --- | --- | --- | --- | --- | --- | --- | --- | --- | --- | --- | --- | --- | --- | --- | --- |
| 53 | 1.3.3.8 | **Losas** | 42d | 2026-11-19 | 2027-01-21 |  |  |  | 2026-06-01 | 2026-06-01 | 1d | 0d |  | Mariana V | 912h |  |
| 54 | 1.3.3.8.1 | Losa Vigueta Simple - 21 cm | 21d | 2026-11-19 | 2026-12-21 | 49 |  |  | 2026-10-22 | 2026-11-23 | 21d | 302.6d | 0d | Mariana V | 168h |  |
| 55 | 1.3.3.8.2 | Losa Maciza - 10 cm | 21d | 2026-11-19 | 2026-12-21 | 49 |  |  | 2026-10-22 | 2026-11-23 | 21d | 302.6d |  | Mariana V | 168h |  |
| 56 | 1.3.3.8.3 | Losa Maciza - 15 cm | 21d | 2026-11-19 | 2026-12-21 | 49 |  |  | 2026-10-22 | 2026-11-23 | 21d | 0d |  | Mariana V | 168h |  |
| 57 | 1.3.3.8.4 | Hormigón de losas | 1d | 2026-12-21 | 2026-12-22 | 56 |  |  | 2026-11-23 | 2026-11-24 | 1d | 0d |  | Mariana V | 8h |  |
| 58 | 1.3.3.8.5 | Desencofrados y devoluciones de equipo | 5d | 2027-01-14 | 2027-01-21 | 57SF+21d |  |  | 2026-12-16 | 2026-12-23 | 5d | 281.6d |  | Mariana V | 40h |  |
| 59 | 1.3.3.8.6 | Losa Vigueta Simple - 21 cm - Tanque | 3d | 2026-12-30 | 2027-01-05 | 65 |  |  | 2026-12-09 | 2026-12-16 | 5d | 293.6d |  | Mariana V | 24h |  |
| 60 | 1.3.3.9 | **Mampostería** | 60d | 2026-10-01 A | 2026-12-30 |  | 2% | 58.54d | 2026-06-01 | 2026-06-01 | 1d | 296.6d |  | Mariana V | 776h | 18.88h |
| 61 | 1.3.3.9.1 | Mampostería de fundación | 3d | 2026-10-01 A | 2026-10-06 | 75 | 30% | 2.1d | 2026-07-30 | 2026-08-04 | 3d | 0d |  | Mariana V | 24h | 7.2h |
| 62 | 1.3.3.9.2 | Mamposteria Ladrillo Hueco no Portante 08x18x33 PB | 4d | 2026-10-14 | 2026-10-20 | 70 |  |  | 2026-09-02 | 2026-09-08 | 4d | 344.6d |  | Mariana V | 32h |  |
| 63 | 1.3.3.9.3 | Mamposteria Ladrillo Hueco Portante 12x18x33 PB | 7d | 2026-10-14 | 2026-10-23 | 70 |  |  | 2026-09-02 | 2026-09-11 | 7d | 2.4d | 0d | Mariana V | 56h |  |
| 64 | 1.3.3.9.4 | Mamposteria Ladrillo Hueco Portante 18x18x33 PB | 18d | 2026-10-14 | 2026-11-09 | 70 |  |  | 2026-09-02 | 2026-10-07 | 25d | 0d |  | Mariana V | 144h |  |
| 65 | 1.3.3.9.5 | Parapetos + tanque | 5d | 2026-12-22 | 2026-12-30 | 57 |  |  | 2026-11-24 | 2026-12-09 | 10d | 0d |  | Mariana V | 40h |  |
| 66 | 1.3.3.10 | **Tabique de Contención** | 44d | 2026-08-03 A | 2026-10-05 A |  | 100% |  | 2026-06-01 | 2026-06-01 | 1d |  |  | Mariana V | 512h | 512h |
| 67 | 1.3.3.10.1 | Muro de contención: Muro Bloque H° armado + llenado de hormigón - esp:20cm | 15d | 2026-08-03 A | 2026-08-25 A | 33 | 100% |  | 2026-08-04 | 2026-09-02 | 20d |  |  | Mariana V | 120h | 120h |
| 68 | 1.3.3.10.2 | Vigas encadenado sobre muro contención, nivel contrapiso | 5d | 2026-09-28 A | 2026-10-05 A | 75FF | 100% |  |  |  |  |  |  | Mariana V | 40h | 40h |
| 69 | 1.3.3.11 | **Aislación en Muros y Contrapiso** | 135d | 2026-08-25 A | 2027-03-10 |  | 35% | 87.75d | 2026-06-01 | 2026-06-01 | 1d | 248.6d |  | Mariana V | 1240h | 434h |
| 70 | 1.3.3.11.1 | Capa Aisladora Horizontal Mampostería | 5d | 2026-10-06 | 2026-10-14 | 61 |  |  | 2026-09-02 | 2026-09-11 | 7d | 0d |  | Mariana V | 40h |  |
| 71 | 1.3.3.11.2 | Capa Aisladora Horizontal sobre Contrapiso | 1d | 2026-09-15 A | 2026-09-16 A | 76 | 100% |  | 2026-09-29 | 2026-10-02 | 3d |  |  | Mariana V | 8h | 8h |
| 72 | 1.3.3.11.3 | Capa Aisladora Vertical Mampostería - H: 50cm | 6d | 2026-08-25 A | 2026-09-02 A | 67 | 100% |  | 2026-09-02 | 2026-09-16 | 10d |  |  | Mariana V | 48h | 48h |
| 73 | 1.3.3.11.4 | Capa Aisladora Vertical en muro de piedra - Monotop | 8d | 2027-02-26 | 2027-03-10 | 85 |  |  | 2027-02-23 | 2027-03-09 | 10d | 248.6d |  | Mariana V | 64h |  |
| 74 | 1.3.3.12 | **Contrapiso** | 13d | 2026-09-14 A | 2026-10-01 A |  | 100% |  | 2026-06-01 | 2026-06-01 | 1d |  |  | Mariana V | 200h | 200h |
| 75 | 1.3.3.12.1 | Hormigón p/contrapiso Interior Casa e=10cm (PB) | 11d | 2026-09-16 A | 2026-10-01 A | 71 | 100% |  | 2026-10-02 | 2026-10-21 | 12d |  |  | Mariana V | 88h | 88h |
| 76 | 1.3.3.12.2 | Contrapiso 020 | 1d | 2026-09-14 A | 2026-09-15 A | 14 | 100% |  | 2026-09-22 | 2026-09-29 | 5d |  |  | Mariana V | 8h | 8h |

Notes:
- 68: Agrego item, que no se contemplaba

| ID | WBS | Task | Duration | Start | Finish | Predecessors | Baseline start | Baseline finish | Baseline duration | Total slack | Free slack | Resources | Work |
| --- | --- | --- | --- | --- | --- | --- | --- | --- | --- | --- | --- | --- | --- |
| 77 | 1.3.3.13 | **Carpeta de Nivelación** | 40d | 2027-01-12 | 2027-03-10 |  | 2026-06-01 | 2026-06-01 | 1d | 0d |  | Mariana V | 456h |
| 78 | 1.3.3.13.1 | Carpeta de Nivelación Interior Casa e=4cm (PB) | 10d | 2027-02-24 | 2027-03-10 | 109 | 2027-03-16 | 2027-03-31 | 10d | 0d |  | Mariana V | 80h |
| 79 | 1.3.3.13.2 | Carpeta de Nivelación de Cubierta Casa e= 4 cm | 7d | 2027-01-12 | 2027-01-21 | 82 | 2026-12-30 | 2027-01-11 | 7d | 0d |  | Mariana V | 56h |
| 80 | 1.3.3.14 | **Cubierta** | 22d | 2026-12-30 | 2027-02-01 |  | 2026-06-01 | 2026-06-01 | 1d | 0d |  | Mariana V | 296h |
| 81 | 1.3.3.14.1 | Base de Pintura Asfaltica. | 1d | 2026-12-30 | 2026-12-31 | 65 | 2026-12-09 | 2026-12-11 | 2d | 0d |  | Mariana V | 8h |
| 82 | 1.3.3.14.2 | Cubierta común sobre Losa con perlas de Telgopor - Hormigón de Pendiente - 10 cm | 7d | 2026-12-31 | 2027-01-12 | 81 | 2026-12-11 | 2026-12-30 | 12d | 0d |  | Mariana V | 56h |
| 83 | 1.3.3.14.3 | Impermeabilización en cubierta Casa* (con parapeto-h:20cm) | 7d | 2027-01-21 | 2027-02-01 | 79 | 2027-01-11 | 2027-01-20 | 7d | 274.6d |  | Mariana V | 56h |
| 84 | 1.3.3.15 | **Azotado Hidrófugo + Revoque Grueso exterior** | 15d | 2027-02-04 | 2027-02-26 |  | 2026-06-01 | 2026-06-01 | 1d | 248.6d |  | Mariana V | 240h |
| 85 | 1.3.3.15.1 | Revoque c/ azotado hidrof. cementicio en mamp. | 15d | 2027-02-04 | 2027-02-26 | 87 | 2027-01-27 | 2027-02-23 | 18d | 248.6d | 0d | Mariana V | 120h |
| 86 | 1.3.3.16 | **Azotado Cementicio Interior** | 10d | 2027-01-21 | 2027-02-04 |  | 2026-06-01 | 2026-06-01 | 1d | 0d |  | Mariana V | 160h |
| 87 | 1.3.3.16.1 | Azotado Cementicio Interior | 10d | 2027-01-21 | 2027-02-04 | 79 | 2027-01-11 | 2027-01-27 | 12d | 0d |  | Mariana V | 80h |
| 88 | 1.3.3.17 | **Escaleras** | 5d | 2027-02-04 | 2027-02-12 |  | 2026-06-01 | 2026-06-01 | 1d | 0d |  | Mariana V | 120h |
| 89 | 1.3.3.17.1 | Escalera Int. de Hormigon in situ - ancho: 1,60m | 5d | 2027-02-04 | 2027-02-12 | 87 | 2027-02-23 | 2027-03-04 | 7d | 0d |  | Mariana V | 40h |
| 90 | 1.3.3.17.2 | Escalera Int. de Hormigon in situ - ancho 1,35m | 5d | 2027-02-04 | 2027-02-12 | 89FF | 2027-03-04 | 2027-03-15 | 7d | 0d |  | Mariana V | 40h |
| 91 | 1.3.3.18 | **Asador** | 5d | 2026-10-23 | 2026-10-30 |  | 2026-06-01 | 2026-06-01 | 1d | 336.6d |  | Mariana V | 80h |
| 92 | 1.3.3.18.1 | Asador (1,70 m de largo) | 5d | 2026-10-23 | 2026-10-30 | 63 | 2026-09-11 | 2026-09-18 | 5d | 336.6d |  | Mariana V | 40h |
| 93 | 1.3.4 | **CARPINTERIAS** | 176.4d? | 2026-06-01 | 2027-02-12 |  | 2026-06-01 | 2027-02-03 | 170.4d? | 266.6d |  | Mariana V | 2878.4h |
| 94 | 1.3.4.1 | **Aberturas** | 176.4d? | 2026-06-01 | 2027-02-12 |  | 2026-06-01 | 2026-06-01 | 1d? | 266.6d |  | Mariana V | 1467.2h |
| 95 | 1.3.4.1.1 | Colocación de premarcos | 5d | 2027-02-04 | 2027-02-12 | 87 | 2027-01-27 | 2027-02-03 | 5d | 266.6d |  | Mariana V | 40h |
| 96 | 1.3.4.1.2 | Puertas de madera* | 1d? | 2026-06-01 | 2026-06-01 |  | 2026-06-01 | 2026-06-01 | 1d? | 442d |  | Mariana V | 8h |
| 97 | 1.3.4.1.3 | Aberturas de aluminio* | 1d? | 2026-06-01 | 2026-06-01 |  | 2026-06-01 | 2026-06-01 | 1d? | 442d |  | Mariana V | 8h |
| 98 | 1.3.5 | **LIMPIEZA DE OBRA** | 4d? | 2026-06-01 | 2026-06-04 |  | 2026-06-01 | 2026-06-04 | 4d? | 439d |  | Mariana V | 104h |
| 99 | 1.3.5.1 | **Limpieza** | 4d? | 2026-06-01 | 2026-06-04 |  | 2026-06-01 | 2026-06-01 | 1d? | 439d |  | Mariana V | 72h |
| 100 | 1.3.5.1.1 | Limpieza periodica | 1d? | 2026-06-01 | 2026-06-01 |  | 2026-06-01 | 2026-06-01 | 1d? | 442d |  | Mariana V | 8h |
| 101 | 1.3.5.1.2 | Limpieza final | 4d | 2026-06-01 | 2026-06-04 |  | 2026-06-01 | 2026-06-04 | 4d | 439d |  | Mariana V | 32h |

| ID | WBS | Task | Type | Duration | Start | Finish | Predecessors | Baseline start | Baseline finish | Baseline duration | Total slack | Resources | Work |
| --- | --- | --- | --- | --- | --- | --- | --- | --- | --- | --- | --- | --- | --- |
| 102 | 1.3.6 | **VARIOS** |  | 184.4d | 2026-06-01 | 2027-02-24 |  | 2026-06-01 | 2027-03-16 | 198.4d | 176.4d | Mariana V | 1955.2h |
| 103 | 1.3.6.1 | Muebles | milestone | 0d | 2026-06-01 | 2026-06-01 |  | 2026-06-01 | 2026-06-01 |  | 443d | Mariana V |  |
| 104 | 1.3.6.2 | Mesadas | milestone | 0d | 2026-06-01 | 2026-06-01 |  | 2026-06-01 | 2026-06-01 |  | 443d | Mariana V |  |
| 105 | 1.3.6.3 | Intalaciones de plomería contrapiso |  | 20d | 2026-06-30 | 2026-07-29 | 28 | 2026-07-28 | 2026-08-26 | 20d | 401.5d | Mariana V | 160h |
| 106 | 1.3.6.4 | Intalaciones de plomería pared |  | 15d | 2026-11-09 | 2026-12-01 | 64 | 2026-10-07 | 2026-10-29 | 15d | 315.6d | Mariana V | 120h |
| 107 | 1.3.6.5 | Instalaciones de electricidad losa |  | 2d | 2026-12-14 | 2026-12-16 | 54FF-3d | 2026-11-13 | 2026-11-17 | 2d | 305.6d | Mariana V | 16h |
| 108 | 1.3.6.6 | Instalaciones de electricidad pared |  | 15d | 2026-11-09 | 2026-12-01 | 64 | 2026-10-07 | 2026-10-29 | 15d | 315.6d | Mariana V | 120h |
| 109 | 1.3.6.7 | Instalación de losa radiante |  | 8d | 2027-02-12 | 2027-02-24 | 90 | 2027-02-23 | 2027-03-16 | 15d | 0d | Mariana V | 64h |
| 110 | 1.4 | Firma Acta recepcion Provisoria | milestone | 0d | 2027-03-10 | 2027-03-10 | 78 | 2027-03-31 | 2027-03-31 |  | 0d | Mariana V |  |
| 111 | 1.5 | Posventa |  | 12emo | 2027-03-10 | 2028-03-04 | 110 | 2027-03-31 | 2028-03-25 | 12emo | 0d | Posventa | 8640h |
