# Vivienda RC

Schedule from MS Project XML, 2026-04-05 to 2028-11-16, A marks actual dates.

## Calendars

- Calendario Argentino 2024: Mon-Fri 09:00-13:00, 15:00-19:00; Sat-Sun off. Exceptions (off unless hours are given): 2024-12-25 to 2033-12-25 (Navidad, recurring), 2025-01-01 to 2034-01-01 (Año nuevo 2025, recurring), 2025-02-10 to 2034-02-10 (Carnaval 2025, recurring), 2025-03-24 to 2034-03-24 (Día Nacional de la Memoria por la Verdad y la Justicia, recurring), 2025-04-02 to 2034-04-02 (Día del Veterano y de los Caídos en la Guerra de Malvinas, recurring), 2025-05-01 to 2034-05-01 (Día del Trabajador, recurring), 2025-05-25 to 2034-05-25 (Dia de la revolucion de Mayo, recurring), 2025-06-20 to 2034-06-20 (Día de la Bandera, recurring), 2025-07-09 to 2034-07-09 (Día de la Independencia, recurring), 2025-08-18 to 2034-08-18 (Paso a la Inmortalidad del Gral. José de San Martín (17/08), recurring), 2025-10-13 to 2034-10-13 (Día del Respeto a la Diversidad Cultural (12/10), recurring), 2025-11-18 to 2034-11-18 (Día de la Soberanía Nacional (20/11), recurring), 2025-12-08 to 2034-12-08 (Día de la Virgen, recurring).

## Resources

| Resource |
| --- |
| Gabriela Rojo |
| Posventa |
| Proyectos |
| Mariana V |

## Schedule

| ID | WBS | Task | Type | Duration | Start | Finish | Predecessors | Complete | Remaining | Baseline start | Baseline finish | Baseline duration | Total slack | Free slack | Constraint | Resources | Work | Actual work | Texto3 | Texto1 | Texto2 |
| --- | --- | --- | --- | --- | --- | --- | --- | --- | --- | --- | --- | --- | --- | --- | --- | --- | --- | --- | --- | --- | --- |
| 1 | 1 | **Vivienda Esteban y Matias** |  | 658.5d? | 2026-04-05 A | 2028-11-16 |  | 6% | 619.91d? |  |  |  | 0d |  |  |  | 43272h | 1344.5h |  |  |  |
| 2 | 1.1 | Obra Vivienda Esteban y Matias Contratada |  | 378d | 2026-04-06 | 2027-10-06 | 5SS |  |  |  |  |  | -15d | 0d | must start on 2026-04-06 | Mariana V | 3024h |  | Gerencia |  |  |
| 3 | 1.2 | Demora de inicio por aprobación de planos de Blussand T |  | 16d | 2026-04-06 A | 2026-04-27 A |  | 100% |  |  |  |  |  |  |  |  |  |  |  |  |  |
| 4 | 1.3 | Obra Vivienda Esteban y Matias |  | 370d | 2026-04-27 A | 2027-12-06 | 5FF | 1% | 366.3d |  |  |  | 240d |  |  |  |  |  | Seguimiento |  |  |
| 5 | 1.4 | **OBRA VIVIENDA ESTEBAN Y MATIAS** |  | 403.5d? | 2026-04-27 A | 2027-12-06 |  | 10% | 363.48d? | 2026-04-06 | 2027-09-28 | 1620d? | 240d | 0d |  |  | 31608h | 1344.5h |  |  |  |
| 6 | 1.4.1 | **TAREAS PRELIMINARES** |  | 139.5d | 2026-04-27 A | 2026-11-13 |  | 70% | 42.11d | 2026-04-06 | 2026-06-29 | 59d | 504d |  |  |  | 288h | 176h |  |  |  |
| 7 | 1.4.1.1 | ✔Estudio de Suelos | milestone | 0d | 2026-04-27 A | 2026-04-27 A |  | 100% |  | 2026-04-06 | 2026-04-06 | 1d |  |  | start no earlier than 2026-04-27 |  |  |  |  | Externo |  |
| 8 | 1.4.1.2 | ✔Calculo Estructural | milestone | 0d | 2026-04-27 A | 2026-04-27 A |  | 100% |  | 2026-04-06 | 2026-04-06 | 1d |  |  | start no earlier than 2026-04-27 |  |  |  |  | Externo |  |
| 9 | 1.4.1.3 | Cerco Perimetral |  | 3d | 2026-05-18 A | 2026-05-20 A | 13FF+2d | 100% |  | 2026-04-06 | 2026-04-06 | 1d |  |  | start no earlier than 2026-04-27 |  |  |  |  | Albañileria |  |
| 10 | 1.4.1.4 | Replanteo de Obra |  | 3d | 2026-05-19 A | 2026-05-21 A | 13 | 100% |  | 2026-04-16 | 2026-04-20 | 3d |  |  |  |  |  |  |  | Albañileria |  |
| 11 | 1.4.1.5 | Armado de Pilar con Tablero de Obra. |  | 2d | 2026-05-21 A | 2026-05-22 A | 9 | 100% |  | 2026-04-07 | 2026-04-08 | 2d |  |  |  |  |  |  |  | Electricista |  |
| 12 | 1.4.1.6 | Limpieza de terreno |  | 2d | 2026-04-27 A | 2026-04-28 A |  | 100% |  | 2026-04-07 | 2026-04-15 | 7d |  |  | start no earlier than 2026-04-27 | Mariana V | 16h | 16h | Seguimiento | Externo |  |
| 13 | 1.4.1.7 | Movimiento de terreno |  | 10d | 2026-05-05 A | 2026-05-18 A | 14 | 100% |  | 2026-06-25 | 2026-06-29 | 3d |  |  |  | Mariana V | 80h | 80h | Seguimiento | Externo | Subsuelo 1 |
| 14 | 1.4.1.8 | Revisión de mojones y autorización de obra |  | 3d | 2026-04-29 A | 2026-05-04 A | 12 | 100% |  | 2026-04-06 | 2026-04-14 | 7d |  |  |  | Mariana V | 24h | 24h | Seguimiento | Externo | Subsuelo 1 |
| 15 | 1.4.1.9 | Movimiento de Suelo - 2da Etapa |  | 7d | 2026-07-22 A | 2026-07-30 A |  | 100% |  |  |  |  |  |  | start no earlier than 2026-07-22 |  |  |  | Seguimiento | Externo | Subsuelo 2 |
| 16 | 1.4.1.10 | Relleno de terreno |  | 7d | 2026-08-17 A | 2026-08-26 A |  | 100% |  | 2026-04-06 | 2026-04-14 | 7d |  |  | start no earlier than 2026-08-17 | Mariana V | 56h | 56h | Seguimiento | Externo | Subsuelo 1 |
| 17 | 1.4.1.11 | Relleno de contrapiso |  | 2d | 2026-09-15 | 2026-09-17 | 27FS+7d |  |  |  |  |  | 0d |  |  |  |  |  |  |  | Planta Baja |
| 18 | 1.4.1.12 | Relleno de terreno |  | 7d | 2026-10-14 | 2026-10-23 | 78 |  |  | 2026-04-06 | 2026-04-14 | 7d | 519d |  |  | Mariana V | 56h |  | Seguimiento | Externo | Planta Baja |
| 19 | 1.4.1.13 | Relleno de terreno |  | 7d | 2026-11-04 | 2026-11-13 | 79 |  |  | 2026-04-06 | 2026-04-14 | 7d | 504d |  |  | Mariana V | 56h |  | Seguimiento | Externo | Primer Piso |
| 20 | 1.4.2 | **ESTRUCTURA Y ALBAÑILERIA** |  | 280.5d | 2026-04-27 A | 2027-06-10 |  | 19% | 225.87d | 2026-04-06 | 2027-04-13 | 255d | 363d |  |  | Mariana V | 9020h | 1168.5h |  |  |  |
| 21 | 1.4.2.1 | Zapata corrida (120x30) - PSS |  | 14d | 2026-05-22 A | 2026-06-11 A | 10 | 100% |  | 2026-04-21 | 2026-05-19 | 20d |  |  |  | Mariana V | 112h | 112h | Seguimiento | Albañileria | Subsuelo 1 |
| 22 | 1.4.2.2 | Zapata aislada (80x80x40) - PSS |  | 5d | 2026-06-05 A | 2026-06-11 A | 21FF | 100% |  | 2026-05-06 | 2026-05-19 | 10d |  |  |  | Mariana V | 40h | 40h | Seguimiento | Albañileria | Subsuelo 1 |
| 23 | 1.4.2.3 | Demora en turno de hormigón |  | 6d | 2026-06-09 A | 2026-06-16 A |  | 100% |  |  |  |  |  |  | start no earlier than 2026-06-09 |  |  |  |  |  | Subsuelo 1 |
| 24 | 1.4.2.4 | Hormigon 1er etapa bases PSS |  | 1d | 2026-06-17 A | 2026-06-17 A | 23 | 100% |  |  |  |  |  |  |  |  |  |  |  |  | Subsuelo 1 |
| 25 | 1.4.2.5 | Zapata continua (95x30) - PSS |  | 9d | 2026-07-31 A | 2026-08-12 A | 15 | 100% |  | 2026-05-07 | 2026-05-19 | 9d |  |  |  | Mariana V | 72h | 72h | Seguimiento | Albañileria | Subsuelo 1 |
| 26 | 1.4.2.6 | Hormigón 2da etapa bases PSS - 1 semana de demora por materiales |  | 1d | 2026-08-13 A | 2026-08-13 A | 25 | 100% |  |  |  |  |  |  |  |  |  |  |  |  | Subsuelo 1 |
| 27 | 1.4.2.7 | Zapata continua (120x30) - PB |  | 10d | 2026-08-21 A | 2026-09-04 A | 16FS-5% | 100% |  | 2026-06-30 | 2026-07-14 | 10d |  |  |  | Mariana V | 80h | 80h | Seguimiento | Albañileria | Planta Baja |
| 28 | 1.4.2.8 | Zapata puntual (120x120x30) - PB |  | 7d | 2026-08-26 A | 2026-09-04 A | 27FF | 100% |  | 2026-06-30 | 2026-07-14 | 10d |  |  |  | Mariana V | 56h | 56h | Seguimiento | Albañileria | Planta Baja |
| 29 | 1.4.2.9 | Zapata continua (120x30) - PA |  | 10d | 2026-09-16 | 2026-09-30 | 80FF |  |  | 2026-06-30 | 2026-07-14 | 10d | 504d | 0d |  | Mariana V | 80h |  | Seguimiento | Albañileria | Primer Piso |
| 30 | 1.4.2.10 | Encadenado/VF (PSS) - 0,20 * 0,30 |  | 7d | 2026-06-03 A | 2026-06-11 A | 21FF | 100% |  | 2026-05-11 | 2026-05-19 | 7d |  |  |  | Mariana V | 56h | 56h | Seguimiento | Albañileria | Subsuelo 1 |
| 31 | 1.4.2.11 | Encadenado/VF (PB) - 0,20 * 0,30 |  | 5d | 2026-06-05 A | 2026-06-11 A | 28FF | 100% |  | 2026-07-03 | 2026-07-14 | 7d |  |  |  | Mariana V | 40h | 40h | Seguimiento | Albañileria | Planta Baja |
| 32 | 1.4.2.12 | Encadenado/VF (PA) - 0,20 * 0,30 |  | 3d | 2026-09-25 | 2026-09-30 | 29FF |  |  | 2026-07-03 | 2026-07-14 | 7d | 535d |  |  | Mariana V | 24h |  | Seguimiento | Albañileria | Primer Piso |
| 33 | 1.4.2.13 | C1 - 0,20x0,20 |  | 15d | 2026-07-03 A | 2026-07-24 A | 40FF | 100% |  | 2026-05-13 | 2026-06-03 | 15d |  |  |  | Mariana V | 120h | 120h | Seguimiento | Albañileria | Subsuelo 1 |
| 34 | 1.4.2.14 | C2 - 0,20x0,25 |  | 5d | 2026-07-20 A | 2026-07-24 A | 33FF | 100% |  | 2026-05-28 | 2026-06-03 | 5d |  |  |  | Mariana V | 40h | 40h | Seguimiento | Albañileria | Subsuelo 1 |
| 35 | 1.4.2.15 | C1 - 0,20x0,20 |  | 20d | 2026-09-09 | 2026-10-07 | 68, 66 |  |  | 2026-07-29 | 2026-08-26 | 20d | 530d | 0d |  | Mariana V | 160h |  | Seguimiento | Albañileria | Planta Baja |
| 36 | 1.4.2.16 | C2 - 0,20x0,25 |  | 7d | 2026-09-28 | 2026-10-07 | 35FF |  |  | 2026-08-17 | 2026-08-26 | 7d | 530d |  |  | Mariana V | 56h |  | Seguimiento | Albañileria | Planta Baja |
| 37 | 1.4.2.17 | C1 - 0,20x0,20 |  | 7d | 2026-12-09 | 2026-12-18 | 61 |  |  | 2026-10-19 | 2026-10-27 | 7d | 481d |  |  | Mariana V | 56h |  | Seguimiento | Albañileria | Primer Piso |
| 38 | 1.4.2.18 | C2 - 0,20x0,25 |  | 7d | 2026-12-09 | 2026-12-18 | 61 |  |  | 2026-10-19 | 2026-10-27 | 7d | 481d |  |  | Mariana V | 56h |  | Seguimiento | Albañileria | Primer Piso |
| 39 | 1.4.2.19 | Demora de entrega de hierros x parte cliente en pagos |  | 8d | 2026-06-12 A | 2026-06-23 A |  | 100% |  |  |  |  |  |  |  |  |  |  |  |  | Subsuelo 1 |
| 40 | 1.4.2.20 | T1 - Tabiques de Hormigon - Muro contención - esp: 20cm |  | 30d | 2026-05-28 A | 2026-07-08 A | 42FF | 100% |  | 2026-05-20 | 2026-06-03 | 10d |  |  |  | Mariana V | 240h | 240h | Seguimiento | Albañileria | Subsuelo 1 |
| 41 | 1.4.2.21 | Demora en tabiques de SS por fragmentación de niveles para bases |  | 42d | 2026-07-27 A | 2026-09-23 A | 40 | 100% |  |  |  |  |  |  |  |  |  |  |  |  | Subsuelo 1 |
| 42 | 1.4.2.22 | Hormigón de 1er etapa de tabiques SS |  | 1d | 2026-07-08 A | 2026-07-08 A | 39FS+10d | 100% |  |  |  |  |  |  |  |  |  |  |  |  | Subsuelo 1 |
| 43 | 1.4.2.23 | Hormigón de 2da etapa de tabique SS |  | 1d | 2026-08-13 A | 2026-08-13 A | 26FF | 100% |  |  |  |  |  |  |  |  |  |  |  |  | Subsuelo 1 |
| 44 | 1.4.2.24 | T1 - Tabiques de Hormigon - Muro contención - esp: 20cm |  | 20d | 2026-09-04 | 2026-10-02 | 27 |  |  | 2026-07-15 | 2026-07-28 | 10d | 519d | 0d |  | Mariana V | 160h |  | Seguimiento | Albañileria | Planta Baja |
| 45 | 1.4.2.25 | T1 - Tabiques de Hormigon - Muro contención - esp: 20cm |  | 20d | 2026-09-30 | 2026-10-29 | 29 |  |  | 2026-07-15 | 2026-07-28 | 10d | 504d | 0d |  | Mariana V | 160h |  | Seguimiento | Albañileria | Primer Piso |
| 46 | 1.4.2.26 | Tabiques de Hormigon Visto - esp: 20cm |  | 20d | 2026-10-08 | 2026-11-06 | 70 |  |  | 2026-08-20 | 2026-09-23 | 25d | 509d |  |  | Mariana V | 160h |  | Seguimiento | Albañileria | Planta Baja |
| 47 | 1.4.2.27 | Tabiques de Hormigon Visto (revestimiento) - esp: 10cm |  | 15d | 2026-10-08 | 2026-10-30 | 70 |  |  | 2026-08-20 | 2026-09-23 | 25d | 514d |  |  | Mariana V | 120h |  | Seguimiento | Albañileria | Planta Baja |
| 48 | 1.4.2.28 | Tabiques de Hormigon Visto - esp: 30cm |  | 20d | 2026-12-23 | 2027-01-22 | 61FS+10d |  |  | 2026-11-02 | 2026-12-07 | 25d | 458d |  |  | Mariana V | 160h |  | Seguimiento | Albañileria | Primer Piso |
| 49 | 1.4.2.29 | Tabiques de Hormigon Visto - esp: 20cm |  | 20d | 2026-12-23 | 2027-01-22 | 61FS+10d |  |  | 2026-11-02 | 2026-12-07 | 25d | 458d |  |  | Mariana V | 160h |  | Seguimiento | Albañileria | Primer Piso |
| 50 | 1.4.2.30 | Tabiques de Hormigon Visto (revestimiento) - esp: 10cm |  | 15d | 2026-12-31 | 2027-01-22 | 72 |  |  | 2026-11-09 | 2026-12-07 | 20d | 458d |  |  | Mariana V | 120h |  | Seguimiento | Albañileria | Primer Piso |
| 51 | 1.4.2.31 | V1 - 1,00 x 0,40 |  | 10d | 2026-11-06 | 2026-11-23 | 94 |  |  | 2026-09-17 | 2026-09-30 | 10d | 499d | 0d |  | Mariana V | 80h |  | Seguimiento | Albañileria | Planta Baja |
| 52 | 1.4.2.32 | V2 - 0,60 x 0,40 |  | 10d | 2026-11-06 | 2026-11-23 | 51FF |  |  | 2026-09-17 | 2026-09-30 | 10d | 499d |  |  | Mariana V | 80h |  | Seguimiento | Albañileria | Planta Baja |
| 53 | 1.4.2.33 | V3 - 0,40 x 0,40 |  | 10d | 2026-11-06 | 2026-11-23 | 51FF |  |  | 2026-09-17 | 2026-09-30 | 10d | 499d |  |  | Mariana V | 80h |  | Seguimiento | Albañileria | Planta Baja |
| 54 | 1.4.2.34 | V4 - 0,20 x 0,40 |  | 10d | 2026-11-06 | 2026-11-23 | 51FF |  |  | 2026-09-17 | 2026-09-30 | 10d | 499d |  |  | Mariana V | 80h |  | Seguimiento | Albañileria | Planta Baja |
| 55 | 1.4.2.35 | V1 - 1,00 x 0,40 |  | 10d | 2027-01-22 | 2027-02-05 | 98 |  |  | 2026-12-01 | 2026-12-15 | 10d | 448d |  |  | Mariana V | 80h |  | Seguimiento | Albañileria | Primer Piso |
| 56 | 1.4.2.36 | V2 - 0,60 x 0,40 |  | 10d | 2027-01-22 | 2027-02-05 | 98 |  |  | 2026-12-01 | 2026-12-15 | 10d | 448d |  |  | Mariana V | 80h |  | Seguimiento | Albañileria | Primer Piso |
| 57 | 1.4.2.37 | V3 - 0,40 x 0,40 |  | 10d | 2027-01-22 | 2027-02-05 | 98 |  |  | 2026-12-01 | 2026-12-15 | 10d | 448d |  |  | Mariana V | 80h |  | Seguimiento | Albañileria | Primer Piso |
| 58 | 1.4.2.38 | V4 - 0,20 x 0,50 |  | 10d | 2027-01-22 | 2027-02-05 | 98 |  |  | 2026-12-01 | 2026-12-15 | 10d | 448d |  |  | Mariana V | 80h |  | Seguimiento | Albañileria | Primer Piso |
| 59 | 1.4.2.39 | Viga losa subsuelo |  | 5d | 2026-08-28 A | 2026-09-30 | 64FF | 40% | 3d |  |  |  | 535d |  |  | Mariana V | 40h | 16h | Seguimiento | Albañileria | Subsuelo 1 |
| 60 | 1.4.2.40 | Losa Maciza - 12cm - Planta Baja |  | 21d | 2026-11-06 | 2026-12-09 | 94 |  |  | 2026-09-17 | 2026-10-16 | 21d | 452d | 0d |  | Mariana V | 168h |  | Seguimiento | Albañileria | Planta Baja |
| 61 | 1.4.2.41 | Losa de viguetas - 17cm - Planta Baja |  | 21d | 2026-11-06 | 2026-12-09 | 94 |  |  | 2026-09-17 | 2026-10-16 | 21d | 0d |  |  | Mariana V | 168h |  | Seguimiento | Albañileria | Planta Baja |
| 62 | 1.4.2.42 | Losa Maciza - 12cm - Planta Alta |  | 21d | 2027-01-22 | 2027-02-23 | 98 |  |  | 2026-12-01 | 2026-12-31 | 21d | 403d | 0d |  | Mariana V | 168h |  | Seguimiento | Albañileria | Primer Piso |
| 63 | 1.4.2.43 | Losa de viguetas - 17cm - Planta Alta |  | 21d | 2027-01-22 | 2027-02-23 | 98 |  |  | 2026-12-01 | 2026-12-31 | 21d | 0d |  |  | Mariana V | 168h |  | Seguimiento | Albañileria | Primer Piso |
| 64 | 1.4.2.44 | Losa de subsuelo |  | 5d | 2026-09-23 | 2026-09-30 | 80FF |  |  |  |  |  | 525d | 0d |  | Mariana V | 40h |  | Seguimiento | Albañileria | Subsuelo 1 |
| 65 | 1.4.2.45 | Mamposteria Ladrillo Hueco Portante 12x18x33 (Nivelacion) |  | 3d | 2026-09-04 | 2026-09-09 | 27 |  |  | 2026-07-15 | 2026-07-21 | 5d | 525d | 0d |  | Mariana V | 24h |  | Seguimiento | Albañileria | Planta Baja |
| 66 | 1.4.2.46 | Mamposteria Ladrillo Hueco Portante 18x18x33 (Nivelacion) |  | 1d | 2026-08-27 | 2026-08-27 | 16 |  |  | 2026-07-15 | 2026-07-28 | 10d | 538.5d | 0d |  | Mariana V | 8h |  | Seguimiento | Albañileria | Subsuelo 1 |
| 67 | 1.4.2.47 | No se realiza mamposteria por falta de material, se encofra columnas y se avanza con losa |  | 7d | 2026-08-28 | 2026-09-07 | 66 |  |  |  |  |  | 551.5d |  |  |  |  |  |  |  | Subsuelo 1 |
| 68 | 1.4.2.48 | Mamposteria Ladrillo Hueco Portante 18x18x33 (Nivelacion) |  | 3d | 2026-09-04 | 2026-09-09 | 27 |  |  | 2026-07-15 | 2026-07-28 | 10d | 530d | 0d |  | Mariana V | 24h |  | Seguimiento | Albañileria | Planta Baja |
| 69 | 1.4.2.49 | Mamposteria Ladrillo Hueco Portante 18x18x33 SS |  | 5d | 2026-09-16 | 2026-09-23 | 64SF |  |  | 2026-08-05 | 2026-08-26 | 15d | 535d | 0d |  | Mariana V | 40h |  | Seguimiento | Albañileria | Subsuelo 1 |
| 70 | 1.4.2.50 | Mamposteria Ladrillo Hueco Portante 12x18x33 PB |  | 10d | 2026-09-24 | 2026-10-08 | 75 |  |  | 2026-08-05 | 2026-08-19 | 10d | 509d | 0d |  | Mariana V | 80h |  | Seguimiento | Albañileria | Planta Baja |

| ID | WBS | Task | Duration | Start | Finish | Predecessors | Complete | Baseline start | Baseline finish | Baseline duration | Total slack | Free slack | Constraint | Resources | Work | Actual work | Texto1 | Texto2 | Texto3 |
| --- | --- | --- | --- | --- | --- | --- | --- | --- | --- | --- | --- | --- | --- | --- | --- | --- | --- | --- | --- |
| 71 | 1.4.2.51 | Mamposteria Ladrillo Hueco Portante 18x18x33 PB | 15d | 2026-09-24 | 2026-10-16 | 75 |  | 2026-08-05 | 2026-08-26 | 15d | 0d |  |  | Mariana V | 120h |  | Albañileria | Planta Baja | Seguimiento |
| 72 | 1.4.2.52 | Mamposteria Ladrillo Hueco Portante 12x18x33 PA | 15d | 2026-12-09 | 2026-12-31 | 61 |  | 2026-10-19 | 2026-11-06 | 15d | 458d | 0d |  | Mariana V | 120h |  | Albañileria | Primer Piso | Seguimiento |
| 73 | 1.4.2.53 | Mamposteria Ladrillo Hueco Portante 18x18x33 PA | 15d | 2026-12-09 | 2026-12-31 | 61 |  | 2026-10-19 | 2026-11-06 | 15d | 0d |  |  | Mariana V | 120h |  | Albañileria | Primer Piso | Seguimiento |
| 74 | 1.4.2.54 | Capa Aisladora Horizontal | 5d | 2026-08-28 | 2026-09-03 | 66 |  | 2026-07-22 | 2026-07-28 | 5d | 553.5d |  |  | Mariana V | 40h |  | Albañileria | Subsuelo 1 | Seguimiento |
| 75 | 1.4.2.55 | Capa Aisladora Horizontal | 5d | 2026-09-17 | 2026-09-24 | 17 |  | 2026-07-29 | 2026-08-04 | 5d | 0d |  |  | Mariana V | 40h |  | Albañileria | Planta Baja | Seguimiento |
| 76 | 1.4.2.56 | Capa Aisladora Vertical c/ ladrillo de rafaga - cara exterior - perimetro vivienda - H: 50cm | 10d | 2026-07-10 A | 2026-07-23 A | 42 | 100% | 2026-06-04 | 2026-06-24 | 15d |  |  |  | Mariana V | 80h | 80h | Albañileria | Subsuelo 1 | Seguimiento |
| 77 | 1.4.2.57 | Capa Aisladora Vertical c/ ladrillo de rafaga - cara exterior - perimetro vivienda - H: 50cm | 5d | 2026-09-23 | 2026-09-30 | 69 |  |  |  |  | 535d |  |  |  |  |  |  | Subsuelo 1 |  |
| 78 | 1.4.2.58 | Capa Aisladora Vertical c/ ladrillo de rafaga - cara exterior - perimetro vivienda - H: 50cm | 7d | 2026-10-02 | 2026-10-14 | 44 |  | 2026-04-06 | 2026-04-24 | 15d | 519d | 0d |  | Mariana V | 56h |  | Albañileria | Planta Baja | Seguimiento |
| 79 | 1.4.2.59 | Capa Aisladora Vertical c/ ladrillo de rafaga - cara exterior - perimetro vivienda - H: 50cm | 4d | 2026-10-29 | 2026-11-04 | 45 |  | 2026-04-06 | 2026-04-24 | 15d | 504d | 0d |  | Mariana V | 32h |  | Albañileria | Primer Piso | Seguimiento |
| 80 | 1.4.2.60 | Hormigón p/contrapiso Interior e=10cm (PB) | 7d | 2026-09-21 | 2026-09-30 | 17FS+2d |  | 2026-08-25 | 2026-09-02 | 7d | 504d | 0d |  | Mariana V | 56h |  | Albañileria | Planta Baja | Seguimiento |
| 81 | 1.4.2.61 | Hormigón p/contrapiso Exterior e=10cm (PB) | 5d | 2026-09-30 | 2026-10-07 | 136 |  | 2026-08-20 | 2026-09-02 | 10d | 525d | 0d |  | Mariana V | 40h |  | Albañileria | Planta Baja | Seguimiento |
| 82 | 1.4.2.62 | Hormigón p/contrapiso Exterior (deck y fogon.) e=10cm (PB) | 5d | 2026-10-07 | 2026-10-15 | 81 |  | 2027-04-05 | 2027-04-09 | 5d | 525d |  |  | Mariana V | 40h |  | Albañileria | Planta Baja | Seguimiento |
| 83 | 1.4.2.63 | Hormigón p/contrapiso Exterior (ing. secundario) e=10cm (PB) | 5d | 2026-10-07 | 2026-10-15 | 81 |  | 2027-04-05 | 2027-04-09 | 5d | 525d |  |  | Mariana V | 40h |  | Albañileria | Planta Baja | Seguimiento |
| 84 | 1.4.2.64 | Hormigón p/contrapiso Exterior (ing. vehicular) e=10cm (PA) | 7d | 2027-03-16 | 2027-03-26 | 137 |  | 2027-04-05 | 2027-04-13 | 7d | 403d | 0d |  | Mariana V | 56h |  | Albañileria | Primer Piso | Seguimiento |
| 85 | 1.4.2.65 | Hormigón p/contrapiso Exterior (ing. peatonal) e=10cm (PA) | 5d | 2027-03-26 | 2027-04-05 | 84 |  | 2027-04-05 | 2027-04-09 | 5d | 403d | 0d |  | Mariana V | 40h |  | Albañileria | Primer Piso | Seguimiento |
| 86 | 1.4.2.66 | Hormigón p/contrapiso Exterior (cochera y cortesia) e=10cm (PA) | 7d | 2027-03-16 | 2027-03-26 | 84FF |  | 2027-04-05 | 2027-04-13 | 7d | 415d |  |  | Mariana V | 56h |  | Albañileria | Primer Piso | Seguimiento |
| 87 | 1.4.2.67 | Carpeta de Nivelación Interior esp. 4cm PB. | 7d | 2027-05-20 | 2027-06-01 | 159 |  | 2027-03-23 | 2027-04-01 | 7d | 0d |  |  | Mariana V | 56h |  | Albañileria | Planta Baja | Seguimiento |
| 88 | 1.4.2.68 | Carpeta de Nivelación Exterior esp. 4cm PB. | 7d | 2027-05-20 | 2027-06-01 | 159 |  | 2027-03-23 | 2027-04-01 | 7d | 370d |  |  | Mariana V | 56h |  | Albañileria | Planta Baja | Seguimiento |
| 89 | 1.4.2.69 | Carpeta de Nivelación Interior esp. 4cm PA. | 7d | 2027-06-01 | 2027-06-10 | 160 |  | 2027-04-05 | 2027-04-13 | 7d | 348d | 0d |  | Mariana V | 56h |  | Albañileria | Primer Piso | Seguimiento |
| 90 | 1.4.2.70 | Carpeta de Nivelación Exterior esp. 4cm PA. | 7d | 2027-06-01 | 2027-06-10 | 160 |  | 2027-04-05 | 2027-04-13 | 7d | 353d | 0d |  | Mariana V | 56h |  | Albañileria | Primer Piso | Seguimiento |
| 91 | 1.4.2.71 | Carpeta de Nivelación de Cubierta esp. 4cm PT. | 10d | 2027-03-25 | 2027-04-09 | 92 |  | 2027-02-02 | 2027-02-16 | 10d | 0d |  |  | Mariana V | 80h |  | Albañileria | Cubierta | Seguimiento |
| 92 | 1.4.2.72 | Cubierta común sobre Losa - Hormigon de Pendiente (carga) - 10 cm | 7d | 2027-03-15 | 2027-03-25 | 145 |  | 2027-01-22 | 2027-02-01 | 7d | 0d |  |  | Mariana V | 56h |  | Albañileria | Cubierta | Seguimiento |
| 93 | 1.4.2.73 | Impermeabilización en cubierta* (con parapeto-h:40cm) | 7d | 2027-04-09 | 2027-04-20 | 91 |  | 2027-02-17 | 2027-02-25 | 7d | 0d |  |  | Mariana V | 56h |  | Externo | Cubierta | Seguimiento |
| 94 | 1.4.2.74 | Revoque exterior c/ azotado hidrof. cementicio en mamp. | 15d | 2026-10-16 | 2026-11-06 | 71 |  | 2026-08-27 | 2026-09-16 | 15d | 0d |  |  | Mariana V | 120h |  | Albañileria | Planta Baja | Seguimiento |
| 95 | 1.4.2.75 | Revoque exterior c/ azotado hidrof. cementicio en mamp. | 10d | 2026-12-31 | 2027-01-15 | 73 |  | 2026-11-09 | 2026-11-23 | 10d | 418d | 0d |  | Mariana V | 80h |  | Albañileria | Primer Piso | Seguimiento |
| 96 | 1.4.2.76 | Revoque grueso interior/ exterior Subsuelo | 4d | 2026-09-23 | 2026-09-29 | 69 |  |  |  |  | 536d |  |  | Mariana V | 32h |  | Albañileria | Subsuelo 1 | Seguimiento |
| 97 | 1.4.2.77 | Revoque Grueso Interior esp.1,5cm | 15d | 2026-10-16 | 2026-11-06 | 71 |  | 2026-08-27 | 2026-09-16 | 15d | 509d |  |  | Mariana V | 120h |  | Albañileria | Planta Baja | Seguimiento |
| 98 | 1.4.2.78 | Revoque Grueso Interior esp.1,5cm | 15d | 2026-12-31 | 2027-01-22 | 73 |  | 2026-11-09 | 2026-11-30 | 15d | 0d |  |  | Mariana V | 120h |  | Albañileria | Primer Piso | Seguimiento |
| 99 | 1.4.2.79 | Revoque Fino Exterior | 5d | 2027-04-09 | 2027-04-16 | 91 |  | 2027-02-17 | 2027-02-23 | 5d | 401d |  |  | Mariana V | 40h |  | Albañileria | Planta Baja | Seguimiento |
| 100 | 1.4.2.80 | Revoque Fino Exterior | 5d | 2027-04-09 | 2027-04-16 | 91 |  | 2027-02-17 | 2027-02-23 | 5d | 401d |  |  | Mariana V | 40h |  | Albañileria | Primer Piso | Seguimiento |
| 101 | 1.4.2.81 | Engrosado + Enlucido de Yeso | 10d | 2027-04-27 | 2027-05-11 | 103 |  | 2027-02-26 | 2027-03-11 | 10d | 384d |  |  | Mariana V | 80h |  | Yesero | Planta Baja | Seguimiento |
| 102 | 1.4.2.82 | Engrosado + Enlucido de Yeso | 10d | 2027-04-27 | 2027-05-11 | 106 |  | 2027-02-26 | 2027-03-11 | 10d | 0d |  |  | Mariana V | 80h |  | Yesero | Primer Piso | Seguimiento |
| 103 | 1.4.2.83 | C1 - Yeso proyectado Interior PB h: +2,80 m * | 5d | 2027-04-20 | 2027-04-27 | 93 |  | 2026-04-06 | 2026-04-10 | 5d | 384d | 0d | start no earlier than 2026-04-27 | Mariana V | 40h |  | Yesero | Planta Baja | Seguimiento |
| 104 | 1.4.2.84 | C2 - Yeso proyectado Exterior PB h: +2,80 m * | 5d | 2027-04-20 | 2027-04-27 | 93 |  | 2026-04-06 | 2026-04-10 | 5d | 394d |  | start no earlier than 2026-04-27 | Mariana V | 40h |  | Yesero | Planta Baja | Seguimiento |
| 105 | 1.4.2.85 | C3 - Yeso proyectado Interior PA h: +2,60 m * | 10d | 2027-04-20 | 2027-05-04 | 93 |  | 2026-04-06 | 2026-04-17 | 10d | 389d |  | start no earlier than 2026-04-27 | Mariana V | 80h |  | Yesero | Primer Piso | Seguimiento |
| 106 | 1.4.2.86 | C4 - Yeso proyectado Exterior PA h: +2,60 m * | 5d | 2027-04-20 | 2027-04-27 | 93 |  | 2026-04-06 | 2026-04-10 | 5d | 0d |  | start no earlier than 2026-04-27 | Mariana V | 40h |  | Yesero | Primer Piso | Seguimiento |
| 107 | 1.4.2.87 | C5 - Vidrio Templado PA h: +2,60 m ** | 7d | 2026-04-27 | 2026-05-06 |  |  | 2026-04-06 | 2026-04-14 | 7d | 636.5d |  | start no earlier than 2026-04-27 | Mariana V | 56h |  | Externo | Primer Piso | Seguimiento |
| 108 | 1.4.2.88 | C6 - Revestimiento de madera Exterior PA h: +2,60 m ** | 14d | 2026-04-27 | 2026-05-15 |  |  | 2026-04-06 | 2026-04-23 | 14d | 629.5d |  | start no earlier than 2026-04-27 | Mariana V | 112h |  | Externo | Primer Piso | Seguimiento |
| 109 | 1.4.2.89 | Escalera de Circulación Interior H° PB a PA | 10d | 2026-11-24 | 2026-12-09 | 60FF |  | 2026-10-02 | 2026-10-16 | 10d | 488d |  |  | Mariana V | 80h |  | Albañileria | Planta Baja | Seguimiento |
| 110 | 1.4.2.90 | Escaleras de Circulación Exterior de durmientes PS a PB | 10d | 2026-09-30 | 2026-10-15 | 64 |  | 2026-04-15 | 2026-04-28 | 10d | 525d |  |  | Mariana V | 80h |  | Albañileria | Subsuelo 1 | Seguimiento |
| 111 | 1.4.2.91 | Asador (1,50m de largo) | 5d | 2026-10-08 | 2026-10-16 | 71FF |  | 2026-08-20 | 2026-08-26 | 5d | 524d |  |  | Mariana V | 40h |  | Albañileria | Planta Baja | Seguimiento |
| 112 | 1.4.2.92 | Parapetos + tanque | 7d | 2027-02-23 | 2027-03-04 | 63 |  | 2027-01-04 | 2027-01-12 | 7d | 0d |  |  | Mariana V | 56h |  | Albañileria | Cubierta | Seguimiento |
| 113 | 1.4.2.93 | Canteros con portantes del 18 (h: 2,00 mts aprox)* | 10d | 2027-03-26 | 2027-04-12 | 84 |  | 2026-04-15 | 2026-04-28 | 10d | 405d |  |  | Mariana V | 80h |  | Albañileria | Subsuelo 1 | Seguimiento |
| 114 | 1.4.2.94 | Muro de ingreso del portante del 18 (h: 2,80 mts)* | 7d | 2027-04-05 | 2027-04-14 | 85 |  | 2026-04-15 | 2026-04-23 | 7d | 403d |  |  | Mariana V | 56h |  | Albañileria | Planta Baja | Seguimiento |
| 115 | 1.4.2.95 | Veredas Perimetrales con Cordon - Ancho 40cm* | 7d | 2026-09-28 | 2026-10-07 | 81FF |  | 2026-08-25 | 2026-09-02 | 7d | 530d |  |  | Mariana V | 56h |  | Albañileria | Planta Baja | Seguimiento |

| ID | WBS | Task | Duration | Start | Finish | Predecessors | Baseline start | Baseline finish | Baseline duration | Total slack | Free slack | Constraint | Resources | Work | Texto1 | Texto2 | Texto3 |
| --- | --- | --- | --- | --- | --- | --- | --- | --- | --- | --- | --- | --- | --- | --- | --- | --- | --- |
| 116 | 1.4.3 | **HERRERIA** | 143d | 2026-09-04 | 2027-04-05 |  | 2026-05-20 | 2027-02-09 | 182d | 410d |  |  | Mariana V | 1744h |  |  |  |
| 117 | 1.4.3.1 | C15- IPN 160 (1 columna) 3,00 mts de largo* | 3d | 2026-09-04 | 2026-09-09 | 27 | 2026-05-20 | 2026-05-22 | 3d | 550d |  |  | Mariana V | 24h | Herrería | Planta Baja | Seguimiento |
| 118 | 1.4.3.2 | C08/C13- 2 UPN 140 (2 columnas) 3,00 mts de largo* | 3d | 2026-09-04 | 2026-09-09 | 27 | 2026-05-20 | 2026-05-22 | 3d | 550d |  |  | Mariana V | 24h | Herrería | Planta Baja | Seguimiento |
| 119 | 1.4.3.3 | C07- 2 IPN 120 (1 columna) 3,00 mts de largo* | 3d | 2026-09-04 | 2026-09-09 | 27 | 2026-05-20 | 2026-05-22 | 3d | 550d |  |  | Mariana V | 24h | Herrería | Planta Baja | Seguimiento |
| 120 | 1.4.3.4 | C16/C11- 2 UPN 100 (2 columnas) 3,00 mts de largo* | 3d | 2026-09-04 | 2026-09-09 | 27 | 2026-05-20 | 2026-05-22 | 3d | 550d |  |  | Mariana V | 24h | Herrería | Planta Baja | Seguimiento |
| 121 | 1.4.3.5 | C15- IPN 160 (1 columna) 2,80 mts de largo* | 3d | 2026-12-09 | 2026-12-14 | 61 | 2026-10-19 | 2026-10-21 | 3d | 485d |  |  | Mariana V | 24h | Herrería | Primer Piso | Seguimiento |
| 122 | 1.4.3.6 | C08/C13- 2 UPN 140 (2 columnas) 2,80 mts de largo* | 3d | 2026-12-09 | 2026-12-14 | 61 | 2026-10-19 | 2026-10-21 | 3d | 485d |  |  | Mariana V | 24h | Herrería | Primer Piso | Seguimiento |
| 123 | 1.4.3.7 | C07- 2 IPN 120 (1 columna) 2,80 mts de largo* | 3d | 2026-12-09 | 2026-12-14 | 61 | 2026-10-19 | 2026-10-21 | 3d | 485d |  |  | Mariana V | 24h | Herrería | Primer Piso | Seguimiento |
| 124 | 1.4.3.8 | C16/C10- 2 UPN 100 (2 columnas) 2,80 mts de largo* | 3d | 2026-12-09 | 2026-12-14 | 61 | 2026-10-19 | 2026-10-21 | 3d | 485d |  |  | Mariana V | 24h | Herrería | Primer Piso | Seguimiento |
| 125 | 1.4.3.9 | Viga Met. - IPN 240 (PA) (Estructura de cochera)* | 7d | 2027-02-23 | 2027-03-04 | 63 | 2027-01-04 | 2027-01-12 | 7d | 410d | 0d |  | Mariana V | 56h | Herrería | Primer Piso | Seguimiento |
| 126 | 1.4.3.10 | Viga Met. - IPN 220 (PA) (Estructura de cochera)* | 7d | 2027-02-23 | 2027-03-04 | 63 | 2027-01-04 | 2027-01-12 | 7d | 430d |  |  | Mariana V | 56h | Herrería | Primer Piso | Seguimiento |
| 127 | 1.4.3.11 | Viga Met. - IPN 220 (PA) (Estructura de pergola)* | 7d | 2027-02-23 | 2027-03-04 | 63 | 2027-01-04 | 2027-01-12 | 7d | 430d |  |  | Mariana V | 56h | Herrería | Primer Piso | Seguimiento |
| 128 | 1.4.3.12 | Correa 140x60x20x2 (PA) (Estructura de cochera)* | 7d | 2027-02-23 | 2027-03-04 | 63 | 2027-01-04 | 2027-01-12 | 7d | 430d |  |  | Mariana V | 56h | Herrería | Primer Piso | Seguimiento |
| 129 | 1.4.3.13 | Cubierta Liviana Metálica de Cochera - pend. 2% - escur. a canaleta - chapa acanalada color oscuro * | 10d | 2027-03-04 | 2027-03-18 | 125 | 2027-01-13 | 2027-01-26 | 10d | 410d | 0d |  | Mariana V | 80h | Herrería | Primer Piso | Seguimiento |
| 130 | 1.4.3.14 | Pergola de caida libre (ver detalles o planos en planta)* | 10d | 2027-03-18 | 2027-04-05 | 129 | 2027-01-27 | 2027-02-09 | 10d | 410d |  |  | Mariana V | 80h | Herrería | Primer Piso | Seguimiento |
| 131 | 1.4.3.15 | Asador - conducto de ventilacion 5,00m - 30 diam. | 3d | 2026-11-30 | 2026-12-03 | 60FF-3d | 2026-10-08 | 2026-10-12 | 3d | 491d |  |  | Mariana V | 24h | Herrería | Planta Baja | Seguimiento |
| 132 | 1.4.4 | **INSTALACIONES SANITARIAS** | 310d | 2026-09-09 | 2027-12-06 |  | 2026-04-06 | 2027-10-06 | 378d | 120d |  |  | Mariana V | 4200h |  |  |  |
| 133 | 1.4.4.1 | Desagues pluviales (sin zinguería) con colocacion de cámaras de inspección | 10d | 2026-09-09 | 2026-09-23 | 65 | 2026-07-22 | 2026-08-04 | 10d | 540d |  |  | Mariana V | 80h | Plomeria | Planta Baja | Seguimiento |
| 134 | 1.4.4.2 | Desagues pluviales (sin zinguería) con colocacion de cámaras de inspección | 10d | 2027-01-11 | 2027-01-25 | 60FS+21d | 2026-11-17 | 2026-12-01 | 10d | 457d |  |  | Mariana V | 80h | Plomeria | Primer Piso | Seguimiento |
| 135 | 1.4.4.3 | Desagues pluviales (sin zinguería) con colocacion de cámaras de inspección | 10d | 2027-02-23 | 2027-03-09 | 62 | 2027-01-04 | 2027-01-15 | 10d | 427d |  |  | Mariana V | 80h | Plomeria | Cubierta | Seguimiento |
| 136 | 1.4.4.4 | Instalación de cloacas para 2 baños en PB (uno con ducha), 1 lavadero, pileta de cocina, pileta de lavadero, pileta de asador, lavavajilla, lavarropas. 2 baños en PA (uno con ducha y otro con ducha y bañera)** | 15d | 2026-09-09 | 2026-09-30 | 65 | 2026-07-22 | 2026-08-19 | 20d | 525d | 0d |  | Mariana V | 120h | Plomeria | Planta Baja | Seguimiento |
| 137 | 1.4.4.5 | Instalación de cloacas para 2 baños en PB (uno con ducha), 1 lavadero, pileta de cocina, pileta de lavadero, pileta de asador, lavavajilla, lavarropas. 2 baños en PA (uno con ducha y otro con ducha y bañera)** | 15d | 2027-02-23 | 2027-03-16 | 62 | 2027-01-04 | 2027-01-22 | 15d | 403d | 0d |  | Mariana V | 120h | Plomeria | Primer Piso | Seguimiento |
| 138 | 1.4.4.6 | Colocación de 3 cámara de inspección (según detalle técnico)* | 7d | 2027-03-16 | 2027-03-26 | 137 | 2027-01-25 | 2027-02-02 | 7d | 415d |  |  | Mariana V | 56h | Plomeria | Planta Baja | Seguimiento |
| 139 | 1.4.4.7 | Intalacion de desague de descarga para 2 AA Split en PB y 2 AA Split en PA | 2d | 2026-09-28 | 2026-09-30 | 136FF | 2026-08-17 | 2026-08-19 | 2d | 535d |  |  | Mariana V | 16h | Plomeria | Planta Baja | Seguimiento |
| 140 | 1.4.4.8 | Intalacion de desague de descarga para 2 AA Split en PB y 2 AA Split en PA | 2d | 2027-03-12 | 2027-03-16 | 137FF | 2027-01-21 | 2027-01-22 | 2d | 422d |  |  | Mariana V | 16h | Plomeria | Primer Piso | Seguimiento |
| 141 | 1.4.4.9 | Instalación de agua para 2 baños en PB (uno con ducha), lavadero con bacha y lavarropa, cocina con bacha, lavavajillas y heladera, asador con bacha. 2 baños en PA (uno con ducha y otro con ducha y bañera). Termotanque y caldera en PB.* | 15d | 2027-01-08 | 2027-01-29 | 60FS+30ed | 2026-11-16 | 2026-12-07 | 15d | 453d |  |  | Mariana V | 120h | Plomeria | Planta Baja | Seguimiento |
| 142 | 1.4.4.10 | Instalación de agua para 2 baños en PB (uno con ducha), lavadero con bacha y lavarropa, cocina con bacha, lavavajillas y heladera, asador con bacha. 2 baños en PA (uno con ducha y otro con ducha y bañera). Termotanque y caldera en PB.* | 15d | 2027-03-25 | 2027-04-16 | 63FS+30ed | 2027-02-01 | 2027-02-22 | 15d | 370d | 0d |  | Mariana V | 120h | Plomeria | Primer Piso | Seguimiento |
| 143 | 1.4.4.11 | Alimentación de agua para válvulas de inodoros desde tanques | 10d | 2027-03-04 | 2027-03-18 | 112 | 2027-01-13 | 2027-01-26 | 10d | 420d |  |  | Mariana V | 80h | Plomeria | Planta Baja | Seguimiento |
| 144 | 1.4.4.12 | Alimentación de agua para válvulas de inodoros desde tanques | 10d | 2027-03-04 | 2027-03-18 | 112 | 2027-01-13 | 2027-01-26 | 10d | 420d |  |  | Mariana V | 80h | Plomeria | Primer Piso | Seguimiento |
| 145 | 1.4.4.13 | Alimentación de agua a tanques y 2 canillas en patio | 7d | 2027-03-04 | 2027-03-15 | 112 | 2027-01-13 | 2027-01-21 | 7d | 0d |  |  | Mariana V | 56h | Plomeria | Planta Baja | Seguimiento |
| 146 | 1.4.4.14 | Instalación de bomba hidroneumática bajo tanque | 2d | 2027-11-29 | 2027-12-01 | 153 | 2026-04-06 | 2026-04-07 | 2d | 243d |  | start no earlier than 2026-04-27 | Mariana V | 16h | Plomeria | Cubierta | Seguimiento |
| 147 | 1.4.4.15 | Instalación de gas para anafe, horno cocina, horno asador, termotanque y caldera (todo en PB)* | 25d | 2027-04-16 | 2027-05-21 | 142 | 2027-02-23 | 2027-03-30 | 25d | 370d | 0d |  | Mariana V | 200h | Plomeria | Planta Baja | Seguimiento |
| 148 | 1.4.4.16 | Ventilaciones para gas. Conductos y rejillas. | 3d | 2027-05-21 | 2027-05-27 | 147 | 2027-03-31 | 2027-04-05 | 3d | 370d | 0d |  | Mariana V | 24h | Plomeria | Planta Baja | Seguimiento |
| 149 | 1.4.4.17 | Factibilidad de gas y plano aprobación de cañerías. | 3d | 2027-05-27 | 2027-06-01 | 148 | 2027-04-06 | 2027-04-08 | 3d | 370d |  |  | Mariana V | 24h | Plomeria | Planta Baja | Seguimiento |
| 150 | 1.4.4.18 | Segunda inspección parcial de cañerías y ventilaciones. | 3d | 2027-10-07 | 2027-10-12 | 238 | 2027-08-11 | 2027-08-13 | 3d | 273d | 0d |  | Mariana V | 24h | Plomeria | Planta Baja | Seguimiento |
| 151 | 1.4.4.19 | Solicitud de servicio domiciliario (no incluye aranceles Ecogas). | 3d | 2027-10-12 | 2027-10-18 | 150 | 2027-08-16 | 2027-08-19 | 3d | 273d | 0d |  | Mariana V | 24h | Plomeria | Planta Baja | Seguimiento |
| 152 | 1.4.4.20 | Final de gas con artefactos colocados. | 1d | 2027-10-18 | 2027-10-19 | 151 | 2027-08-20 | 2027-08-20 | 1d | 273d |  |  | Mariana V | 8h | Plomeria | Planta Baja | Seguimiento |
| 153 | 1.4.4.21 | Colocación de anafe y artefactos de gas | 5d | 2027-11-22 | 2027-11-29 | 239 | 2027-09-23 | 2027-09-29 | 5d | 243d | 0d |  | Mariana V | 40h | Plomeria | Planta Baja | Seguimiento |
| 154 | 1.4.4.22 | Colocación de artefactos y grifería | 10d | 2027-11-22 | 2027-12-06 | 239 | 2027-09-23 | 2027-10-06 | 10d | 240d |  |  | Mariana V | 80h | Plomeria | Planta Baja | Seguimiento |
| 155 | 1.4.4.23 | 2 equipos de AA Split en PB | 3d | 2027-11-22 | 2027-11-25 | 239 | 2027-09-23 | 2027-09-27 | 3d | 247d |  |  | Mariana V | 24h | Instalador A°A° | Planta Baja | Seguimiento |
| 156 | 1.4.4.24 | 2 equipos de AA Split en PA | 3d | 2027-11-22 | 2027-11-25 | 239 | 2027-09-23 | 2027-09-27 | 3d | 247d |  |  | Mariana V | 24h | Instalador A°A° | Primer Piso | Seguimiento |
| 157 | 1.4.4.25 | Kit Instalacion AA (PREINSTALACIÓN) | 5d | 2027-03-10 | 2027-03-17 | 92FF-5d | 2027-01-19 | 2027-01-25 | 5d | 421d |  |  | Mariana V | 40h | Plomeria |  | Seguimiento |
| 158 | 1.4.4.26 | Colector | 7d | 2027-05-11 | 2027-05-20 | 102 | 2027-03-12 | 2027-03-22 | 7d | 377d |  |  | Mariana V | 56h | Externo |  | Seguimiento |
| 159 | 1.4.4.27 | Piso Radiante Planta Baja | 7d | 2027-05-11 | 2027-05-20 | 102 | 2027-03-12 | 2027-03-22 | 7d | 0d |  |  | Mariana V | 56h | Externo | Planta Baja | Seguimiento |
| 160 | 1.4.4.28 | Piso Radiante Planta Alta | 7d | 2027-05-20 | 2027-06-01 | 159 | 2027-03-23 | 2027-04-01 | 7d | 348d | 0d |  | Mariana V | 56h | Externo | Primer Piso | Seguimiento |

Notes:
- 157: agregar a computo

| ID | WBS | Task | Duration | Start | Finish | Predecessors | Baseline start | Baseline finish | Baseline duration | Total slack | Resources | Work | Texto1 | Texto2 | Texto3 |
| --- | --- | --- | --- | --- | --- | --- | --- | --- | --- | --- | --- | --- | --- | --- | --- |
| 161 | 1.4.5 | **INSTALACIONES ELECTRICAS** | 179d | 2026-11-30 | 2027-08-19 |  | 2026-10-08 | 2027-06-28 | 179d | 315d | Mariana V | 3376h |  |  |  |
| 162 | 1.4.5.1 | Bocas p/iluminacion | 3d | 2026-11-30 | 2026-12-03 | 60FF-3d | 2026-10-08 | 2026-10-12 | 3d | 491d | Mariana V | 24h | Electricista | Planta Baja | Seguimiento |
| 163 | 1.4.5.2 | Bocas p/Tomas corrientes 10A | 10d | 2027-01-08 | 2027-01-22 | 60FS+30ed | 2026-11-16 | 2026-11-30 | 10d | 458d | Mariana V | 80h | Electricista | Planta Baja | Seguimiento |
| 164 | 1.4.5.3 | Luz Ext. En Piso | 10d | 2027-01-08 | 2027-01-22 | 60FS+30ed | 2026-11-16 | 2026-11-30 | 10d | 458d | Mariana V | 80h | Electricista | Planta Baja | Seguimiento |
| 165 | 1.4.5.4 | Bocas para Teclas | 10d | 2027-01-08 | 2027-01-22 | 60FS+30ed | 2026-11-16 | 2026-11-30 | 10d | 458d | Mariana V | 80h | Electricista | Planta Baja | Seguimiento |
| 166 | 1.4.5.5 | Bocas p/internet | 10d | 2027-01-08 | 2027-01-22 | 60FS+30ed | 2026-11-16 | 2026-11-30 | 10d | 458d | Mariana V | 80h | Electricista | Planta Baja | Seguimiento |
| 167 | 1.4.5.6 | Tablero P.B (por T.M y disyuntores) | 10d | 2027-01-08 | 2027-01-22 | 60FS+30ed | 2026-11-16 | 2026-11-30 | 10d | 458d | Mariana V | 80h | Electricista | Planta Baja | Seguimiento |
| 168 | 1.4.5.7 | Alimentacion para Uso Especial (TUE) | 10d | 2027-01-08 | 2027-01-22 | 60FS+30ed | 2026-11-16 | 2026-11-30 | 10d | 458d | Mariana V | 80h | Electricista | Planta Baja | Seguimiento |
| 169 | 1.4.5.8 | Instalación de Jabalina | 10d | 2027-01-08 | 2027-01-22 | 60FS+30ed | 2026-11-16 | 2026-11-30 | 10d | 458d | Mariana V | 80h | Electricista | Planta Baja | Seguimiento |
| 170 | 1.4.5.9 | Instalación de Termostatos | 10d | 2027-01-08 | 2027-01-22 | 60FS+30ed | 2026-11-16 | 2026-11-30 | 10d | 458d | Mariana V | 80h | Electricista | Planta Baja | Seguimiento |
| 171 | 1.4.5.10 | Toma individul A.A | 10d | 2027-01-08 | 2027-01-22 | 60FS+30ed | 2026-11-16 | 2026-11-30 | 10d | 458d | Mariana V | 80h | Electricista | Planta Baja | Seguimiento |
| 172 | 1.4.5.11 | Boca p/alarma | 10d | 2027-01-08 | 2027-01-22 | 60FS+30ed | 2026-11-16 | 2026-11-30 | 10d | 458d | Mariana V | 80h | Electricista | Planta Baja | Seguimiento |
| 173 | 1.4.5.12 | Conexión de acometida a Tablero | 10d | 2027-01-08 | 2027-01-22 | 60FS+30ed | 2026-11-16 | 2026-11-30 | 10d | 458d | Mariana V | 80h | Electricista | Planta Baja | Seguimiento |
| 174 | 1.4.5.13 | Bocas p/iluminacion | 10d | 2027-02-03 | 2027-02-18 | 62FF-3d | 2026-12-14 | 2026-12-28 | 10d | 440d | Mariana V | 80h | Electricista | Primer Piso | Seguimiento |
| 175 | 1.4.5.14 | Bocas p/Tomas corrientes 10A | 10d | 2027-03-25 | 2027-04-09 | 62FS+30ed | 2027-02-01 | 2027-02-15 | 10d | 406d | Mariana V | 80h | Electricista | Primer Piso | Seguimiento |
| 176 | 1.4.5.15 | Luz Ext. En Piso | 10d | 2027-03-25 | 2027-04-09 | 62FS+30ed | 2027-02-01 | 2027-02-15 | 10d | 406d | Mariana V | 80h | Electricista | Primer Piso | Seguimiento |
| 177 | 1.4.5.16 | Bocas para Teclas | 10d | 2027-03-25 | 2027-04-09 | 62FS+30ed | 2027-02-01 | 2027-02-15 | 10d | 406d | Mariana V | 80h | Electricista | Primer Piso | Seguimiento |
| 178 | 1.4.5.17 | Bocas p/S.D internet | 10d | 2027-03-25 | 2027-04-09 | 62FS+30ed | 2027-02-01 | 2027-02-15 | 10d | 406d | Mariana V | 80h | Electricista | Primer Piso | Seguimiento |
| 179 | 1.4.5.18 | Tablero P.A (por T.M y disyuntores) | 10d | 2027-03-25 | 2027-04-09 | 62FS+30ed | 2027-02-01 | 2027-02-15 | 10d | 406d | Mariana V | 80h | Electricista | Primer Piso | Seguimiento |
| 180 | 1.4.5.19 | Alimentacion para Uso Especial (TUE) | 10d | 2027-03-25 | 2027-04-09 | 62FS+30ed | 2027-02-01 | 2027-02-15 | 10d | 406d | Mariana V | 80h | Electricista | Primer Piso | Seguimiento |
| 181 | 1.4.5.20 | Instalación de Termostatos | 10d | 2027-03-25 | 2027-04-09 | 62FS+30ed | 2027-02-01 | 2027-02-15 | 10d | 406d | Mariana V | 80h | Electricista | Primer Piso | Seguimiento |
| 182 | 1.4.5.21 | Toma individual A.A | 10d | 2027-03-25 | 2027-04-09 | 62FS+30ed | 2027-02-01 | 2027-02-15 | 10d | 406d | Mariana V | 80h | Electricista | Primer Piso | Seguimiento |
| 183 | 1.4.5.22 | Boca p/alarma | 10d | 2027-03-25 | 2027-04-09 | 62FS+30ed | 2027-02-01 | 2027-02-15 | 10d | 406d | Mariana V | 80h | Electricista | Primer Piso | Seguimiento |
| 184 | 1.4.5.23 | Cableado gral y armado | 20d | 2027-07-21 | 2027-08-19 | 233 | 2027-06-01 | 2027-06-28 | 20d | 315d | Mariana V | 160h | Electricista |  | Seguimiento |
| 185 | 1.4.5.24 | Pases de electricidad losa pb | 5d | 2026-12-09 | 2026-12-16 | 60 | 2026-10-19 | 2026-10-23 | 5d | 483d | Mariana V | 40h | Electricista | Planta Baja | Seguimiento |
| 186 | 1.4.5.25 | Pases de electricidad losa pa | 5d | 2027-02-23 | 2027-03-02 | 62 | 2027-01-04 | 2027-01-08 | 5d | 432d | Mariana V | 40h | Electricista | Primer Piso | Seguimiento |

| ID | WBS | Task | Duration | Start | Finish | Predecessors | Baseline start | Baseline finish | Baseline duration | Total slack | Free slack | Resources | Work | Texto3 | Texto1 | Texto2 |
| --- | --- | --- | --- | --- | --- | --- | --- | --- | --- | --- | --- | --- | --- | --- | --- | --- |
| 187 | 1.4.6 | **PISOS Y REVESTIMIENTOS** | 130d | 2027-01-15 | 2027-07-23 |  | 2026-04-06 | 2027-06-02 | 290d | 91d |  | Mariana V | 3752h |  |  |  |
| 188 | 1.4.6.1 | **Pisos Interiores** | 17d | 2027-06-01 | 2027-06-24 |  | 2026-04-06 | 2026-04-06 | 1d | 0d |  | Mariana V | 424h | Seguimiento |  |  |
| 189 | 1.4.6.1.1 | S1 - Porcelanato Simil Hormigón (En Interior) | 10d | 2027-06-01 | 2027-06-15 | 87 | 2027-04-05 | 2027-04-16 | 10d | 0d |  | Mariana V | 80h | Seguimiento | Ceramista | Planta Baja |
| 190 | 1.4.6.1.2 | S3 - Porcelanato 60x120 (En Interior) | 3d | 2027-06-01 | 2027-06-04 | 87 | 2027-04-05 | 2027-04-07 | 3d | 367d |  | Mariana V | 24h | Seguimiento | Ceramista | Planta Baja |
| 191 | 1.4.6.1.3 | S3 - Porcelanato 60x120 (En Interior) | 3d | 2027-06-10 | 2027-06-15 | 89 | 2027-04-14 | 2027-04-16 | 3d | 360d |  | Mariana V | 24h | Seguimiento | Ceramista | Primer Piso |
| 192 | 1.4.6.1.4 | S11 - Porcelanato Simil Madera 20x120 (En Interior) | 10d | 2027-06-10 | 2027-06-24 | 89 | 2027-04-14 | 2027-04-27 | 10d | 353d |  | Mariana V | 80h | Seguimiento | Ceramista | Primer Piso |
| 193 | 1.4.6.1.5 | S12 - Cemento Alisado (En Interior)* | 7d | 2027-06-10 | 2027-06-21 | 89 | 2027-04-14 | 2027-04-22 | 7d | 356d |  | Mariana V | 56h | Seguimiento | Ceramista | Primer Piso |
| 194 | 1.4.6.1.6 | S13 - Revestimiento de madera (En Interior)* | 3d | 2027-06-10 | 2027-06-15 | 89 | 2027-04-14 | 2027-04-16 | 3d | 348d | 0d | Mariana V | 24h | Seguimiento | Ceramista | Primer Piso |
| 195 | 1.4.6.2 | **Pisos Exteriores** | 10d | 2027-06-10 | 2027-06-24 |  | 2026-04-06 | 2026-04-06 | 1d | 353d |  | Mariana V | 520h | Seguimiento |  |  |
| 196 | 1.4.6.2.1 | S2 - Porcelanato Simil Hormigon (En Exterior) | 10d | 2027-06-10 | 2027-06-24 | 89 | 2027-04-14 | 2027-04-27 | 10d | 353d |  | Mariana V | 80h | Seguimiento | Ceramista | Planta Baja |
| 197 | 1.4.6.2.2 | S4 - Durmientes de madera (En Exterior) | 5d | 2027-06-10 | 2027-06-17 | 89 | 2027-04-14 | 2027-04-20 | 5d | 358d |  | Mariana V | 40h | Seguimiento | Ceramista | Planta Baja |
| 198 | 1.4.6.2.3 | S6 - Deck (En Exterior) | 5d | 2027-06-10 | 2027-06-17 | 89 | 2027-04-14 | 2027-04-20 | 5d | 358d |  | Mariana V | 40h | Seguimiento | Externo | Planta Baja |
| 199 | 1.4.6.2.4 | S10 - Piedra partida (En Exterior) * | 5d | 2027-06-10 | 2027-06-17 | 89 | 2027-04-14 | 2027-04-20 | 5d | 358d |  | Mariana V | 40h | Seguimiento | Ceramista | Planta Baja |
| 200 | 1.4.6.2.5 | S5 - Laja irregular de piedra tipo porfido (En Exterior) | 10d | 2027-06-10 | 2027-06-24 | 90 | 2027-04-14 | 2027-04-27 | 10d | 353d |  | Mariana V | 80h | Seguimiento | Ceramista | Primer Piso |
| 201 | 1.4.6.2.6 | S7 - Adoquin de piedra (En Exterior) | 10d | 2027-06-10 | 2027-06-24 | 90 | 2027-04-14 | 2027-04-27 | 10d | 353d |  | Mariana V | 80h | Seguimiento | Ceramista | Primer Piso |
| 202 | 1.4.6.2.7 | S10 - Piedra partida (En Exterior) | 5d | 2027-06-10 | 2027-06-17 | 90 | 2027-04-14 | 2027-04-20 | 5d | 358d |  | Mariana V | 40h | Seguimiento | Ceramista | Primer Piso |
| 203 | 1.4.6.2.8 | S14 - Cemento alisado (En Exterior) | 5d | 2027-06-10 | 2027-06-17 | 90 | 2027-04-14 | 2027-04-20 | 5d | 358d |  | Mariana V | 40h | Seguimiento | Ceramista | Primer Piso |
| 204 | 1.4.6.3 | **Zócalos** | 10d | 2027-07-08 | 2027-07-23 |  | 2026-04-06 | 2026-04-06 | 1d | 333d |  | Mariana V | 272h | Seguimiento |  | Planta Baja |
| 205 | 1.4.6.3.1 | Z1 - Porcelanato Simil Hormigón. h:10cm | 10d | 2027-07-08 | 2027-07-23 | 233FF+2d | 2027-05-19 | 2027-06-02 | 10d | 333d |  | Mariana V | 80h | Seguimiento | Ceramista |  |
| 206 | 1.4.6.3.2 | Z2 - Porcelanato 60x120. h:10cm | 7d | 2027-07-14 | 2027-07-23 | 233FF+2d | 2027-05-24 | 2027-06-02 | 7d | 333d |  | Mariana V | 56h | Seguimiento | Ceramista |  |
| 207 | 1.4.6.3.3 | Z3 - Porcelanato Simil Madera 20x120. h:10cm | 7d | 2027-07-14 | 2027-07-23 | 233FF+2d | 2027-05-24 | 2027-06-02 | 7d | 333d |  | Mariana V | 56h | Seguimiento | Ceramista |  |
| 208 | 1.4.6.4 | **Banquina** | 2d | 2027-05-28 | 2027-06-01 |  | 2026-04-06 | 2026-04-06 | 1d | 0d |  | Mariana V | 64h | Seguimiento |  |  |
| 209 | 1.4.6.4.1 | Bajo cocina - H: 0,12cm (4,30 m2) | 2d | 2027-05-28 | 2027-06-01 | 189SF | 2027-03-31 | 2027-04-05 | 2d | 0d |  | Mariana V | 16h | Seguimiento | Ceramista | Planta Baja |
| 210 | 1.4.6.4.2 | Bajo lavadero - H: 0,12cm (2,15 m2) | 2d | 2027-05-28 | 2027-06-01 | 189SF | 2027-03-31 | 2027-04-05 | 2d | 0d |  | Mariana V | 16h | Seguimiento | Ceramista | Planta Baja |
| 211 | 1.4.6.4.3 | Bajo parrilla - H: 0,12cm (1,65 m2) | 2d | 2027-05-28 | 2027-06-01 | 189SF | 2027-03-31 | 2027-04-05 | 2d | 0d |  | Mariana V | 16h | Seguimiento | Ceramista | Planta Baja |

| ID | WBS | Task | Type | Duration | Start | Finish | Predecessors | Baseline start | Baseline finish | Baseline duration | Baseline 1 start | Baseline 1 finish | Total slack | Free slack | Constraint | Resources | Work | Texto3 | Texto1 | Texto2 |
| --- | --- | --- | --- | --- | --- | --- | --- | --- | --- | --- | --- | --- | --- | --- | --- | --- | --- | --- | --- | --- |
| 212 | 1.4.6.5 | **Revestimientos Exteriores** |  | 115d | 2027-01-15 | 2027-07-01 |  | 2026-04-06 | 2026-04-06 | 1d |  |  | 348d |  |  | Mariana V | 1432h | Seguimiento |  |  |
| 213 | 1.4.6.5.1 | Porcelanato rectificado (modelo a definir) |  | 10d | 2027-06-15 | 2027-06-29 | 194 | 2027-04-19 | 2027-04-30 | 10d |  |  | 348d | 0d |  | Mariana V | 80h | Seguimiento | Ceramista |  |
| 214 | 1.4.6.5.2 | Ladrillos refractarios (Asador y hormo) |  | 2d | 2027-06-29 | 2027-07-01 | 213 | 2027-05-03 | 2027-05-04 | 2d |  |  | 348d |  |  | Mariana V | 16h | Seguimiento | Ceramista |  |
| 215 | 1.4.6.5.3 | Revestimiento de piedra formato natural* |  | 45d | 2027-01-15 | 2027-03-22 | 95 | 2026-11-24 | 2027-01-28 | 45d |  |  | 418d |  |  | Mariana V | 360h | Seguimiento | Pedrero |  |
| 216 | 1.4.6.5.4 | Revestimiento Tipo WPC Simil Madera* |  | 2d | 2027-06-15 | 2027-06-17 | 194 | 2027-04-19 | 2027-04-20 | 2d |  |  | 358d |  |  | Mariana V | 16h | Seguimiento | Externo |  |
| 217 | 1.4.6.5.5 | Revestimiento Tipo WPC Varillado* |  | 5d | 2027-06-15 | 2027-06-22 | 194 | 2027-04-19 | 2027-04-23 | 5d |  |  | 355d |  |  | Mariana V | 40h | Seguimiento | Externo |  |
| 218 | 1.4.7 | **PINTURA** |  | 58d? | 2027-06-15 | 2027-09-07 |  | 2026-04-06 | 2027-07-16 | 321d? |  |  | 302d |  |  | Mariana V | 1336h |  |  |  |
| 219 | 1.4.7.1 | **Pintura Interior** |  | 32d | 2027-06-29 | 2027-08-13 |  | 2026-04-06 | 2026-04-06 | 1d |  |  | 302d |  |  | Mariana V | 512h | Seguimiento | Pintura |  |
| 220 | 1.4.7.1.1 | Latex Interior PB |  | 7d | 2027-06-29 | 2027-07-08 | 224 | 2027-05-10 | 2027-05-18 | 7d |  |  | 302d | 0d |  | Mariana V | 56h | Seguimiento | Pintura | Planta Baja |
| 221 | 1.4.7.1.2 | Latex Interior PA |  | 10d | 2027-07-16 | 2027-07-30 | 222 | 2027-05-27 | 2027-06-09 | 10d |  |  | 302d | 0d |  | Mariana V | 80h | Seguimiento | Pintura | Primer Piso |
| 222 | 1.4.7.1.3 | Latex Cieloraso Int PB |  | 5d | 2027-07-08 | 2027-07-16 | 220 | 2027-05-19 | 2027-05-26 | 5d |  |  | 302d | 0d |  | Mariana V | 40h | Seguimiento | Pintura | Planta Baja |
| 223 | 1.4.7.1.4 | Latex Cieloraso Int PA |  | 10d | 2027-07-30 | 2027-08-13 | 221 | 2027-06-10 | 2027-06-23 | 10d |  |  | 302d | 0d |  | Mariana V | 80h | Seguimiento | Pintura | Primer Piso |
| 224 | 1.4.7.2 | Enduido interior |  | 10d | 2027-06-15 | 2027-06-29 | 234FF-15d | 2027-04-26 | 2027-05-07 | 10d |  |  | 302d | 0d |  | Mariana V | 80h | Seguimiento | Pintura |  |
| 225 | 1.4.7.3 | **Pintura Exterior** |  | 16d? | 2027-08-13 | 2027-09-07 |  | 2026-04-06 | 2026-04-06 | 1d? |  |  | 302d |  |  | Mariana V | 280h | Seguimiento |  |  |
| 226 | 1.4.7.3.1 | Latex Cieloraso Ext PB |  | 5d | 2027-08-13 | 2027-08-23 | 223 | 2027-06-24 | 2027-06-30 | 5d |  |  | 302d | 0d |  | Mariana V | 40h | Seguimiento | Pintura | Planta Baja |
| 227 | 1.4.7.3.2 | Latex Cieloraso Ext PA |  | 3d | 2027-08-13 | 2027-08-19 | 223 | 2027-06-24 | 2027-06-28 | 3d |  |  | 315d |  |  | Mariana V | 24h | Seguimiento | Pintura | Primer Piso |
| 228 | 1.4.7.3.3 | Revestimiento Plastico |  | 10d | 2027-08-24 | 2027-09-07 | 229 | 2027-07-02 | 2027-07-16 | 10d |  |  | 302d |  |  | Mariana V | 80h | Seguimiento | Pintura |  |
| 229 | 1.4.7.3.4 | Esmalte Sintetico* |  | 1d? | 2027-08-23 | 2027-08-24 | 226 | 2027-07-01 | 2027-07-01 | 1d? |  |  | 302d | 0d |  | Mariana V | 8h | Seguimiento | Pintura |  |
| 230 | 1.4.8 | **CARPINTERIAS** |  | 166d | 2027-03-04 | 2027-11-01 |  | 2027-01-13 | 2027-09-02 | 161d |  |  | 264d |  |  | Mariana V | 3768h |  |  |  |
| 231 | 1.4.8.1 | Colocación de premarcos |  | 5d | 2027-03-04 | 2027-03-11 | 112 | 2027-01-13 | 2027-01-19 | 5d |  |  | 302d | 0d |  | Mariana V | 40h | Seguimiento | Albañileria |  |
| 232 | 1.4.8.2 | Puertas de madera* |  | 120d | 2027-05-11 | 2027-11-01 | 102 | 2027-03-12 | 2027-09-02 | 120d |  |  | 264d |  |  | Mariana V | 960h | Seguimiento | Externo |  |
| 233 | 1.4.8.3 | Puertas de aluminio* |  | 90d | 2027-03-11 | 2027-07-21 | 231 | 2027-01-20 | 2027-05-31 | 90d |  |  | 315d | 0d |  | Mariana V | 720h | Seguimiento | Externo |  |
| 234 | 1.4.8.4 | Aberturas de aluminio* |  | 90d | 2027-03-11 | 2027-07-21 | 231 | 2027-01-20 | 2027-05-31 | 90d |  |  | 302d | 0d |  | Mariana V | 720h | Seguimiento | Externo |  |
| 235 | 1.4.9 | **VARIOS** |  | 393.5d? | 2026-04-27 | 2027-11-22 |  | 2026-04-06 | 2027-09-22 | 368d? |  |  | 0d |  |  | Mariana V | 4124h |  |  |  |
| 236 | 1.4.9.1 | Piscina con desborde infinito* |  | 1d? | 2026-04-27 | 2026-04-27 |  | 2026-04-06 | 2026-04-06 | 1d? |  |  | 392.5d |  | start no earlier than 2026-04-27 | Mariana V | 8h | Seguimiento | Externo |  |
| 237 | 1.4.9.2 | Sistema de bombeo cloacal (en caso de necesitarlo) |  | 1d? | 2026-04-27 | 2026-04-27 |  | 2026-04-06 | 2026-04-06 | 1d? |  |  | 392.5d |  | start no earlier than 2026-04-27 | Mariana V | 8h | Seguimiento | Externo |  |
| 238 | 1.4.9.3 | Muebles |  | 90d | 2027-06-01 | 2027-10-07 | 211, 210, 209 | 2027-04-05 | 2027-08-10 | 90d |  |  | 0d |  |  | Mariana V | 720h | Seguimiento | Externo |  |
| 239 | 1.4.9.4 | Mesadas |  | 30d | 2027-10-07 | 2027-11-22 | 238 | 2027-08-11 | 2027-09-22 | 30d |  |  | 0d |  |  | Mariana V | 240h | Seguimiento | Externo |  |
| 240 | 1.5 | Firma Acta recepcion Provisoria | milestone | 0d | 2026-04-05 | 2026-04-05 |  | 2025-03-14 | 2025-03-14 |  | 2027-02-04 | 2027-02-04 | 658.5d |  |  | Mariana V |  |  |  |  |
| 241 | 1.6 | Posventa |  | 12emo | 2027-11-22 | 2028-11-16 | 235 | 2027-09-22 | 2028-09-16 | 12emo | 2027-02-04 | 2028-01-30 | 0d |  |  | Posventa | 8640h |  |  |  |
