# Vivienda Lugon

Schedule from MS Project XML, 2022-11-28 to 2028-01-30, A marks actual dates.

## Calendars

- Calendario Argentino 2024: Mon-Fri 09:00-13:00, 15:00-19:00; Sat-Sun off. Exceptions (off unless hours are given): 2024-07-09 (Día de la Independencia), 2024-10-11 (Feriado con fines turísticos), 2024-11-18 (Día de la Soberanía Nacional (20/11)), 2024-12-25 to 2033-12-25 (Navidad, recurring), 2025-01-01 to 2034-01-01 (Año nuevo 2025, recurring), 2025-02-10 to 2034-02-10 (Carnaval 2025, recurring), 2025-03-24 to 2034-03-24 (Día Nacional de la Memoria por la Verdad y la Justicia, recurring), 2025-03-28 (Viernes Santo), 2025-04-02 to 2034-04-02 (Día del Veterano y de los Caídos en la Guerra de Malvinas, recurring), 2025-05-01 to 2034-05-01 (Día del Trabajador, recurring), 2025-05-25 to 2034-05-25 (Dia de la revolucion de Mayo, recurring), 2025-06-20 to 2034-06-20 (Día de la Bandera, recurring), 2025-07-09 to 2034-07-09 (Día de la Independencia, recurring), 2025-08-18 to 2034-08-18 (Paso a la Inmortalidad del Gral. José de San Martín (17/08), recurring), 2025-10-13 to 2034-10-13 (Día del Respeto a la Diversidad Cultural (12/10), recurring), 2025-11-18 to 2034-11-18 (Día de la Soberanía Nacional (20/11), recurring), 2025-12-08 to 2034-12-08 (Día de la Virgen, recurring).

## Resources

| Resource |
| --- |
| Gabriela Rojo |
| Posventa |
| Proyectos |
| Marina F |
| Mariana Valdez |

## Schedule

| ID | WBS | Task | Duration | Start | Finish | Predecessors | Complete | Remaining | Baseline start | Baseline finish | Baseline duration | Baseline 1 start | Baseline 1 finish | Total slack | Free slack | Constraint | Resources | Work | Actual work | Texto3 | Texto1 | Texto2 |
| --- | --- | --- | --- | --- | --- | --- | --- | --- | --- | --- | --- | --- | --- | --- | --- | --- | --- | --- | --- | --- | --- | --- |
| 1 | 1 | **Vivienda Lugon** | 1305d? | 2022-11-28 A | 2028-01-30 |  | 14% | 1124.19d? | 2022-11-28 | 2025-06-02 | 640d? | 2022-11-28 | 2028-01-30 | 0d |  |  |  | 33672h | 4784h |  |  |  |
| 2 | 1.1 | ✔Vivienda Lugon Contratada | 598d | 2022-11-28 A | 2025-04-01 A |  | 100% |  | 2022-11-28 | 2025-04-01 | 612d | 2022-11-28 | 2026-11-10 |  |  | start no earlier than 2022-11-28 | Mariana Valdez | 4784h | 4784h | Gerencia |  |  |
| 3 | 1.2 | Obra Lugon | 579d | 2024-09-30 | 2027-02-04 |  |  |  |  |  |  | 2024-09-30 | 2027-02-04 | 247d |  |  | Mariana Valdez | 4632h |  | Seguimiento |  |  |
| 4 | 1.3 | **Obra Lugon** | 579d? | 2024-09-28 A | 2027-02-04 |  |  | 579d? |  |  |  | 2024-09-28 | 2027-02-04 | -579d | 0d |  |  | 6968h |  |  |  |  |
| 5 | 1.3.1 | **COLUMNAS Y VIGAS METÁLICAS SOBRE PLANTA BAJA Y PLANTA ALTA** | 166d | 2026-05-05 | 2026-12-31 |  |  |  |  |  |  | 2026-05-05 | 2026-11-02 | -619d | 0d |  |  | 536h |  |  |  |  |
| 6 | 1.3.1.1 | Tubo rectangular 40x80x2,5 | 5d | 2026-11-17 | 2026-11-24 | 11 |  |  |  |  |  | 2026-09-21 | 2026-09-25 | -619d | 0d |  | Mariana Valdez | 40h |  | Seguimiento | Herrería | Planta Baja |
| 7 | 1.3.1.2 | Tubo rectangular 60x120x1,6 | 5d | 2026-11-25 | 2026-12-01 | 6 |  |  |  |  |  | 2026-09-28 | 2026-10-02 | -619d | 0d |  | Mariana Valdez | 40h |  | Seguimiento | Herrería | Planta Baja |
| 8 | 1.3.1.3 | Tubo rectangular 40x60x2,5 | 5d | 2026-12-02 | 2026-12-09 | 7 |  |  |  |  |  | 2026-10-05 | 2026-10-09 | -619d | 0d |  | Mariana Valdez | 40h |  | Seguimiento | Herrería | Planta Baja |
| 9 | 1.3.1.4 | Tubo rectangular 40x80x2,5 | 5d | 2026-12-10 | 2026-12-16 | 8 |  |  |  |  |  | 2026-10-12 | 2026-10-19 | -619d | 0d |  | Mariana Valdez | 40h |  | Seguimiento | Herrería | Planta Baja |
| 10 | 1.3.1.5 | Gabinetes termotanque y en galeria/tender | 10d | 2026-12-17 | 2026-12-31 | 9 |  |  |  |  |  | 2026-10-20 | 2026-11-02 | -619d | 0d |  | Mariana Valdez | 80h |  | Seguimiento | Herrería | Planta Baja |
| 11 | 1.3.1.6 | Albañales (los metros lineales son confusos) Rejilla guardaganado marco + rejilla. | 20d | 2026-10-20 | 2026-11-16 | 76 |  |  |  |  |  | 2026-08-24 | 2026-09-18 | -619d | 0d |  | Mariana Valdez | 160h |  | Seguimiento | Herrería | Planta Baja |
| 12 | 1.3.1.7 | Canaletas ver si se contemplaron en cubiertas metalicas | 5d | 2026-06-12 | 2026-06-18 | 22 |  |  |  |  |  | 2026-06-12 | 2026-06-18 | -485d | 0d |  | Mariana Valdez | 40h |  | Seguimiento | Herrería | Planta Baja |
| 13 | 1.3.1.8 | Cotizar colocar perfil ipn en contrapiso en ingreso cochera cortesia/ peatonal W310 | 2d | 2026-05-05 | 2026-05-06 | 30SS+15d |  |  |  |  |  | 2026-05-05 | 2026-05-06 | -619d | 0d |  | Mariana Valdez | 16h |  | Seguimiento | Herrería | Planta Baja |
| 14 | 1.3.1.9 | Baranda suspendida de escalera principal | 10d | 2026-05-07 | 2026-05-20 | 13 |  |  |  |  |  | 2026-05-07 | 2026-05-20 | -485d | 0d |  | Mariana Valdez | 80h |  | Seguimiento | Herrería | Planta Baja |
| 15 | 1.3.2 | **CONTRAPISO** | 77d | 2026-05-07 | 2026-08-26 |  |  |  |  |  |  | 2026-05-07 | 2026-06-29 | -619d | 0d |  |  | 56h |  | Seguimiento |  |  |
| 16 | 1.3.2.1 | CONTRAPISO DE HORMIGÓN EXTERIOR: e= 10cm falta aprox un 20% | 2d | 2026-05-07 | 2026-05-08 | 13 |  |  |  |  |  | 2026-05-07 | 2026-05-08 | -619d | 0d |  | Mariana Valdez | 16h |  | Seguimiento | Albañileria | Planta Baja |
| 17 | 1.3.2.2 | ADICIONAL - Contrapisos de terrazas para igualar nivel interior-exterior (planta alta dormitorios + gym) | 5d | 2026-08-20 | 2026-08-26 | 157 |  |  |  |  |  | 2026-06-23 | 2026-06-29 | -619d | 0d |  | Mariana Valdez | 40h |  | Seguimiento | Albañileria | Primer Piso |
| 18 | 1.3.3 | **CARPETA DE NIVELACIÓN EN SUBSUELO, PLANTA BAJA Y PLANTA ALTA** | 12d | 2026-08-27 | 2026-09-11 |  |  |  |  |  |  | 2026-06-30 | 2026-07-16 | -619d | 0d |  |  | 96h |  |  |  | Planta Baja |
| 19 | 1.3.3.1 | Carpeta exterior GYM | 5d | 2026-08-27 | 2026-09-02 | 17 |  |  |  |  |  | 2026-06-30 | 2026-07-06 | -619d | 0d |  | Mariana Valdez | 40h |  | Seguimiento | Albañileria | Segundo Piso |
| 20 | 1.3.3.2 | ADICIONAL - Carpetas de terrazas por igualar nivel interior-exterior (planta alta dormitorios) | 7d | 2026-09-03 | 2026-09-11 | 19 |  |  |  |  |  | 2026-07-07 | 2026-07-16 | -619d | 0d |  | Mariana Valdez | 56h |  | Seguimiento | Albañileria | Primer Piso |
| 21 | 1.3.4 | **CUBIERTA** | 15d | 2026-05-21 | 2026-06-11 |  |  |  |  |  |  | 2026-05-21 | 2026-06-11 | -485d | 0d |  |  | 120h |  |  |  |  |
| 22 | 1.3.4.1 | CUBIERTA METÁLICA DE CORTESIA (Cotizacion actualizada, sin canaletas) | 15d | 2026-05-21 | 2026-06-11 | 14 |  |  |  |  |  | 2026-05-21 | 2026-06-11 | -485d | 0d |  | Mariana Valdez | 120h |  | Seguimiento | Herrería | Planta Baja |
| 23 | 1.3.5 | **REVESTIMIENTOS INTERIORES** | 17d | 2026-10-20 | 2026-11-11 |  |  |  |  |  |  | 2026-08-24 | 2026-09-15 | -586d | 0d |  |  | 136h |  |  |  |  |
| 24 | 1.3.5.1 | REV: BAÑO - SB (REVEST PORCELANATO) | 5d | 2026-10-20 | 2026-10-26 | 76 |  |  |  |  |  | 2026-08-24 | 2026-08-28 | -586d | 0d |  | Mariana Valdez | 40h |  | Seguimiento | Ceramista | Subsuelo 1 |
| 25 | 1.3.5.2 | REV: BAÑO C/ANTEBAÑO 1 - PA Y NICHO hay que modificarlo, ver si mantenemos revestimiento colocado | 3d | 2026-10-27 | 2026-10-29 | 24 |  |  |  |  |  | 2026-08-31 | 2026-09-02 | -586d | 0d |  | Mariana Valdez | 24h |  | Seguimiento | Ceramista | Primer Piso |
| 26 | 1.3.5.3 | REV: BAÑO 2 - PA Y NICHO (90%) | 3d | 2026-10-30 | 2026-11-03 | 25 |  |  |  |  |  | 2026-09-03 | 2026-09-07 | -586d | 0d |  | Mariana Valdez | 24h |  | Seguimiento | Ceramista | Primer Piso |
| 27 | 1.3.5.4 | REV: BAÑO 3 - PA Y NICHO | 3d | 2026-11-04 | 2026-11-06 | 26 |  |  |  |  |  | 2026-09-08 | 2026-09-10 | -586d | 0d |  | Mariana Valdez | 24h |  | Seguimiento | Ceramista | Primer Piso |
| 28 | 1.3.5.5 | REV: ASADOR - refractarias | 3d | 2026-11-09 | 2026-11-11 | 27 |  |  |  |  |  | 2026-09-11 | 2026-09-15 | -586d | 0d |  | Mariana Valdez | 24h |  | Seguimiento | Ceramista | Subsuelo 1 |

Notes:
- 6: Galeria PB y tender (se adiciono gabinete) menos pergola
- 7: Cochera de cortesia
- 8: Tender vertical es 60x40
- 9: Cochera de cortesia (laterales) 60x40 vertical

| ID | WBS | Task | Type | Duration | Start | Finish | Predecessors | Baseline 1 start | Baseline 1 finish | Total slack | Free slack | Constraint | Resources | Work | Texto1 | Texto2 | Texto3 |
| --- | --- | --- | --- | --- | --- | --- | --- | --- | --- | --- | --- | --- | --- | --- | --- | --- | --- |
| 29 | 1.3.6 | **REVESTIMIENTOS EXTERIORES** |  | 25d | 2026-04-13 | 2026-05-18 |  | 2026-04-13 | 2026-05-18 | -619d | 0d |  |  | 200h |  |  |  |
| 30 | 1.3.6.1 | MURO REVESTIMIENTO PIEDRA GRIS |  | 25d | 2026-04-13 | 2026-05-18 |  | 2026-04-13 | 2026-05-18 | -619d | 0d | start no earlier than 2026-04-13 | Mariana Valdez | 200h | Pedrero | Segundo Piso | Seguimiento |
| 31 | 1.3.7 | **PISOS INTERIORES** |  | 158d | 2026-04-13 | 2026-11-26 |  | 2026-04-13 | 2026-11-26 | -596d | 0d |  |  | 792h |  |  |  |
| 32 | 1.3.7.1 | PISO INTERIOR - COCHERA PSB (CEMENTO ALISADO) |  | 10d | 2026-04-13 | 2026-04-24 |  | 2026-04-13 | 2026-04-24 | -448d | 0d | start no earlier than 2026-04-13 | Mariana Valdez | 80h | Ceramista | Subsuelo 1 | Seguimiento |
| 33 | 1.3.7.2 | PISO INTERIOR - QUINCHO Y EXTERIOR - PSB (PORC. VILLAGRES HOUSE CEMENT NATURAL 123*123) |  | 10d | 2026-07-22 | 2026-08-04 | 148 | 2026-07-22 | 2026-08-04 | -620d | 0d |  | Mariana Valdez | 80h | Ceramista | Subsuelo 1 | Seguimiento |
| 34 | 1.3.7.3 | PISO INTERIOR - PASILLO - PSB |  | 2d | 2026-08-05 | 2026-08-06 | 33 | 2026-08-05 | 2026-08-06 | -620d | 0d |  | Mariana Valdez | 16h | Ceramista | Subsuelo 1 | Seguimiento |
| 35 | 1.3.7.4 | PISO INTERIOR - BAÑO - PSB | milestone | 0d | 2026-04-13 | 2026-04-13 |  | 2026-04-13 | 2026-04-13 | -438d | 0d | start no earlier than 2026-04-13 | Mariana Valdez |  | Ceramista | Subsuelo 1 | Seguimiento |
| 36 | 1.3.7.5 | PISO INTERIOR - BAÑO - PB | milestone | 0d | 2026-04-13 | 2026-04-13 |  | 2026-04-13 | 2026-04-13 | -438d | 0d | start no earlier than 2026-04-13 | Mariana Valdez |  | Ceramista | Planta Baja | Seguimiento |
| 37 | 1.3.7.6 | PISO INTERIOR - DESPENSA - PB | milestone | 0d | 2026-04-13 | 2026-04-13 |  | 2026-04-13 | 2026-04-13 | -438d | 0d | start no earlier than 2026-04-13 | Mariana Valdez |  | Ceramista | Planta Baja | Seguimiento |
| 38 | 1.3.7.7 | PISO INTERIOR - ESTAR - PB |  | 4d | 2026-08-07 | 2026-08-12 | 34 | 2026-08-07 | 2026-08-12 | -620d | 0d |  | Mariana Valdez | 32h | Ceramista | Planta Baja | Seguimiento |
| 39 | 1.3.7.8 | PISO INTERIOR - ESCRITORIO - PB | milestone | 0d | 2026-04-13 | 2026-04-13 |  | 2026-04-13 | 2026-04-13 | -438d | 0d | start no earlier than 2026-04-13 | Mariana Valdez |  | Ceramista | Planta Baja | Seguimiento |
| 40 | 1.3.7.9 | PISO INTERIOR - PASILLO - PB | milestone | 0d | 2026-04-13 | 2026-04-13 |  | 2026-04-13 | 2026-04-13 | -438d | 0d | start no earlier than 2026-04-13 | Mariana Valdez |  | Ceramista | Planta Baja | Seguimiento |
| 41 | 1.3.7.10 | PISO INTERIOR - COMEDOR - PB |  | 4d | 2026-08-13 | 2026-08-19 | 38 | 2026-08-13 | 2026-08-19 | -620d | 0d |  | Mariana Valdez | 32h | Ceramista | Planta Baja | Seguimiento |
| 42 | 1.3.7.11 | PISO INTERIOR - COCINA Y GALERIA Y ALERO - PB |  | 10d | 2026-08-20 | 2026-09-02 | 41 | 2026-08-20 | 2026-09-02 | -620d | 0d |  | Mariana Valdez | 80h | Ceramista | Planta Baja | Seguimiento |
| 43 | 1.3.7.12 | PISO INTERIOR - LAVADERO - PB |  | 2d | 2026-09-03 | 2026-09-04 | 42 | 2026-09-03 | 2026-09-04 | -620d | 0d |  | Mariana Valdez | 16h | Ceramista | Planta Baja | Seguimiento |
| 44 | 1.3.7.13 | PISO INTERIOR - BAÑO C/ANTEBAÑO - PA |  | 2d | 2026-09-07 | 2026-09-08 | 43 | 2026-09-07 | 2026-09-08 | -620d | 0d |  | Mariana Valdez | 16h | Ceramista | Primer Piso | Seguimiento |
| 45 | 1.3.7.14 | PISO INTERIOR - PASILLO - PA |  | 7d | 2026-09-09 | 2026-09-17 | 44 | 2026-09-09 | 2026-09-17 | -620d | 0d |  | Mariana Valdez | 56h | Ceramista | Primer Piso | Seguimiento |
| 46 | 1.3.7.15 | PISO INTERIOR - DORMITORIO PPAL Y TERRAZA Y BALCON. - PA |  | 10d | 2026-09-18 | 2026-10-01 | 45 | 2026-09-18 | 2026-10-01 | -620d | 0d |  | Mariana Valdez | 80h | Ceramista | Primer Piso | Seguimiento |
| 47 | 1.3.7.16 | PISO INTERIOR - VESTIDOR - PA | milestone | 0d | 2026-04-13 | 2026-04-13 |  | 2026-04-13 | 2026-04-13 | -438d | 0d | start no earlier than 2026-04-13 | Mariana Valdez |  | Ceramista | Primer Piso | Seguimiento |
| 48 | 1.3.7.17 | PISO INTERIOR - DORMITORIO 2 - PA | milestone | 0d | 2026-04-13 | 2026-04-13 |  | 2026-04-13 | 2026-04-13 | -438d | 0d | start no earlier than 2026-04-13 | Mariana Valdez |  | Ceramista | Primer Piso | Seguimiento |
| 49 | 1.3.7.18 | PISO INTERIOR - VESTIDOR 2 - PA | milestone | 0d | 2026-04-13 | 2026-04-13 |  | 2026-04-13 | 2026-04-13 | -438d | 0d | start no earlier than 2026-04-13 | Mariana Valdez |  | Ceramista | Primer Piso | Seguimiento |
| 50 | 1.3.7.19 | PISO INTERIOR - DORMITORIO 3 - PA |  | 7d | 2026-10-02 | 2026-10-12 | 46 | 2026-10-02 | 2026-10-12 | -620d | 0d |  | Mariana Valdez | 56h | Ceramista | Primer Piso | Seguimiento |
| 51 | 1.3.7.20 | PISO INTERIOR - VESTIDOR 3 - PA | milestone | 0d | 2026-04-13 | 2026-04-13 |  | 2026-04-13 | 2026-04-13 | -438d | 0d | start no earlier than 2026-04-13 | Mariana Valdez |  | Ceramista | Primer Piso | Seguimiento |
| 52 | 1.3.7.21 | PISO INTERIOR -GYM Y TERRAZA - PA 2 (CEMENTO ALISADO O PORFIDO?) |  | 10d | 2026-10-14 | 2026-10-27 | 50 | 2026-10-14 | 2026-10-27 | -620d | 0d |  | Mariana Valdez | 80h | Externo | Segundo Piso | Seguimiento |
| 53 | 1.3.7.22 | PISO INTERIOR -ESCALERA COMPLETA EN ALTURA (PORFIDO O GRANITO NATURAL) |  | 21d | 2026-10-28 | 2026-11-26 | 52 | 2026-10-28 | 2026-11-26 | -620d | 0d |  | Mariana Valdez | 168h | Externo |  | Seguimiento |

| ID | WBS | Task | Type | Duration | Start | Finish | Predecessors | Baseline 1 start | Baseline 1 finish | Total slack | Free slack | Constraint | Resources | Work | Texto2 | Texto3 | Texto1 |
| --- | --- | --- | --- | --- | --- | --- | --- | --- | --- | --- | --- | --- | --- | --- | --- | --- | --- |
| 54 | 1.3.8 | **PISOS EXTERIORES faltan todos** |  | 182d | 2026-04-13 | 2027-01-04 |  | 2026-04-13 | 2027-01-04 | -620d | 0d |  |  | 512h |  |  |  |
| 55 | 1.3.8.1 | INGRESO PEATONAL Y PATIO PB (PORFIDO O GRANITO NATURAL) |  | 10d | 2026-04-13 | 2026-04-24 |  | 2026-04-13 | 2026-04-24 | -448d | 0d | start no earlier than 2026-04-13 | Mariana Valdez | 80h | Planta Baja | Seguimiento |  |
| 56 | 1.3.8.2 | PISOS: VEREDA PERIMETRAL PATIO (CONTEMP EN QUINCHO) (SE MODIFICO A MISMO PORCELANATO QUE INTERIOR) |  | 7d | 2026-11-27 | 2026-12-07 | 53 | 2026-11-27 | 2026-12-07 | -620d | 0d |  | Mariana Valdez | 56h | Planta Baja | Seguimiento | Ceramista |
| 57 | 1.3.8.3 | INGRESO COCHERA cortesía* (ADOQUINES) |  | 15d | 2026-04-13 | 2026-05-04 |  | 2026-04-13 | 2026-05-04 | -453d | 0d | start no earlier than 2026-04-13 | Mariana Valdez | 120h | Planta Baja | Seguimiento |  |
| 58 | 1.3.8.4 | INGRESO COCHERA Y LAVADO 5*6 subsuelo (ADOQUINES) |  | 15d | 2026-04-13 | 2026-05-04 |  | 2026-04-13 | 2026-05-04 | -453d | 0d | start no earlier than 2026-04-13 | Mariana Valdez | 120h | Subsuelo 1 | Seguimiento |  |
| 59 | 1.3.8.5 | TERRAZA CONTEMPLADO EN DORM EN SUITE (MISMO PISO QUE INTERIOR) |  | 7d | 2026-12-09 | 2026-12-17 | 56 | 2026-12-09 | 2026-12-17 | -620d | 0d |  | Mariana Valdez | 56h | Primer Piso | Seguimiento | Ceramista |
| 60 | 1.3.8.6 | ADICIONAL - Piso sobre aleros en PA |  | 10d | 2026-12-18 | 2027-01-04 | 59 | 2026-12-18 | 2027-01-04 | -620d | 0d |  | Mariana Valdez | 80h | Primer Piso | Seguimiento | Ceramista |
| 61 | 1.3.8.7 | DURMIENTES HORIZ.* | milestone | 0d | 2026-04-13 | 2026-04-13 |  | 2026-04-13 | 2026-04-13 | -438d | 0d | start no earlier than 2026-04-13 | Mariana Valdez |  | Planta Baja | Seguimiento |  |
| 62 | 1.3.8.8 | DURMIENTES VERT.* | milestone | 0d | 2026-04-13 | 2026-04-13 |  | 2026-04-13 | 2026-04-13 | -438d | 0d | start no earlier than 2026-04-13 | Mariana Valdez |  |  | Seguimiento |  |
| 63 | 1.3.9 | **ZOCALOS** |  | 10d | 2026-11-27 | 2026-12-11 |  | 2026-11-27 | 2026-12-11 | -606d | 0d |  |  | 240h |  |  |  |
| 64 | 1.3.9.1 | ZOCALOS: Interiores SS |  | 10d | 2026-11-27 | 2026-12-11 | 53 | 2026-11-27 | 2026-12-11 | -606d | 0d |  | Mariana Valdez | 80h | Subsuelo 1 | Seguimiento | Ceramista |
| 65 | 1.3.9.2 | ZOCALOS: Interiores PB |  | 10d | 2026-11-27 | 2026-12-11 | 53 | 2026-11-27 | 2026-12-11 | -606d | 0d |  | Mariana Valdez | 80h | Planta Baja | Seguimiento | Ceramista |
| 66 | 1.3.9.3 | ZOCALOS: Interiores PA |  | 10d | 2026-11-27 | 2026-12-11 | 53 | 2026-11-27 | 2026-12-11 | -606d | 0d |  | Mariana Valdez | 80h | Primer Piso | Seguimiento | Ceramista |
| 67 | 1.3.10 | **INSTALACIONES SANITARIAS Y PLUVIALES GENERALES** |  | 127d | 2026-05-19 | 2026-11-17 |  | 2026-05-19 | 2026-09-21 | -590d | 0d |  |  | 416h |  |  |  |
| 68 | 1.3.10.1 | ADICIONAL - tirada hasta el fondo |  | 7d | 2026-11-09 | 2026-11-17 | 73 | 2026-09-11 | 2026-09-21 | -593d | 0d |  | Mariana Valdez | 56h | Subsuelo 1 | Seguimiento | Plomeria |
| 69 | 1.3.10.2 | ADICIONAL - desagüe de canteros |  | 1d | 2026-06-01 | 2026-06-01 | 71 | 2026-06-01 | 2026-06-01 | -472d | 0d |  | Mariana Valdez | 8h | Planta Baja | Seguimiento | Plomeria |
| 70 | 1.3.10.3 | ADICIONAL - desagüe de cochera de cortesia |  | 3d | 2026-05-21 | 2026-05-26 | 72 | 2026-05-21 | 2026-05-26 | -475d | 0d |  | Mariana Valdez | 24h | Planta Baja | Seguimiento | Plomeria |
| 71 | 1.3.10.4 | ADICIONAL - modificación de pluviales en cochera de subsuelo |  | 3d | 2026-05-27 | 2026-05-29 | 70 | 2026-05-27 | 2026-05-29 | -472d | 0d |  | Mariana Valdez | 24h | Subsuelo 1 | Seguimiento | Plomeria |
| 72 | 1.3.10.5 | ADICIONAL - desagüe de abertura de GYM |  | 2d | 2026-05-19 | 2026-05-20 | 30 | 2026-05-19 | 2026-05-20 | -475d | 0d |  | Mariana Valdez | 16h | Segundo Piso | Seguimiento | Plomeria |
| 73 | 1.3.10.6 | ADICIONAL - desagüe pluvial lado izquiero desde ingreso hasta quincho por terreno natural |  | 14d | 2026-10-20 | 2026-11-06 | 76 | 2026-08-24 | 2026-09-10 | -593d | 0d |  | Mariana Valdez | 112h | Subsuelo 1 | Seguimiento | Plomeria |
| 74 | 1.3.10.7 | ADICIONAL - Modificar embudos de cambio de carpetas |  | 2d | 2026-05-21 | 2026-05-22 | 72 | 2026-05-21 | 2026-05-22 | -472d | 0d |  | Mariana Valdez | 16h | Primer Piso | Seguimiento | Plomeria |
| 75 | 1.3.10.8 | Agua a cisterna y distribución de cañeria (hacer) |  | 5d | 2026-05-26 | 2026-06-01 | 74 | 2026-05-26 | 2026-06-01 | -472d | 0d |  | Mariana Valdez | 40h | Planta Baja | Seguimiento | Plomeria |
| 76 | 1.3.10.9 | ADICIONAL - Albañal de desague |  | 15d | 2026-09-28 | 2026-10-19 | 168 | 2026-07-31 | 2026-08-21 | -619d | 0d |  | Mariana Valdez | 120h | Planta Baja | Seguimiento | Albañileria |
| 77 | 1.3.11 | **INSTALACIONES SANITARIAS INTERNAS** |  | 205d | 2026-04-13 | 2027-02-04 |  | 2026-04-13 | 2027-02-04 | -643d | 0d |  |  | 40h |  |  |  |
| 78 | 1.3.11.1 | INST. AGUA FRIA Y CALIENTE |  | 3d | 2026-11-19 | 2026-11-23 | 68 | 2026-09-22 | 2026-09-24 | -593d | 0d |  | Mariana Valdez | 24h | Subsuelo 1 | Seguimiento | Plomeria |
| 79 | 1.3.11.2 | Cisterna enterrada (subsuelo y distribución)* | milestone | 0d | 2026-04-13 | 2026-04-13 |  | 2026-04-13 | 2026-04-13 | -438d | 0d | start no earlier than 2026-04-13 | Mariana Valdez |  | Planta Baja | Seguimiento | Plomeria |
| 80 | 1.3.11.3 | Bomba* |  | 2d | 2027-02-03 | 2027-02-04 | 82 | 2027-02-03 | 2027-02-04 | -643d | 0d |  | Mariana Valdez | 16h | Cubierta | Seguimiento | Plomeria |

| ID | WBS | Task | Type | Duration | Start | Finish | Predecessors | Baseline 1 start | Baseline 1 finish | Total slack | Free slack | Constraint | Resources | Work | Texto1 | Texto2 | Texto3 |
| --- | --- | --- | --- | --- | --- | --- | --- | --- | --- | --- | --- | --- | --- | --- | --- | --- | --- |
| 81 | 1.3.12 | **INSTALACIONES CLOACAS** |  | 5d | 2027-01-27 | 2027-02-02 |  | 2027-01-27 | 2027-02-02 | -643d | 0d |  |  | 40h |  |  |  |
| 82 | 1.3.12.1 | Colocación artefactos |  | 5d | 2027-01-27 | 2027-02-02 | 174 | 2027-01-27 | 2027-02-02 | -643d | 0d |  | Mariana Valdez | 40h | Plomeria | Planta Baja | Seguimiento |
| 83 | 1.3.13 | **INSTALACION GAS arreglar caño de gas en el ingreso, ver donde van las rejillas de gas** |  | 50d | 2026-04-13 | 2026-06-23 |  | 2026-04-13 | 2026-06-23 | -488d | 0d |  |  | 200h |  |  |  |
| 84 | 1.3.13.1 | 2 subida de gas PSS, PB y PA - cañeria Ø110 | milestone | 0d | 2026-04-13 | 2026-04-13 |  | 2026-04-13 | 2026-04-13 | -438d | 0d | start no earlier than 2026-04-13 | Mariana Valdez |  | Plomeria |  | Seguimiento |
| 85 | 1.3.13.2 | Casilla de gas |  | 3d | 2026-05-19 | 2026-05-21 | 30 | 2026-05-19 | 2026-05-21 | -488d | 0d |  | Mariana Valdez | 24h | Plomeria | Planta Baja | Seguimiento |
| 86 | 1.3.13.3 | ADICIONAL - arreglar caño de gas x bobcat en el ingreso |  | 2d | 2026-05-22 | 2026-05-26 | 85 | 2026-05-22 | 2026-05-26 | -488d | 0d |  | Mariana Valdez | 16h | Plomeria | Planta Baja | Seguimiento |
| 87 | 1.3.13.4 | Aprobacion de gas |  | 10d | 2026-06-10 | 2026-06-23 | 90 | 2026-06-10 | 2026-06-23 | -488d | 0d |  | Mariana Valdez | 80h | Plomeria |  | Seguimiento |
| 88 | 1.3.13.5 | Rejillas de ventilación |  | 3d | 2026-05-27 | 2026-05-29 | 86 | 2026-05-27 | 2026-05-29 | -488d | 0d |  | Mariana Valdez | 24h | Plomeria | Planta Baja | Seguimiento |
| 89 | 1.3.13.6 | ADICIONAL - modificación de llave de gas en termotanque (por cierre de gabinete) |  | 3d | 2026-06-01 | 2026-06-03 | 88 | 2026-06-01 | 2026-06-03 | -488d | 0d |  | Mariana Valdez | 24h | Plomeria | Planta Baja | Seguimiento |
| 90 | 1.3.13.7 | Colocación de Artefactos |  | 4d | 2026-06-04 | 2026-06-09 | 89 | 2026-06-04 | 2026-06-09 | -488d | 0d |  | Mariana Valdez | 32h | Plomeria | Planta Baja | Seguimiento |
| 91 | 1.3.14 | **INSTALACION ELECTRICA / SEÑALES DEBILES** |  | 15d | 2024-09-28 | 2024-10-21 |  | 2024-09-28 | 2024-10-21 | -79d | 0d |  |  | 320h |  |  |  |
| 92 | 1.3.14.1 | Canalización, cableado y armado según plano. | milestone | 0d | 2024-09-28 | 2024-09-28 |  | 2024-09-28 | 2024-09-28 | -64d | 0d |  | Mariana Valdez |  | Electricista |  | Seguimiento |
| 93 | 1.3.14.2 | BOCAS DE ILUMINACIÓN EN LOSA | milestone | 0d | 2024-09-28 | 2024-09-28 |  | 2024-09-28 | 2024-09-28 | -64d | 0d |  | Mariana Valdez |  | Electricista |  | Seguimiento |
| 94 | 1.3.14.3 | BOCAS DE ILUMINACIÓN EN PARED | milestone | 0d | 2024-09-28 | 2024-09-28 |  | 2024-09-28 | 2024-09-28 | -64d | 0d |  | Mariana Valdez |  | Electricista |  | Seguimiento |
| 95 | 1.3.14.4 | BOCAS DE TOMACORRIENTES | milestone | 0d | 2024-09-28 | 2024-09-28 |  | 2024-09-28 | 2024-09-28 | -64d | 0d |  | Mariana Valdez |  | Electricista |  | Seguimiento |
| 96 | 1.3.14.5 | SEÑALES DÉBILES | milestone | 0d | 2024-09-28 | 2024-09-28 |  | 2024-09-28 | 2024-09-28 | -64d | 0d |  | Mariana Valdez |  | Electricista |  | Seguimiento |
| 97 | 1.3.14.6 | ARMADO DE TABLERO GENERAL | milestone | 0d | 2024-09-28 | 2024-09-28 |  | 2024-09-28 | 2024-09-28 | -64d | 0d |  | Mariana Valdez |  | Electricista |  | Seguimiento |
| 98 | 1.3.14.7 | CERTIFICACIÓN PARA EPEC/COOPERATIVA | milestone | 0d | 2024-09-28 | 2024-09-28 |  | 2024-09-28 | 2024-09-28 | -64d | 0d |  | Mariana Valdez |  | Electricista |  | Seguimiento |
| 99 | 1.3.14.8 | ARMADO DE TABLERO PARA LUZ DE OBRA | milestone | 0d | 2024-09-28 | 2024-09-28 |  | 2024-09-28 | 2024-09-28 | -64d | 0d |  | Mariana Valdez |  | Electricista |  | Seguimiento |
| 100 | 1.3.14.9 | Armado tablero obra arriba y conexión cble subterráneo | milestone | 0d | 2024-09-28 | 2024-09-28 |  | 2024-09-28 | 2024-09-28 | -64d | 0d |  | Mariana Valdez |  | Electricista |  | Seguimiento |
| 101 | 1.3.14.10 | Alimentación de pilar a grupo electrogeno | milestone | 0d | 2024-09-28 | 2024-09-28 |  | 2024-09-28 | 2024-09-28 | -64d | 0d |  | Mariana Valdez |  | Electricista |  | Seguimiento |
| 102 | 1.3.14.11 | Alimentación de grupo electrogeno hacia tableros interiores | milestone | 0d | 2024-09-28 | 2024-09-28 |  | 2024-09-28 | 2024-09-28 | -64d | 0d |  | Mariana Valdez |  | Electricista |  | Seguimiento |
| 103 | 1.3.14.12 | Zanjeo de pilar a tableros | milestone | 0d | 2024-09-28 | 2024-09-28 |  | 2024-09-28 | 2024-09-28 | -64d | 0d |  | Mariana Valdez |  | Externo |  | Seguimiento |
| 104 | 1.3.14.13 | Grupo electrógeno | milestone | 0d | 2024-09-28 | 2024-09-28 |  | 2024-09-28 | 2024-09-28 | -64d | 0d |  | Mariana Valdez |  | Electricista |  | Seguimiento |
| 105 | 1.3.14.14 | Bocas faltantes | milestone | 0d | 2024-09-28 | 2024-09-28 |  | 2024-09-28 | 2024-09-28 | -64d | 0d |  | Mariana Valdez |  | Electricista |  | Seguimiento |
| 106 | 1.3.14.15 | Cableado |  | 15d | 2024-09-30 | 2024-10-21 |  | 2024-09-30 | 2024-10-21 | -79d | 0d |  | Mariana Valdez | 120h | Electricista |  | Seguimiento |
| 107 | 1.3.14.16 | Armado de tableros |  | 10d | 2024-09-30 | 2024-10-14 |  | 2024-09-30 | 2024-10-14 | -74d | 0d |  | Mariana Valdez | 80h | Electricista |  | Seguimiento |
| 108 | 1.3.14.17 | Armado de cajas |  | 15d | 2024-09-30 | 2024-10-21 |  | 2024-09-30 | 2024-10-21 | -79d | 0d |  | Mariana Valdez | 120h | Electricista |  | Seguimiento |

| ID | WBS | Task | Type | Duration | Start | Finish | Predecessors | Baseline 1 start | Baseline 1 finish | Total slack | Free slack | Constraint | Resources | Work | Texto1 | Texto2 | Texto3 |
| --- | --- | --- | --- | --- | --- | --- | --- | --- | --- | --- | --- | --- | --- | --- | --- | --- | --- |
| 109 | 1.3.15 | **INSTALACION A°A° falta conectar desagues, y hacer conductos** |  | 37d | 2026-04-13 | 2026-06-04 |  | 2026-04-13 | 2026-06-04 | -495d | 0d |  |  | 296h |  |  |  |
| 110 | 1.3.15.1 | AA SALA DE MÚSICA SS (contemplo conductos) |  | 5d | 2026-04-15 | 2026-04-21 | 118 | 2026-04-15 | 2026-04-21 | -495d | 0d |  | Mariana Valdez | 40h | Externo | Planta Baja | Seguimiento |
| 111 | 1.3.15.2 | AA DORMITORIO 1 (contemplo conductos) |  | 5d | 2026-04-22 | 2026-04-28 | 110 | 2026-04-22 | 2026-04-28 | -495d | 0d |  | Mariana Valdez | 40h | Externo | Cubierta | Seguimiento |
| 112 | 1.3.15.3 | AA DORMITORIO 2 (contemplo conductos) |  | 5d | 2026-04-29 | 2026-05-06 | 111 | 2026-04-29 | 2026-05-06 | -495d | 0d |  | Mariana Valdez | 40h | Externo | Planta Baja | Seguimiento |
| 113 | 1.3.15.4 | AA DORMITORIO 3 (contemplo conductos) |  | 5d | 2026-05-07 | 2026-05-13 | 112 | 2026-05-07 | 2026-05-13 | -495d | 0d |  | Mariana Valdez | 40h | Externo | Planta Baja | Seguimiento |
| 114 | 1.3.15.5 | AA ESTAR COMEDOR (contemplo conductos) |  | 5d | 2026-05-14 | 2026-05-20 | 113 | 2026-05-14 | 2026-05-20 | -495d | 0d |  | Mariana Valdez | 40h | Externo | Planta Baja | Seguimiento |
| 115 | 1.3.15.6 | AA QUINCHO (contemplo conductos) |  | 5d | 2026-05-21 | 2026-05-28 | 114 | 2026-05-21 | 2026-05-28 | -495d | 0d |  | Mariana Valdez | 40h | Externo | Planta Baja | Seguimiento |
| 116 | 1.3.15.7 | AA GYM (contemplo conductos) |  | 5d | 2026-05-29 | 2026-06-04 | 115 | 2026-05-29 | 2026-06-04 | -495d | 0d |  | Mariana Valdez | 40h | Externo | Planta Baja | Seguimiento |
| 117 | 1.3.15.8 | KIT INSTALACION AA | milestone | 0d | 2026-04-13 | 2026-04-13 |  | 2026-04-13 | 2026-04-13 | -438d | 0d | start no earlier than 2026-04-13 | Mariana Valdez |  | Externo | Planta Baja | Seguimiento |
| 118 | 1.3.15.9 | Conexión de desagues de bajo siluetas |  | 2d | 2026-04-13 | 2026-04-14 |  | 2026-04-13 | 2026-04-14 | -495d | 0d | start no earlier than 2026-04-13 | Mariana Valdez | 16h | Plomeria | Planta Baja | Seguimiento |
| 119 | 1.3.16 | **INSTALACION CALEFACCIÓN** |  | 0d | 2026-04-13 | 2026-04-13 |  | 2026-04-13 | 2026-04-13 | -438d | 0d |  |  |  |  |  |  |
| 120 | 1.3.16.1 | COLECTOR | milestone | 0d | 2026-04-13 | 2026-04-13 |  | 2026-04-13 | 2026-04-13 | -438d | 0d | start no earlier than 2026-04-13 | Mariana Valdez |  | Externo |  | Seguimiento |
| 121 | 1.3.16.2 | KIT INSTALACION CAÑERIA | milestone | 0d | 2026-04-13 | 2026-04-13 |  | 2026-04-13 | 2026-04-13 | -438d | 0d | start no earlier than 2026-04-13 | Mariana Valdez |  | Externo |  | Seguimiento |
| 122 | 1.3.16.3 | KIT INSTALACION CALDERA Y ELEMENTOS | milestone | 0d | 2026-04-13 | 2026-04-13 |  | 2026-04-13 | 2026-04-13 | -438d | 0d | start no earlier than 2026-04-13 | Mariana Valdez |  | Externo |  | Seguimiento |
| 123 | 1.3.17 | **PINTURA GENERAL*** |  | 33d | 2026-04-13 | 2026-05-29 |  | 2026-04-13 | 2026-05-29 | -471d | 0d |  |  | 936h |  |  |  |
| 124 | 1.3.17.1 | LATEX INTERIOR PSS (LATEX INTERIOR, COLOR BLANCO CRUDO - 30GY 88 / 014 [ALBA]) |  | 5d | 2026-04-13 | 2026-04-17 |  | 2026-04-13 | 2026-04-17 | -443d | 0d | start no earlier than 2026-04-13 | Mariana Valdez | 40h | Pintura | Subsuelo 1 | Seguimiento |
| 125 | 1.3.17.2 | BASE + ESTUCADO INTERIOR PSS (ALBA DESIGN EFECTO CEMENTO, COLOR GRANITO HUMEDO [ALBA]) |  | 8d | 2026-04-13 | 2026-04-22 |  | 2026-04-13 | 2026-04-22 | -446d | 0d | start no earlier than 2026-04-13 | Mariana Valdez | 64h | Pintura | Subsuelo 1 | Seguimiento |
| 126 | 1.3.17.3 | LATEX INTERIOR PSS (base blanca) |  | 3d | 2026-05-13 | 2026-05-15 | 139 | 2026-05-13 | 2026-05-15 | -471d | 0d |  | Mariana Valdez | 24h | Pintura | Subsuelo 1 | Seguimiento |
| 127 | 1.3.17.4 | Planchado de paredes SS |  | 5d | 2026-04-13 | 2026-04-17 |  | 2026-04-13 | 2026-04-17 | -471d | 0d | start no earlier than 2026-04-13 | Mariana Valdez | 40h | Pintura | Subsuelo 1 | Seguimiento |
| 128 | 1.3.17.5 | Latex interior cielorraso durlock SS (definir color) |  | 4d | 2026-04-13 | 2026-04-16 |  | 2026-04-13 | 2026-04-16 | -442d | 0d | start no earlier than 2026-04-13 | Mariana Valdez | 32h | Pintura | Subsuelo 1 | Seguimiento |
| 129 | 1.3.17.6 | LATEX INTERIOR PB (LATEX INTERIOR, COLOR BLANCO CRUDO - 30GY 88 / 014 [ALBA]) |  | 5d | 2026-04-13 | 2026-04-17 |  | 2026-04-13 | 2026-04-17 | -443d | 0d | start no earlier than 2026-04-13 | Mariana Valdez | 40h | Pintura | Planta Baja | Seguimiento |
| 130 | 1.3.17.7 | LATEX INTERIOR PB (base blanca) |  | 3d | 2026-05-18 | 2026-05-20 | 126 | 2026-05-18 | 2026-05-20 | -471d | 0d |  | Mariana Valdez | 24h | Pintura | Planta Baja | Seguimiento |
| 131 | 1.3.17.8 | Planchado de paredes PB |  | 3d | 2026-04-20 | 2026-04-22 | 127 | 2026-04-20 | 2026-04-22 | -471d | 0d |  | Mariana Valdez | 24h | Pintura | Planta Baja | Seguimiento |
| 132 | 1.3.17.9 | Latex interior cielorraso durlock PB (definir color) |  | 5d | 2026-04-13 | 2026-04-17 |  | 2026-04-13 | 2026-04-17 | -443d | 0d | start no earlier than 2026-04-13 | Mariana Valdez | 40h | Pintura | Planta Baja | Seguimiento |
| 133 | 1.3.17.10 | LATEX INTERIOR PA (LATEX INTERIOR, COLOR BLANCO CRUDO - 30GY 88 / 014 [ALBA]) |  | 14d | 2026-04-13 | 2026-04-30 |  | 2026-04-13 | 2026-04-30 | -452d | 0d | start no earlier than 2026-04-13 | Mariana Valdez | 112h | Pintura | Primer Piso | Seguimiento |
| 134 | 1.3.17.11 | BASE + ESTUCADO INTERIOR PA (a definir color) |  | 7d | 2026-04-13 | 2026-04-21 |  | 2026-04-13 | 2026-04-21 | -445d | 0d | start no earlier than 2026-04-13 | Mariana Valdez | 56h | Pintura | Primer Piso | Seguimiento |
| 135 | 1.3.17.12 | LATEX INTERIOR PA (base blanca) |  | 4d | 2026-05-21 | 2026-05-27 | 130 | 2026-05-21 | 2026-05-27 | -471d | 0d |  | Mariana Valdez | 32h | Pintura | Primer Piso | Seguimiento |
| 136 | 1.3.17.13 | Planchado de paredes + cielorraso PA |  | 10d | 2026-04-23 | 2026-05-07 | 131 | 2026-04-23 | 2026-05-07 | -471d | 0d |  | Mariana Valdez | 80h | Pintura | Primer Piso | Seguimiento |
| 137 | 1.3.17.14 | Latex interior cielorraso durlock + yeso PA (definir color) |  | 6d | 2026-04-13 | 2026-04-20 |  | 2026-04-13 | 2026-04-20 | -444d | 0d | start no earlier than 2026-04-13 | Mariana Valdez | 48h | Pintura | Primer Piso | Seguimiento |
| 138 | 1.3.17.15 | LATEX INTERIOR GYM (MUROS Y CIELORRASOS) (base blanca) |  | 5d | 2026-04-13 | 2026-04-17 |  | 2026-04-13 | 2026-04-17 | -443d | 0d | start no earlier than 2026-04-13 | Mariana Valdez | 40h | Pintura | Segundo Piso | Seguimiento |
| 139 | 1.3.17.16 | Planchado de paredes GYM |  | 3d | 2026-05-08 | 2026-05-12 | 136 | 2026-05-08 | 2026-05-12 | -471d | 0d |  | Mariana Valdez | 24h | Pintura | Segundo Piso | Seguimiento |
| 140 | 1.3.17.17 | Latex interior cielorraso yeso GYM (definir color) |  | 2d | 2026-05-28 | 2026-05-29 | 135 | 2026-05-28 | 2026-05-29 | -471d | 0d |  | Mariana Valdez | 16h | Pintura | Segundo Piso | Seguimiento |
| 141 | 1.3.17.18 | Revestimiento plastico (o si va revestimiento de madera, la pintura sobre el fino contemplar) |  | 15d | 2026-04-13 | 2026-05-04 |  | 2026-04-13 | 2026-05-04 | -453d | 0d | start no earlier than 2026-04-13 | Mariana Valdez | 120h | Pintura |  | Seguimiento |
| 142 | 1.3.17.19 | Laca hidrófuga sobre hormigones vistos |  | 10d | 2026-04-13 | 2026-04-24 |  | 2026-04-13 | 2026-04-24 | -448d | 0d | start no earlier than 2026-04-13 | Mariana Valdez | 80h | Pintura |  | Seguimiento |

| ID | WBS | Task | Type | Duration | Start | Finish | Predecessors | Complete | Baseline start | Baseline finish | Baseline duration | Baseline 1 start | Baseline 1 finish | Total slack | Free slack | Constraint | Deadline | Resources | Work | Texto1 | Texto2 | Texto3 |
| --- | --- | --- | --- | --- | --- | --- | --- | --- | --- | --- | --- | --- | --- | --- | --- | --- | --- | --- | --- | --- | --- | --- |
| 143 | 1.3.18 | **YESO EN PAREDES ya se hizo, hay que certificar al 100** |  | 0d | 2024-09-28 A | 2024-09-28 A |  | 100% |  |  |  | 2024-09-28 | 2024-09-28 |  |  |  |  |  |  |  |  |  |
| 144 | 1.3.18.1 | ✔MUROS PLANTA BAJA | milestone | 0d | 2024-09-28 A | 2024-09-28 A |  | 100% |  |  |  | 2024-09-28 | 2024-09-28 |  |  |  |  | Mariana Valdez |  | Albañileria | Planta Baja | Seguimiento |
| 145 | 1.3.18.2 | ✔MUROS PLANTA ALTA | milestone | 0d | 2024-09-28 A | 2024-09-28 A |  | 100% |  |  |  | 2024-09-28 | 2024-09-28 |  |  |  |  | Mariana Valdez |  | Albañileria | Primer Piso | Seguimiento |
| 146 | 1.3.18.3 | ✔CIELORRASO PLANTA ALTA | milestone | 0d | 2024-09-28 A | 2024-09-28 A |  | 100% |  |  |  | 2024-09-28 | 2024-09-28 |  |  |  |  | Mariana Valdez |  | Albañileria | Primer Piso | Seguimiento |
| 147 | 1.3.18.4 | ✔CIELORRASO GYM | milestone | 0d | 2024-09-28 A | 2024-09-28 A |  | 100% |  |  |  | 2024-09-28 | 2024-09-28 |  |  |  |  | Mariana Valdez |  | Albañileria | Segundo Piso | Seguimiento |
| 148 | 1.3.19 | ABERTURAS |  | 5d | 2026-07-15 | 2026-07-21 |  |  |  |  |  | 2026-07-15 | 2026-07-21 | -620d | 0d | start no earlier than 2026-07-15 |  | Mariana Valdez | 40h | Externo |  | Seguimiento |
| 149 | 1.3.20 | ESCALERAS | milestone | 0d | 2026-04-13 | 2026-04-13 |  |  |  |  |  | 2026-04-13 | 2026-04-13 | -438d | 0d | start no earlier than 2026-04-13 |  | Mariana Valdez |  | Albañileria |  | Seguimiento |
| 150 | 1.3.21 | ESCALERA Hº VISTO-GALERIA A PATIO CON DURMIENTES | milestone | 0d | 2026-04-13 | 2026-04-13 |  |  |  |  |  | 2026-04-13 | 2026-04-13 | -438d | 0d | start no earlier than 2026-04-13 |  | Mariana Valdez |  | Albañileria |  | Seguimiento |
| 151 | 1.3.22 | TERRAZA VERDE |  | 10d? | 2026-04-13 | 2026-04-24 |  |  |  |  |  | 2026-04-13 | 2026-04-24 | -448d | 0d | start no earlier than 2026-04-13 |  | Mariana Valdez | 80h |  |  | Seguimiento |
| 152 | 1.3.23 | **ASADOR hecho** |  | 0d | 2026-04-13 | 2026-04-13 |  |  |  |  |  | 2026-04-13 | 2026-04-13 | -438d | 0d |  |  |  |  |  |  |  |
| 153 | 1.3.23.1 | ASADOR | milestone | 0d | 2026-04-13 | 2026-04-13 |  |  |  |  |  | 2026-04-13 | 2026-04-13 | -438d | 0d | start no earlier than 2026-04-13 |  | Mariana Valdez |  | Albañileria | Subsuelo 1 | Seguimiento |
| 154 | 1.3.24 | **BARANDAS faltan - nosotros tenemos que hacer lugar a los anclajes (adicional)** |  | 70d | 2026-05-11 | 2026-08-19 |  |  |  |  |  | 2026-05-11 | 2026-06-22 | -619d | 0d |  |  |  | 1200h |  |  |  |
| 155 | 1.3.24.1 | BARANDAS VIDRIOS h:0,70m (Faltan cotizar normalmente son MAT y MO) |  | 70d | 2026-05-11 | 2026-08-19 | 16 |  |  |  |  | 2026-05-11 | 2026-05-22 | -619d | 0d |  |  | Mariana Valdez | 560h | Externo |  | Seguimiento |
| 156 | 1.3.24.2 | BARANDAS VIDRIOS h:0,90m (Faltan cotizar normalmente son MAT y MO) |  | 40d | 2026-06-23 | 2026-08-19 | 155FF |  |  |  |  | 2026-05-26 | 2026-06-08 | -527d | 0d |  |  | Mariana Valdez | 320h | Externo |  | Seguimiento |
| 157 | 1.3.24.3 | BARANDAS VIDRIOS h:0,70m (Faltan cotizar normalmente son MAT y MO) |  | 40d | 2026-06-23 | 2026-08-19 | 155FF |  |  |  |  | 2026-06-09 | 2026-06-22 | -619d | 0d |  |  | Mariana Valdez | 320h | Externo |  | Seguimiento |
| 158 | 1.3.25 | PÉRGOLAS - CERRAMIENTOS METÁLICOS | milestone | 0d | 2026-04-13 | 2026-04-13 |  |  |  |  |  | 2026-04-13 | 2026-04-13 | -438d | 0d | start no earlier than 2026-04-13 |  | Mariana Valdez |  | Herrería |  | Seguimiento |
| 159 | 1.3.26 | ASCENSOR |  | 10d | 2026-06-19 | 2026-07-02 | 165 |  |  |  |  | 2026-06-19 | 2026-07-02 | -495d | 0d |  |  | Mariana Valdez | 80h | Externo |  | Seguimiento |
| 160 | 1.3.27 | PILETA | milestone | 0d | 2026-04-13 | 2026-04-13 |  |  |  |  |  | 2026-04-13 | 2026-04-13 | -438d | 0d | start no earlier than 2026-04-13 |  | Mariana Valdez |  | Externo | Subsuelo 1 | Seguimiento |
| 161 | 1.3.28 | **ADICIONALES** |  | 572d | 2024-09-30 | 2027-01-26 |  |  |  |  |  | 2024-09-30 | 2027-01-26 | -636d | 0d |  |  |  | 632h |  |  |  |
| 162 | 1.3.28.1 | Revestimeinto de piedra oct25 a dic25 |  | 5d | 2024-09-30 | 2024-10-04 |  |  |  |  |  | 2024-09-30 | 2024-10-04 | -69d | 0d |  |  | Mariana Valdez | 40h | Pedrero | Planta Baja | Seguimiento |
| 163 | 1.3.28.2 | Sala de maquinas - abrir vano, hacer puerta metálica y llevar electricidad |  | 5d | 2027-01-06 | 2027-01-12 | 164 |  |  |  |  | 2027-01-06 | 2027-01-12 | -626d | 0d |  |  | Mariana Valdez | 40h | Albañileria | Subsuelo 1 | Seguimiento |
| 164 | 1.3.28.3 | Paisajismo - colocación de durmientes, y movimientos que hagan falta |  | 10d | 2026-12-21 | 2027-01-05 |  |  |  |  |  | 2026-12-21 | 2027-01-05 | -626d | 0d | start no earlier than 2026-12-21 |  | Mariana Valdez | 80h | Externo |  | Seguimiento |
| 165 | 1.3.28.4 | Durlock - cielorraso |  | 10d | 2026-06-05 | 2026-06-18 | 116 |  |  |  |  | 2026-06-05 | 2026-06-18 | -495d | 0d |  |  | Mariana Valdez | 80h | Durlero |  | Seguimiento |
| 166 | 1.3.28.5 | Durlock - paredes |  | 15d | 2026-05-14 | 2026-06-05 | 165SF |  |  |  |  | 2026-05-14 | 2026-06-05 | -475d | 0d |  |  | Mariana Valdez | 120h | Durlero |  | Seguimiento |
| 167 | 1.3.28.6 | Cordones de adoquines (vigas riostras de contensión) DEFINIR DISEÑO |  | 7d | 2026-05-27 | 2026-06-04 | 70 |  |  |  |  | 2026-05-27 | 2026-06-04 | -475d | 0d |  |  | Mariana Valdez | 56h | Albañileria | Planta Baja | Seguimiento |
| 168 | 1.3.28.7 | Membranas de terrazas y balcones |  | 10d | 2026-09-14 | 2026-09-25 | 20 |  |  |  |  | 2026-07-17 | 2026-07-30 | -619d | 0d |  |  | Mariana Valdez | 80h | Albañileria |  | Seguimiento |
| 169 | 1.3.28.8 | Romper contrapiso de cochera |  | 5d | 2024-09-30 | 2024-10-04 |  |  |  |  |  | 2024-09-30 | 2024-10-04 | -69d | 0d |  |  | Mariana Valdez | 40h | Albañileria | Subsuelo 1 | Seguimiento |
| 170 | 1.3.28.9 | Rehacer contrapiso de cochera |  | 5d | 2024-09-30 | 2024-10-04 |  |  |  |  |  | 2024-09-30 | 2024-10-04 | -69d | 0d |  |  | Mariana Valdez | 40h | Albañileria | Subsuelo 1 | Seguimiento |
| 171 | 1.3.28.10 | Realizar pruebas hidraulicas de todas las instalaciones. (agua/ cloaca/ pluviales/ gas) |  | 3d | 2026-05-04 | 2026-05-06 |  |  |  |  |  | 2026-05-04 | 2026-05-06 | -455d | 0d | start no earlier than 2026-05-04 |  | Mariana Valdez | 24h | Plomeria |  | Seguimiento |
| 172 | 1.3.28.11 | Desmalezado y corte de cesped |  | 1d | 2026-05-04 | 2026-05-04 |  |  |  |  |  | 2026-05-04 | 2026-05-04 | -453d | 0d | start no earlier than 2026-05-04 |  | Mariana Valdez | 8h | Externo |  | Seguimiento |
| 173 | 1.3.28.12 | Realizar limpieza de Hormigon/mantenimiento |  | 3d | 2026-05-04 | 2026-05-06 |  |  |  |  |  | 2026-05-04 | 2026-05-06 | -455d | 0d | start no earlier than 2026-05-04 |  | Mariana Valdez | 24h | Albañileria |  | Seguimiento |
| 174 | 1.3.28.13 | Colocación de muebles |  | 5d | 2027-01-20 | 2027-01-26 |  |  |  |  |  | 2027-01-20 | 2027-01-26 | -643d | 0d | start no earlier than 2027-01-20 |  |  |  | Externo |  | Seguimiento |
| 175 | 1.4 | StandBy - Cliente solicito frenar |  | 102d | 2025-11-03 | 2026-04-01 |  |  |  |  |  | 2025-11-03 | 2026-04-01 | 458d |  | start no earlier than 2025-11-03 |  |  |  |  |  |  |
| 176 | 1.5 | Posventa Pasiva |  | 12emo | 2027-02-04 | 2028-01-30 | 4 |  | 2025-04-02 | 2025-06-02 | 0.49emo | 2027-02-04 | 2028-01-30 | -2847d | 0d |  |  | Posventa | 8640h |  |  |  |
| 177 | 1.6 | Fin Postventa | milestone | 0d | 2028-01-30 | 2028-01-30 | 176 |  | 2025-06-02 | 2025-06-02 |  | 2028-01-30 | 2028-01-30 | -649d | 0d |  | 2025-06-25 | Posventa |  |  |  |  |
| 178 | 1.7 | Firma Acta recepcion Provisoria |  | 1d | 2024-09-30 | 2024-09-30 |  |  | 2027-03-05 | 2027-03-05 |  | 2024-09-30 | 2024-09-30 | 578d | 0d |  |  | Mariana Valdez | 8h |  |  |  |
| 179 | 1.8 | Posventa |  | 12emo | 2024-09-30 | 2025-09-25 | 178 |  | 2027-03-05 | 2028-02-28 | 12emo | 2024-09-30 | 2025-09-25 | 2571d |  |  |  | Posventa | 8640h |  |  |  |
