# Vivienda Reboni - base

Schedule from MS Project XML, 2024-01-01 to 2028-04-28, A marks actual dates.

## Calendars

- Calendario Argentino 2024: Mon-Fri 09:00-13:00, 15:00-19:00; Sat-Sun off. Exceptions (off unless hours are given): 2024-07-09 (Día de la Independencia), 2024-10-11 (Feriado con fines turísticos), 2024-11-18 (Día de la Soberanía Nacional (20/11)), 2024-12-25 to 2033-12-25 (Navidad, recurring), 2025-01-01 to 2034-01-01 (Año nuevo 2025, recurring), 2025-02-10 to 2034-02-10 (Carnaval 2025, recurring), 2025-03-24 to 2034-03-24 (Día Nacional de la Memoria por la Verdad y la Justicia, recurring), 2025-03-28 (Viernes Santo), 2025-04-02 to 2034-04-02 (Día del Veterano y de los Caídos en la Guerra de Malvinas, recurring), 2025-05-01 to 2034-05-01 (Día del Trabajador, recurring), 2025-05-25 to 2034-05-25 (Dia de la revolucion de Mayo, recurring), 2025-06-20 to 2034-06-20 (Día de la Bandera, recurring), 2025-07-09 to 2034-07-09 (Día de la Independencia, recurring), 2025-08-18 to 2034-08-18 (Paso a la Inmortalidad del Gral. José de San Martín (17/08), recurring), 2025-10-13 to 2034-10-13 (Día del Respeto a la Diversidad Cultural (12/10), recurring), 2025-11-18 to 2034-11-18 (Día de la Soberanía Nacional (20/11), recurring), 2025-12-08 to 2034-12-08 (Día de la Virgen, recurring).

## Resources

| Resource |
| --- |
| Gabriela Rojo |
| Obras |
| Posventa |
| Proyectos |
| Mariana V |

## Schedule

| ID | WBS | Task | Type | Duration | Start | Finish | Predecessors | Complete | Remaining | Baseline start | Baseline finish | Baseline duration | Total slack | Free slack | Constraint | Resources | Work | Actual work | Número1 |
| --- | --- | --- | --- | --- | --- | --- | --- | --- | --- | --- | --- | --- | --- | --- | --- | --- | --- | --- | --- |
| 1 | 1 | **VIVIENDA REBONI** |  | 1083d | 2024-01-01 A | 2028-04-28 |  | 41% | 644.36d | 2024-04-22 | 2028-02-26 | 959d | 0d |  |  |  | 30136h | 12244.8h |  |
| 2 | 1.1 | **✔Presupuestación** |  | 27d | 2024-04-22 A | 2024-05-28 A |  | 100% |  | 2024-04-22 | 2024-05-28 | 27d |  |  |  |  | 272h | 272h |  |
| 3 | 1.1.1 | ✔Recepción de Legajo | milestone | 0d | 2024-04-22 A | 2024-04-22 A |  | 100% |  | 2024-04-22 | 2024-04-22 |  |  |  | start no earlier than 2024-04-22 | Gabriela Rojo |  |  |  |
| 4 | 1.1.2 | ✔Cómputo Métrico |  | 15d | 2024-04-22 A | 2024-05-10 A | 3 | 100% |  | 2024-04-22 | 2024-05-10 | 15d |  |  |  | Proyectos | 120h | 120h |  |
| 5 | 1.1.3 | ✔Cotización Mano de Obra |  | 12d | 2024-05-02 A | 2024-05-17 A | 4FF+5d | 100% |  | 2024-05-02 | 2024-05-17 | 12d |  |  |  | Proyectos | 96h | 96h |  |
| 6 | 1.1.4 | ✔Aceptación Obra y Firma de Contrato |  | 7d | 2024-05-20 A | 2024-05-28 A | 4, 5 | 100% |  | 2024-05-20 | 2024-05-28 | 7d |  |  |  | Proyectos | 56h | 56h |  |
| 7 | 1.2 | **✔Armado de Documentación y Compra Materiales** |  | 28d | 2024-05-29 A | 2024-07-05 A |  | 100% |  | 2024-05-29 | 2024-07-05 | 28d |  |  |  |  | 480h | 480h |  |
| 8 | 1.2.1 | ✔Armado de Documentacion - Apto para Gestiones |  | 4d | 2024-05-29 A | 2024-06-03 A | 6 | 100% |  | 2024-05-29 | 2024-06-03 | 4d |  |  |  | Proyectos | 32h | 32h |  |
| 9 | 1.2.2 | ✔Armado de Documentación - Apto para Construcción |  | 28d | 2024-05-29 A | 2024-07-05 A | 6 | 100% |  | 2024-05-29 | 2024-07-05 | 28d |  |  |  | Proyectos | 224h | 224h |  |
| 10 | 1.2.3 | ✔Confeccion de presupuestos de materiales y acopios. |  | 28d | 2024-05-29 A | 2024-07-05 A | 6 | 100% |  | 2024-05-29 | 2024-07-05 | 28d |  |  |  | Proyectos | 224h | 224h |  |
| 11 | 1.3 | **✔Gestiones** |  | 24d | 2024-06-04 A | 2024-07-05 A |  | 100% |  | 2024-06-04 | 2024-07-05 | 24d |  |  |  |  | 464h | 464h |  |
| 12 | 1.3.1 | ✔Gestiones CAPC |  | 24d | 2024-06-04 A | 2024-07-05 A | 8 | 100% |  | 2024-06-04 | 2024-07-05 | 24d |  |  |  | Gabriela Rojo | 192h | 192h |  |
| 13 | 1.3.2 | ✔Gestiones Municipales |  | 24d | 2024-06-04 A | 2024-07-05 A | 8 | 100% |  | 2024-06-04 | 2024-07-05 | 24d |  |  |  | Gabriela Rojo | 192h | 192h |  |
| 14 | 1.3.3 | ✔Gestiones de Personal |  | 10d | 2024-06-24 A | 2024-07-05 A | 12FF, 13FF | 100% |  | 2024-06-24 | 2024-07-05 | 10d |  |  |  | Gabriela Rojo | 80h | 80h |  |
| 15 | 1.4 | Contrato Obra Vivienda Reboni |  | 692d | 2024-01-01 A | 2026-08-25 |  | 42% | 401.36d | 2024-07-09 | 2027-03-03 | 692d | 422d |  |  | Mariana V | 5536h | 2325.12h |  |
| 16 | 1.5 | **Obra Vivienda Reboni** |  | 698d | 2024-07-05 A | 2027-05-04 |  | 42% | 406.6d | 2024-07-05 | 2027-03-03 | 656d | 250d |  |  |  | 20752h | 8703.68h |  |
| 17 | 1.5.1 | ✔Firma Acta Inicio de Obra | milestone | 0d | 2024-07-05 A | 2024-07-05 A | 11 | 100% |  | 2024-07-05 | 2024-07-05 |  |  |  |  | Obras |  |  |  |
| 18 | 1.5.2 | Obra Vivienda Reboni |  | 698d | 2024-07-08 A | 2027-03-10 |  | 42% | 404.84d |  |  |  | 287d |  | start no earlier than 2024-07-08 | Mariana V | 5584h | 2345.28h |  |
| 19 | 1.5.3 | **Obra Vivienda Reboni** |  | 698d | 2024-07-08 A | 2027-05-04 | 11, 7 | 42% | 407.24d | 2024-07-08 | 2027-03-03 | 656d | -213d | 0d |  |  | 15168h | 6358.4h |  |
| 20 | 1.5.3.1 | **TAREAS PRELIMINARES** |  | 5d | 2024-07-08 A | 2024-07-15 A |  | 100% |  | 2024-07-08 | 2024-07-15 | 5d |  |  |  |  | 48h | 48h | 8 |
| 21 | 1.5.3.1.1 | ✔Limpieza y desmalezamiento |  | 1d | 2024-07-08 A | 2024-07-08 A |  | 100% |  | 2024-07-08 | 2024-07-08 | 1d |  |  |  | Mariana V | 8h | 8h | 1 |
| 22 | 1.5.3.1.2 | ✔Amojonamiento |  | 1d | 2024-07-09 A | 2024-07-09 A | 21 | 100% |  | 2024-07-09 | 2024-07-09 | 1d |  |  |  | Mariana V | 8h | 8h | 1 |
| 23 | 1.5.3.1.3 | ✔Cerco de obra |  | 4d | 2024-07-10 A | 2024-07-15 A | 22 | 100% |  | 2024-07-10 | 2024-07-15 | 4d |  |  |  | Mariana V | 32h | 32h | 6 |
| 24 | 1.5.3.2 | **MOVIMIENTO DE SUELO** |  | 10d | 2024-07-16 A | 2024-07-29 A |  | 100% |  | 2024-07-16 | 2024-07-29 | 10d |  |  |  |  | 80h | 80h | 23 |
| 25 | 1.5.3.2.1 | ✔Nivelacion y compactacion |  | 10d | 2024-07-16 A | 2024-07-29 A | 23 | 100% |  | 2024-07-16 | 2024-07-29 | 10d |  |  |  | Mariana V | 80h | 80h | 14 |

| ID | WBS | Task | Duration | Start | Finish | Predecessors | Complete | Remaining | Baseline start | Baseline finish | Baseline duration | Total slack | Resources | Work | Actual work | Número1 |
| --- | --- | --- | --- | --- | --- | --- | --- | --- | --- | --- | --- | --- | --- | --- | --- | --- |
| 26 | 1.5.3.3 | **REPLANTEO** | 32d | 2024-07-30 A | 2024-09-11 A |  | 100% |  | 2024-07-30 | 2024-09-11 | 32d |  |  | 72h | 72h | 67 |
| 27 | 1.5.3.3.1 | ✔Armado Corralito | 5d | 2024-07-30 A | 2024-08-05 A | 25 | 100% |  | 2024-07-30 | 2024-08-05 | 5d |  | Mariana V | 40h | 40h | 7 |
| 28 | 1.5.3.3.2 | ✔Replanteo Pozos | 1d | 2024-08-06 A | 2024-08-06 A | 27 | 100% |  | 2024-08-06 | 2024-08-06 | 1d |  | Mariana V | 8h | 8h | 1 |
| 29 | 1.5.3.3.3 | ✔Replanteo Vigas de fundacion | 1d | 2024-08-21 A | 2024-08-21 A | 34 | 100% |  | 2024-08-21 | 2024-08-21 | 1d |  | Mariana V | 8h | 8h | 1 |
| 30 | 1.5.3.3.4 | ✔Replanteo de Columnas y Encadenados | 1d | 2024-09-06 A | 2024-09-06 A | 36SF+12d | 100% |  | 2024-09-06 | 2024-09-06 | 1d |  | Mariana V | 8h | 8h | 1 |
| 31 | 1.5.3.3.5 | ✔Replanteo Mamposteria | 1d | 2024-09-11 A | 2024-09-11 A | 36 | 100% |  | 2024-09-11 | 2024-09-11 | 1d |  | Mariana V | 8h | 8h | 1 |
| 32 | 1.5.3.4 | **ESTRUCTURA** | 214d | 2024-08-07 A | 2025-06-24 |  | 98% | 3.44d | 2024-08-07 | 2025-06-24 | 214d | 250d |  | 2240h | 2204h | 376 |
| 33 | 1.5.3.4.1 | **Fundaciones** | 25d | 2024-08-07 A | 2024-09-10 A |  | 100% |  | 2024-08-07 | 2024-09-10 | 25d |  |  | 216h | 216h | 66 |
| 34 | 1.5.3.4.1.1 | ✔Pozos romanos | 10d | 2024-08-07 A | 2024-08-20 A | 28 | 100% |  | 2024-08-07 | 2024-08-20 | 10d |  | Mariana V | 80h | 80h | 14 |
| 35 | 1.5.3.4.1.2 | ✔Cabezales | 3d | 2024-08-22 A | 2024-08-26 A | 29 | 100% |  | 2024-08-22 | 2024-08-26 | 3d |  | Mariana V | 24h | 24h | 5 |
| 36 | 1.5.3.4.1.3 | ✔Vigas de fundacion | 14d | 2024-08-22 A | 2024-09-10 A | 29 | 100% |  | 2024-08-22 | 2024-09-10 | 14d |  | Mariana V | 112h | 112h | 20 |
| 37 | 1.5.3.4.2 | **Columnas** | 166d | 2024-10-03 A | 2025-06-12 |  | 68% | 53.36d | 2024-10-03 | 2025-06-12 | 166d | 257d |  | 112h | 76h | 365 |
| 38 | 1.5.3.4.2.1 | ✔Columnas PB | 8d | 2024-10-03 A | 2024-10-14 A | 59SS | 100% |  | 2024-10-03 | 2024-10-14 | 8d |  | Mariana V | 64h | 64h | 12 |
| 39 | 1.5.3.4.2.2 | Columnas PA | 5d | 2025-02-27 A | 2025-03-05 | 53 | 10% | 4.5d | 2025-02-27 | 2025-03-05 | 5d | 324d | Mariana V | 40h | 4h | 5 |
| 40 | 1.5.3.4.2.3 | ✔Columnas Tanque | 1d | 2025-06-12 A | 2025-06-12 A | 54 | 100% |  | 2025-06-12 | 2025-06-12 | 1d |  | Mariana V | 8h | 8h | 1 |
| 41 | 1.5.3.4.3 | **Encadenados Verticales** | 167d | 2024-10-03 A | 2025-06-13 A |  | 100% |  | 2024-10-03 | 2025-06-13 | 167d |  |  | 112h | 112h | 366 |
| 42 | 1.5.3.4.3.1 | ✔Encadenados verticales PB | 9d | 2024-10-03 A | 2024-10-15 A | 59SS | 100% |  | 2024-10-03 | 2024-10-15 | 9d |  | Mariana V | 72h | 72h | 13 |
| 43 | 1.5.3.4.3.2 | ✔Encadenados verticales PA | 3d | 2025-02-27 A | 2025-03-03 A | 53 | 100% |  | 2025-02-27 | 2025-03-03 | 3d |  | Mariana V | 24h | 24h | 3 |
| 44 | 1.5.3.4.3.3 | ✔Encadenados verticales tanque | 2d | 2025-06-12 A | 2025-06-13 A | 54 | 100% |  | 2025-06-12 | 2025-06-13 | 2d |  | Mariana V | 16h | 16h | 2 |
| 45 | 1.5.3.4.4 | **Vigas** | 130d | 2024-12-05 A | 2025-06-24 A |  | 100% |  | 2024-12-05 | 2025-06-24 | 130d |  |  | 744h | 744h | 376 |
| 46 | 1.5.3.4.4.1 | ✔Vigas PB | 50d | 2024-12-05 A | 2025-02-12 A | 59 | 100% |  | 2024-12-05 | 2025-02-12 | 50d |  | Mariana V | 400h | 400h | 81 |
| 47 | 1.5.3.4.4.2 | ✔Vigas PA | 35d | 2025-04-17 A | 2025-06-04 A | 60 | 100% |  | 2025-04-17 | 2025-06-04 | 35d |  | Mariana V | 280h | 280h | 49 |
| 48 | 1.5.3.4.4.3 | ✔Vigas Tanque | 8d | 2025-06-13 A | 2025-06-24 A | 40 | 100% |  | 2025-06-13 | 2025-06-24 | 8d |  | Mariana V | 64h | 64h | 11 |
| 49 | 1.5.3.4.5 | **Encadenados Horizontales** | 91d | 2024-12-05 A | 2025-04-28 A |  | 100% |  | 2024-12-05 | 2025-04-28 | 91d |  |  | 184h | 184h | 317 |
| 50 | 1.5.3.4.5.1 | ✔Encad. Hor. PB | 15d | 2024-12-05 A | 2024-12-25 A | 59 | 100% |  | 2024-12-05 | 2024-12-25 | 15d |  | Mariana V | 120h | 120h | 31 |
| 51 | 1.5.3.4.5.2 | ✔Encad. Hor. PA | 8d | 2025-04-17 A | 2025-04-28 A | 60 | 100% |  | 2025-04-17 | 2025-04-28 | 8d |  | Mariana V | 64h | 64h | 12 |

| ID | WBS | Task | Duration | Start | Finish | Predecessors | Complete | Remaining | Baseline start | Baseline finish | Baseline duration | Total slack | Free slack | Constraint | Resources | Work | Actual work | Número1 |
| --- | --- | --- | --- | --- | --- | --- | --- | --- | --- | --- | --- | --- | --- | --- | --- | --- | --- | --- |
| 52 | 1.5.3.4.6 | **Losas** | 128d | 2024-12-05 A | 2025-06-19 A |  | 100% |  | 2024-12-05 | 2025-06-19 | 128d |  |  |  |  | 872h | 872h | 372 |
| 53 | 1.5.3.4.6.1 | ✔Losa PB | 60d | 2024-12-05 A | 2025-02-26 A | 59 | 100% |  | 2024-12-05 | 2025-02-26 | 60d |  |  |  | Mariana V | 480h | 480h | 95 |
| 54 | 1.5.3.4.6.2 | ✔Losa PA | 40d | 2025-02-12 A | 2025-04-08 A | 60FS-43d | 100% |  | 2025-04-17 | 2025-06-11 | 40d |  |  |  | Mariana V | 320h | 320h | 57 |
| 55 | 1.5.3.4.6.3 | ✔Losa Tanque | 9d | 2025-06-09 A | 2025-06-19 A | 40FS-4d | 100% |  | 2025-06-13 | 2025-06-19 | 5d |  |  |  | Mariana V | 72h | 72h | 7 |
| 56 | 1.5.3.5 | **ALBAÑILERIA** | 346d | 2024-09-12 A | 2026-02-11 |  | 51% | 168.52d | 2024-07-08 | 2025-11-05 | 328d | 92d |  |  |  | 3400h | 1744h | 513 |
| 57 | 1.5.3.5.1 | **Mamposteria** | 220d | 2024-09-12 A | 2025-08-08 |  | 81% | 42.52d | 2024-09-12 | 2025-04-16 | 141d | 218d |  |  |  | 952h | 768h | 304 |
| 58 | 1.5.3.5.1.1 | ✔Mamposteria Nivelacion | 5d | 2024-09-12 A | 2024-09-18 A | 31 | 100% |  | 2024-09-12 | 2024-09-18 | 5d |  |  |  | Mariana V | 40h | 40h | 7 |
| 59 | 1.5.3.5.1.2 | Mamposteria PB | 45d | 2024-10-03 A | 2024-12-04 | 66 | 90% | 4.5d | 2024-10-03 | 2024-12-04 | 45d | 380d |  |  | Mariana V | 360h | 324h | 67 |
| 60 | 1.5.3.5.1.3 | Mamposteria PA | 35d | 2025-02-27 A | 2025-04-16 | 53 | 90% | 3.5d | 2025-02-27 | 2025-04-16 | 35d | 297d |  |  | Mariana V | 280h | 252h | 52 |
| 61 | 1.5.3.5.1.4 | Muros tabiques 8cm | 10d | 2025-07-28 | 2025-08-08 | 117 |  |  |  |  |  | 218d |  | start no earlier than 2025-07-14 | Mariana V | 80h |  |  |
| 62 | 1.5.3.5.1.5 | Muros de rafa 12cm | 5d | 2025-07-14 | 2025-07-18 |  |  |  |  |  |  | 233d |  | start no earlier than 2025-07-14 | Mariana V | 40h |  |  |
| 63 | 1.5.3.5.1.6 | ✔Parapetos Losa PB | 19d | 2025-06-02 A | 2025-06-26 A |  | 100% |  |  |  |  |  |  | start no earlier than 2025-06-02 | Mariana V | 152h | 152h |  |
| 64 | 1.5.3.5.2 | **Aislacion Muros** | 10d | 2024-09-19 A | 2024-10-02 A |  | 100% |  | 2024-09-19 | 2024-10-02 | 10d |  |  |  |  | 104h | 104h | 88 |
| 65 | 1.5.3.5.2.1 | ✔Capa aisladora horizontal | 3d | 2024-09-19 A | 2024-09-23 A | 58 | 100% |  | 2024-09-19 | 2024-09-23 | 3d |  |  |  | Mariana V | 24h | 24h | 5 |
| 66 | 1.5.3.5.2.2 | ✔Capa aisladora vertical | 10d | 2024-09-19 A | 2024-10-02 A | 58 | 100% |  | 2024-09-19 | 2024-10-02 | 10d |  |  |  | Mariana V | 80h | 80h | 14 |
| 67 | 1.5.3.5.3 | **Contrapiso** | 180d | 2024-10-25 | 2025-07-25 |  |  |  | 2024-07-08 | 2025-03-04 | 159.88d | 121d |  |  |  | 224h |  | 241 |
| 68 | 1.5.3.5.3.1 | Contrapiso Interior | 16d | 2024-10-25 | 2025-03-04 | 66FS+15d |  |  | 2024-10-25 | 2025-03-04 | 16d | 121d | 0d |  | Mariana V | 128h |  | 129 |
| 69 | 1.5.3.5.3.2 | Contrapiso Exterior | 12d | 2025-07-10 | 2025-07-25 |  |  |  | 2024-07-08 | 2024-07-12 | 5d | 208d | 0d | start no earlier than 2025-07-10 | Mariana V | 96h |  | 5 |
| 70 | 1.5.3.5.4 | **Carpeta de Nivelación** | 23d | 2025-07-28 | 2025-08-28 |  |  |  | 2025-09-15 | 2025-10-02 | 14d | -132d | 0d |  |  | 224h |  | 478 |
| 71 | 1.5.3.5.4.1 | Carpeta de Nivelación PB | 10d | 2025-08-11 | 2025-08-22 | 134 |  |  | 2025-09-15 | 2025-09-26 | 10d | 180d | 0d |  | Mariana V | 80h |  | 15 |
| 72 | 1.5.3.5.4.2 | Carpeta de Nivelación PA + Cubierta PB | 8d | 2025-08-19 | 2025-08-28 | 135 |  |  | 2025-09-23 | 2025-10-02 | 8d | -147d | 0d |  | Mariana V | 64h |  | 13 |
| 73 | 1.5.3.5.4.3 | Carpeta de nivelación sobre Cubierta PA | 10d | 2025-07-28 | 2025-08-08 | 69, 77 |  |  |  |  |  | 208d | 0d |  | Mariana V | 80h |  |  |
| 74 | 1.5.3.5.5 | **Aislacion Cubiertas** | 38d | 2025-06-24 A | 2025-08-15 |  | 9% | 34.55d | 2025-07-28 | 2025-08-26 | 21d | 213d |  |  |  | 88h | 8h | 438 |
| 75 | 1.5.3.5.5.1 | Hormigon de Pendiente PB | 1d | 2025-07-25 | 2025-07-25 | 69FF |  |  | 2025-07-28 | 2025-08-06 | 8d | 228d |  |  | Mariana V | 8h |  | 11 |
| 76 | 1.5.3.5.5.2 | Colocacion Membrana asfaltica PB | 5d | 2025-08-11 | 2025-08-15 | 78SS |  |  | 2025-08-14 | 2025-08-20 | 5d | 213d |  |  | Mariana V | 40h |  | 5 |
| 77 | 1.5.3.5.5.3 | ✔Hormigon de pendiente PA | 1d | 2025-06-24 A | 2025-06-24 A | 122 | 100% |  | 2025-07-30 | 2025-08-06 | 6d |  |  |  | Mariana V | 8h | 8h | 9 |
| 78 | 1.5.3.5.5.4 | Colocacion de membrana PA | 4d | 2025-08-11 | 2025-08-14 | 73 |  |  | 2025-08-21 | 2025-08-26 | 4d | 213d | 0d |  | Mariana V | 32h |  | 4 |

| ID | WBS | Task | Duration | Start | Finish | Predecessors | Complete | Remaining | Baseline start | Baseline finish | Baseline duration | Total slack | Free slack | Constraint | Resources | Work | Actual work | Número1 |
| --- | --- | --- | --- | --- | --- | --- | --- | --- | --- | --- | --- | --- | --- | --- | --- | --- | --- | --- |
| 79 | 1.5.3.5.6 | **Revoques** | 212d | 2025-04-01 A | 2026-02-04 |  | 65% | 73.63d | 2025-06-12 | 2025-11-05 | 101d | 96d |  |  |  | 1048h | 684h | 513 |
| 80 | 1.5.3.5.6.1 | Revoque grueso exterior | 42d | 2025-05-22 A | 2025-07-18 | 54FS-15d | 75% | 10.5d | 2025-06-12 | 2025-07-23 | 30d | 185d | 0d |  | Mariana V | 336h | 252h | 43 |
| 81 | 1.5.3.5.6.2 | Revoque Fino Exterior | 15d | 2025-07-21 | 2025-08-08 | 80 |  |  | 2025-07-24 | 2025-08-13 | 15d | 189d | 0d |  | Mariana V | 120h |  | 22 |
| 82 | 1.5.3.5.6.3 | ✔Revoque grueso interior | 54d | 2025-04-01 A | 2025-06-13 A |  | 100% |  | 2025-08-14 | 2025-10-08 | 40d |  |  | start no earlier than 2025-04-01 | Mariana V | 432h | 432h | 57 |
| 83 | 1.5.3.5.6.4 | Enlucido de yeso interior ETAPA 1 | 10d | 2025-08-29 | 2025-09-11 | 70 |  |  | 2025-10-09 | 2025-11-05 | 20d | 195d |  |  | Mariana V | 80h |  | 29 |
| 84 | 1.5.3.5.6.5 | Enlucido de yeso interior etapa 2 | 10d | 2026-01-22 | 2026-02-04 | 169 |  |  |  |  |  | 96d |  |  | Mariana V | 80h |  |  |
| 85 | 1.5.3.5.7 | **Cielorraso** | 19d | 2026-01-15 | 2026-02-11 |  |  |  | 2025-09-29 | 2025-10-31 | 24d | 91d |  |  |  | 400h |  | 508 |
| 86 | 1.5.3.5.7.1 | Cielorraso suspendido de madera PB | 10d | 2026-01-15 | 2026-01-28 | 131 |  |  | 2025-09-29 | 2025-10-10 | 10d | 101d |  |  | Mariana V | 80h |  | 14 |
| 87 | 1.5.3.5.7.2 | Cielorraso yeso aplicado PB | 20d | 2026-01-15 | 2026-02-11 | 131 |  |  | 2025-09-29 | 2025-10-24 | 20d | 91d |  |  | Mariana V | 160h |  | 28 |
| 88 | 1.5.3.5.7.3 | Cielorraso suspendido de madera PA | 15d | 2026-01-15 | 2026-02-04 | 131 |  |  | 2025-10-13 | 2025-10-31 | 15d | 96d |  |  | Mariana V | 120h |  | 22 |
| 89 | 1.5.3.5.7.4 | Cielorraso yeso aplicado PA | 5d | 2026-01-15 | 2026-01-21 | 131 |  |  | 2025-10-27 | 2025-10-31 | 5d | 106d |  |  | Mariana V | 40h |  | 8 |
| 90 | 1.5.3.5.8 | **Escaleras** | 94d | 2025-04-09 A | 2025-08-22 |  | 55% | 42.73d | 2025-06-12 | 2025-06-27 | 11d | 209d |  |  |  | 176h | 96h | 381 |
| 91 | 1.5.3.5.8.1 | ✔Escalera interior PB a PA | 12d | 2025-04-09 A | 2025-04-24 A | 54 | 100% |  | 2025-06-12 | 2025-06-27 | 12d |  |  |  | Mariana V | 96h | 96h | 17 |
| 92 | 1.5.3.5.8.2 | Escalera Exterior PB a PA | 10d | 2025-08-11 | 2025-08-22 | 134 |  |  |  |  |  | 208d |  |  | Mariana V | 80h |  |  |
| 93 | 1.5.3.5.9 | **Asador** | 80d | 2025-04-09 A | 2025-08-01 |  | 44% | 44.44d | 2025-06-12 | 2025-06-23 | 7d | 223d |  |  |  | 144h | 64h | 375 |
| 94 | 1.5.3.5.9.1 | ✔Asador Galeria | 8d | 2025-04-09 A | 2025-04-18 A | 54 | 100% |  | 2025-06-12 | 2025-06-23 | 8d |  |  |  | Mariana V | 64h | 64h | 11 |
| 95 | 1.5.3.5.9.2 | Finalización Asador Galeria | 10d | 2025-07-21 | 2025-08-01 | 126 |  |  |  |  |  | 223d |  |  | Mariana V | 80h |  |  |
| 96 | 1.5.3.5.10 | **Veredas perimetrales** | 5d | 2025-08-19 A | 2025-08-25 |  | 50% | 2.5d | 2025-09-23 | 2025-09-29 | 5d | 208d |  |  |  | 40h | 20h | 473 |
| 97 | 1.5.3.5.10.1 | Veredas perimetrales 40cm | 5d | 2025-08-19 A | 2025-08-25 | 72SS | 50% | 2.5d | 2025-09-23 | 2025-09-29 | 5d | 208d |  |  | Mariana V | 40h | 20h | 8 |
| 98 | 1.5.3.6 | **HERRERIA** | 292d | 2024-11-13 A | 2026-01-26 |  | 31% | 200.75d | 2024-11-13 | 2025-09-10 | 199d | 103d |  |  |  | 384h | 120h | 457 |
| 99 | 1.5.3.6.1 | **Columnas y vigas metalicas** | 68d | 2024-11-13 A | 2025-02-28 A |  | 100% |  | 2024-11-13 | 2025-02-28 | 68d |  |  |  |  | 104h | 104h | 254 |
| 100 | 1.5.3.6.1.1 | ✔Columnas metalicas PB | 8d | 2024-11-13 A | 2024-11-22 A | 59FS-15d | 100% |  | 2024-11-13 | 2024-11-22 | 8d |  |  |  | Mariana V | 64h | 64h | 11 |
| 101 | 1.5.3.6.1.2 | ✔Vigas metalicas PB | 3d | 2025-02-13 A | 2025-02-17 A | 53FS-10d | 100% |  | 2025-02-13 | 2025-02-17 | 3d |  |  |  | Mariana V | 24h | 24h | 3 |
| 102 | 1.5.3.6.1.3 | ✔Columnas metalicas PA | 2d | 2025-02-27 A | 2025-02-28 A | 53 | 100% |  | 2025-02-27 | 2025-02-28 | 2d |  |  |  | Mariana V | 16h | 16h | 2 |

| ID | WBS | Task | Duration | Start | Finish | Predecessors | Complete | Remaining | Baseline start | Baseline finish | Baseline duration | Total slack | Free slack | Constraint | Resources | Work | Actual work | Número1 |
| --- | --- | --- | --- | --- | --- | --- | --- | --- | --- | --- | --- | --- | --- | --- | --- | --- | --- | --- |
| 103 | 1.5.3.6.2 | **Conductos Metalicos** | 2d | 2025-06-18 A | 2025-06-19 A |  | 100% |  | 2025-06-24 | 2025-06-25 | 2d |  |  |  |  | 16h | 16h | 379 |
| 104 | 1.5.3.6.2.1 | ✔Conducto Asador PB | 2d | 2025-06-18 A | 2025-06-19 A | 94FS+41d | 100% |  | 2025-06-24 | 2025-06-25 | 2d |  |  |  | Mariana V | 16h | 16h | 4 |
| 105 | 1.5.3.6.3 | **Cerramiento Metalico** | 29d | 2025-08-11 | 2025-09-19 |  |  |  | 2025-08-14 | 2025-09-10 | 19d | 189d |  |  |  | 240h |  | 457 |
| 106 | 1.5.3.6.3.1 | Cerramiento chapa acanalada negra | 30d | 2025-08-11 | 2025-09-19 | 81 |  |  | 2025-08-14 | 2025-09-10 | 20d | 189d |  |  | Mariana V | 240h |  | 28 |
| 107 | 1.5.3.6.4 | **Porton Metalico** | 3d | 2026-01-22 | 2026-01-26 |  |  |  | 2025-08-14 | 2025-08-18 | 2d | 103d |  |  |  | 24h |  | 432 |
| 108 | 1.5.3.6.4.1 | Chapa perforada de 8mm calibre 18 | 3d | 2026-01-22 | 2026-01-26 | 166 |  |  | 2025-08-14 | 2025-08-18 | 3d | 103d |  |  | Mariana V | 24h |  | 3 |
| 109 | 1.5.3.7 | **INSTALACIONES** | 621d | 2024-10-25 A | 2027-05-04 |  | 48% | 322.71d | 2024-10-25 | 2027-03-03 | 579d | -213d | 0d |  |  | 4256h | 2090.4h | 1020 |
| 110 | 1.5.3.7.1 | **Instalaciones pluviales** | 204.8d | 2024-10-25 A | 2025-09-01 |  | 65% | 71.77d | 2024-10-25 | 2025-06-04 | 145d | 203.2d |  |  |  | 904h | 587.2h | 354 |
| 111 | 1.5.3.7.1.1 | Desague Pluvial Planta baja | 44d | 2024-10-25 A | 2025-07-30 | 113 | 80% | 8.8d | 2024-10-25 | 2024-10-31 | 5d | 203d | 0.8d |  | Mariana V | 352h | 281.6h | 5 |
| 112 | 1.5.3.7.1.2 | Desague pluviales Planta Alta | 44d | 2025-02-13 A | 2025-07-31 | 113 | 80% | 8.8d | 2025-02-13 | 2025-02-18 | 4d | 202.2d | 0d |  | Mariana V | 352h | 281.6h | 4 |
| 113 | 1.5.3.7.1.3 | ✔Desague Pluvial Techo | 3d | 2025-06-02 A | 2025-06-04 A | 54FS-8d | 100% |  | 2025-06-02 | 2025-06-04 | 3d |  |  |  | Mariana V | 24h | 24h | 3 |
| 114 | 1.5.3.7.1.4 | Salidas pluviales al exterior | 22d | 2025-07-31 | 2025-09-01 | 111, 112, 113 |  |  |  |  |  | 202.2d |  |  | Mariana V | 176h |  |  |
| 115 | 1.5.3.7.2 | **Instalaciones Cloacales** | 253d | 2024-10-25 A | 2025-11-07 |  | 65% | 88.73d | 2024-10-25 | 2025-04-14 | 109d | 155d |  |  |  | 1656h | 1075.2h | 297 |
| 116 | 1.5.3.7.2.1 | Desagues Cloacales PB | 192d | 2024-10-25 A | 2025-07-21 | 68SS | 70% | 57.6d | 2024-10-25 | 2024-11-04 | 7d | -136d | 0d |  | Mariana V | 1536h | 1075.2h | 9 |
| 117 | 1.5.3.7.2.2 | Desague Cloacales PA | 10d | 2025-07-14 | 2025-07-25 |  |  |  | 2025-02-13 | 2025-02-19 | 5d | -140d | 0d | start no earlier than 2025-07-14 | Mariana V | 80h |  | 5 |
| 118 | 1.5.3.7.2.3 | Camara septica y Sangria | 5d | 2025-11-03 | 2025-11-07 |  |  |  | 2025-04-08 | 2025-04-14 | 5d | 155d |  | start no earlier than 2025-11-03 | Mariana V | 40h |  | 7 |
| 119 | 1.5.3.7.3 | **Instalaciones Agua fria y caliente** | 168d | 2025-06-09 A | 2026-02-09 |  | 49% | 86.51d | 2025-04-15 | 2025-12-10 | 165d | 93d |  |  |  | 536h | 260h | 549 |
| 120 | 1.5.3.7.3.1 | Instalacion de agua PB | 19d | 2025-06-24 A | 2025-07-18 | 122 | 50% | 9.5d | 2025-04-15 | 2025-04-30 | 12d | -135d | 0d |  | Mariana V | 152h | 76h | 19 |
| 121 | 1.5.3.7.3.2 | Instalacion de agua PA | 24d | 2025-06-24 A | 2025-07-25 | 122 | 50% | 12d | 2025-07-28 | 2025-08-08 | 10d | -140d | 0d |  | Mariana V | 192h | 96h | 15 |
| 122 | 1.5.3.7.3.3 | ✔Armado de colector y tanques | 11d | 2025-06-09 A | 2025-06-23 A |  | 100% |  | 2025-08-11 | 2025-08-13 | 3d |  |  | start no earlier than 2025-06-09 | Mariana V | 88h | 88h | 3 |
| 123 | 1.5.3.7.3.4 | Colocacion Griferia | 3d | 2026-02-05 | 2026-02-09 | 124 |  |  | 2025-12-08 | 2025-12-10 | 3d | 93d |  |  | Mariana V | 24h |  | 3 |
| 124 | 1.5.3.7.3.5 | Colocacion Artefactos | 10d | 2026-01-22 | 2026-02-04 | 169 |  |  | 2025-11-24 | 2025-12-05 | 10d | 93d | 0d |  | Mariana V | 80h |  | 15 |
| 125 | 1.5.3.7.4 | **Instalacion de Gas** | 41d | 2025-07-10 | 2025-09-05 |  |  |  | 2025-08-11 | 2025-10-10 | 44d | -135d | 0d |  |  | 136h |  | 486 |
| 126 | 1.5.3.7.4.1 | Armado de cañerias internas | 7d | 2025-07-10 | 2025-07-18 | 121FS-12d |  |  | 2025-08-11 | 2025-08-29 | 15d | -135d | 0d |  | Mariana V | 56h |  | 21 |
| 127 | 1.5.3.7.4.2 | Conexión a red de gas | 10d | 2025-08-25 | 2025-09-05 | 71 |  |  | 2025-09-29 | 2025-10-10 | 10d | 199d |  |  | Mariana V | 80h |  | 14 |

| ID | WBS | Task | Duration | Start | Finish | Predecessors | Complete | Remaining | Baseline start | Baseline finish | Baseline duration | Total slack | Free slack | Constraint | Resources | Work | Actual work | Número1 |
| --- | --- | --- | --- | --- | --- | --- | --- | --- | --- | --- | --- | --- | --- | --- | --- | --- | --- | --- |
| 128 | 1.5.3.7.5 | **Instalacion Aire Acondicionado** | 474d | 2025-06-09 A | 2027-05-04 |  | 22% | 370.31d | 2025-10-09 | 2027-03-03 | 347d | -213d | 0d |  |  | 160h | 56h | 1020 |
| 129 | 1.5.3.7.5.1 | ✔Colocacion kit de instalacion | 7d | 2025-06-09 A | 2025-06-17 A |  | 100% |  | 2025-10-09 | 2025-10-14 | 4d |  |  | start no earlier than 2025-06-09 | Mariana V | 56h | 56h | 4 |
| 130 | 1.5.3.7.5.2 | Instalación Cañeria A°A° | 10d | 2025-07-10 | 2025-07-23 |  |  |  |  |  |  | 230d |  | start no earlier than 2025-07-10 | Mariana V | 80h |  |  |
| 131 | 1.5.3.7.5.3 | Conductos de bajo silueta | 12d | 2025-12-29 | 2026-01-15 | 169SF |  |  |  |  |  | 91d | 0d | start no earlier than 2025-01-02 |  |  |  |  |
| 132 | 1.5.3.7.5.4 | Colocacion de equipos | 3d | 2027-04-30 | 2027-05-04 | 171 |  |  | 2027-03-01 | 2027-03-03 | 3d | -213d | 0d |  | Mariana V | 24h |  | 3 |
| 133 | 1.5.3.7.6 | **Instalacion Calefaccion** | 18d | 2025-07-28 | 2025-08-21 |  |  |  | 2025-09-01 | 2025-09-25 | 19d | -140d | 0d |  |  | 152h |  | 471 |
| 134 | 1.5.3.7.6.1 | Piso Radiante en PB | 10d | 2025-07-28 | 2025-08-08 | 126, 116, 117, 120, 121 |  |  | 2025-09-01 | 2025-09-12 | 10d | -148d | 0d |  | Mariana V | 80h |  | 14 |
| 135 | 1.5.3.7.6.2 | Piso Radiante en PA | 6d | 2025-08-11 | 2025-08-18 | 134 |  |  | 2025-09-15 | 2025-09-22 | 6d | -148d | 0d |  | Mariana V | 48h |  | 8 |
| 136 | 1.5.3.7.6.3 | Colector | 3d | 2025-08-19 | 2025-08-21 | 135 |  |  | 2025-09-23 | 2025-09-25 | 3d | 210d |  |  | Mariana V | 24h |  | 6 |
| 137 | 1.5.3.7.7 | **Instalacion Electricas** | 257d | 2025-02-13 A | 2026-02-25 |  | 16% | 216.57d | 2025-02-13 | 2025-12-26 | 216d | 82d |  |  |  | 712h | 112h | 568 |
| 138 | 1.5.3.7.7.1 | Canalizacion en muros PB | 24d | 2025-06-24 A | 2025-07-25 | 120SS | 33% | 16d | 2025-04-15 | 2025-04-28 | 10d | 228d |  |  | Mariana V | 192h | 64h | 15 |
| 139 | 1.5.3.7.7.2 | ✔Canalizacion de cañerias y bocas en losa PB | 3d | 2025-02-13 A | 2025-02-17 A | 53FS-10d | 100% |  | 2025-02-13 | 2025-02-17 | 3d |  |  |  | Mariana V | 24h | 24h | 3 |
| 140 | 1.5.3.7.7.3 | Canalizacion en muros PA | 24d | 2025-06-24 | 2025-07-25 | 121SS |  |  | 2025-07-28 | 2025-08-06 | 8d | 228d |  |  | Mariana V | 192h |  | 11 |
| 141 | 1.5.3.7.7.4 | ✔Canalizacion de cañerias y bocas en losa PA | 3d | 2025-03-21 A | 2025-03-25 A | 54FS-10d | 100% |  | 2025-05-29 | 2025-06-02 | 3d |  |  |  | Mariana V | 24h | 24h | 5 |
| 142 | 1.5.3.7.7.5 | Cableado General | 15d | 2026-01-22 | 2026-02-11 | 169 |  |  | 2025-11-24 | 2025-12-12 | 15d | 82d | 0d |  | Mariana V | 120h |  | 25 |
| 143 | 1.5.3.7.7.6 | Armado de Tomas y puntos de encendido | 5d | 2026-02-12 | 2026-02-18 | 142 |  |  | 2025-12-15 | 2025-12-19 | 5d | 82d | 0d |  | Mariana V | 40h |  | 7 |
| 144 | 1.5.3.7.7.7 | Armado de tablero general | 5d | 2026-02-19 | 2026-02-25 | 143 |  |  | 2025-12-22 | 2025-12-26 | 5d | 82d |  |  | Mariana V | 40h |  | 7 |
| 145 | 1.5.3.7.7.8 | Colocacion de Artefactos | 10d | 2026-01-22 | 2026-02-04 | 169 |  |  | 2025-11-24 | 2025-12-05 | 10d | 96d |  |  | Mariana V | 80h |  | 15 |
| 146 | 1.5.3.8 | **PISOS Y REVESTIMIENTO** | 237d | 2025-07-21 | 2026-07-01 |  |  |  | 2025-07-24 | 2026-05-01 | 192d | -4d | 0d |  |  | 1360h |  | 701 |
| 147 | 1.5.3.8.1 | **Revestimiento Exteriores** | 237d | 2025-07-21 | 2026-07-01 |  |  |  | 2025-07-24 | 2026-05-01 | 192d | -4d | 0d |  |  | 440h |  | 701 |
| 148 | 1.5.3.8.1.1 | Revestimiento en marmol travertino | 5d | 2026-06-25 | 2026-07-01 | 152 |  |  | 2026-04-27 | 2026-05-01 | 5d | -4d | 0d |  | Mariana V | 40h |  | 7 |
| 149 | 1.5.3.8.1.2 | Revestimiento en piedra | 50d | 2025-07-21 | 2025-09-26 | 80 |  |  | 2025-07-24 | 2025-10-01 | 50d | 184d |  |  | Mariana V | 400h |  | 72 |
| 150 | 1.5.3.8.2 | **Pisos Exteriores** | 20d | 2026-06-04 | 2026-07-01 |  |  |  | 2026-04-06 | 2026-05-01 | 19d | -4d | 0d |  |  | 160h |  | 701 |
| 151 | 1.5.3.8.2.1 | Hormigo alisado | 5d | 2026-06-25 | 2026-07-01 | 152 |  |  | 2026-04-27 | 2026-05-01 | 5d | -4d | 0d |  | Mariana V | 40h |  | 7 |
| 152 | 1.5.3.8.2.2 | Porcellanato Galeria | 15d | 2026-06-04 | 2026-06-24 | 157 |  |  | 2026-04-06 | 2026-04-24 | 15d | -4d | 0d |  | Mariana V | 120h |  | 19 |

| ID | WBS | Task | Type | Duration | Start | Finish | Predecessors | Baseline start | Baseline finish | Baseline duration | Total slack | Free slack | Constraint | Deadline | Resources | Work | Número1 |
| --- | --- | --- | --- | --- | --- | --- | --- | --- | --- | --- | --- | --- | --- | --- | --- | --- | --- |
| 153 | 1.5.3.8.3 | **Pisos Interiores** |  | 90d | 2026-01-22 | 2026-06-03 |  | 2025-11-24 | 2026-04-03 | 89d | -4d | 0d |  |  |  | 760h | 669 |
| 154 | 1.5.3.8.3.1 | Pisos Planta baja |  | 45d | 2026-01-22 | 2026-03-25 | 169 | 2025-11-24 | 2026-01-23 | 45d | -4d | 0d |  |  | Mariana V | 360h | 68 |
| 155 | 1.5.3.8.3.2 | Zocalos Planta baja |  | 10d | 2026-05-07 | 2026-05-20 | 156 | 2026-03-09 | 2026-03-20 | 10d | -4d | 0d |  |  | Mariana V | 80h | 14 |
| 156 | 1.5.3.8.3.3 | Pisos planta alta |  | 30d | 2026-03-26 | 2026-05-06 | 154 | 2026-01-26 | 2026-03-06 | 30d | -3d | 0d |  |  | Mariana V | 240h | 43 |
| 157 | 1.5.3.8.3.4 | Zocalos Planta alta |  | 10d | 2026-05-21 | 2026-06-03 | 155 | 2026-03-23 | 2026-04-03 | 10d | -4d | 0d |  |  | Mariana V | 80h | 14 |
| 158 | 1.5.3.9 | **PINTURA** |  | 62d | 2026-01-02 | 2026-04-02 |  | 2025-11-03 | 2026-01-30 | 61d | -204d | 0d |  |  |  | 584h | 605 |
| 159 | 1.5.3.9.1 | **Pintura Interior** |  | 44d | 2026-01-02 | 2026-03-05 |  | 2025-11-03 | 2026-01-02 | 41d | -204d | 0d |  |  |  | 424h | 576 |
| 160 | 1.5.3.9.1.1 | Latex Interior PB |  | 15d | 2026-01-02 | 2026-01-22 | 169FS-14d | 2025-11-03 | 2025-11-21 | 15d | 105d |  |  |  | Mariana V | 120h | 22 |
| 161 | 1.5.3.9.1.2 | Latex cielorraso PB |  | 15d | 2026-01-30 | 2026-02-19 | 162 | 2025-12-01 | 2025-12-19 | 15d | -213d | 0d |  |  | Mariana V | 120h | 23 |
| 162 | 1.5.3.9.1.3 | Latex Interior PA |  | 13d | 2026-01-13 | 2026-01-29 | 169FS-7d | 2025-11-12 | 2025-11-28 | 13d | -212d | 0d |  |  | Mariana V | 104h | 18 |
| 163 | 1.5.3.9.1.4 | Latex Cielorraso PA |  | 10d | 2026-02-20 | 2026-03-05 | 161 | 2025-12-22 | 2026-01-02 | 10d | -213d | 0d |  |  | Mariana V | 80h | 14 |
| 164 | 1.5.3.9.2 | **Pintura Exterior** |  | 18d | 2026-03-06 | 2026-04-02 |  | 2026-01-05 | 2026-01-30 | 20d | 56d |  |  |  |  | 160h | 605 |
| 165 | 1.5.3.9.2.1 | Revestimiento Plastico |  | 20d | 2026-03-06 | 2026-04-02 | 163 | 2026-01-05 | 2026-01-30 | 20d | 56d |  |  |  | Mariana V | 160h | 29 |
| 166 | 1.5.3.10 | **CARPINTERIA** |  | 5d | 2026-01-15 | 2026-01-21 |  | 2025-11-17 | 2025-11-21 | 4d | -211d | 0d |  |  |  | 104h | 529 |
| 167 | 1.5.3.10.1 | Puertas de Madera |  | 5d | 2026-01-15 | 2026-01-21 | 169SS | 2025-11-17 | 2025-11-21 | 5d | 103d |  | start no earlier than 2026-01-15 |  | Mariana V | 40h | 8 |
| 168 | 1.5.3.10.2 | Puertas de Aluminio |  | 3d | 2026-01-15 | 2026-01-19 | 169SS | 2025-11-17 | 2025-11-19 | 3d | 105d |  | start no earlier than 2026-01-15 |  | Mariana V | 24h | 6 |
| 169 | 1.5.3.10.3 | Aberturas de Aluminio |  | 5d | 2026-01-15 | 2026-01-21 | 72FS+30d | 2025-11-17 | 2025-11-21 | 5d | -211d | 0d | start no earlier than 2026-01-15 |  | Mariana V | 40h | 8 |
| 170 | 1.5.3.11 | **EQUIPAMIENTO FIJO** |  | 286d | 2026-03-06 | 2027-04-29 |  | 2026-01-05 | 2027-02-26 | 287d | -213d | 0d |  |  |  | 2400h | 1017 |
| 171 | 1.5.3.11.1 | Muebles Interiores |  | 300d | 2026-03-06 | 2027-04-29 | 163 | 2026-01-05 | 2027-02-26 | 300d | -213d | 0d |  |  | Mariana V | 2400h | 441 |
| 172 | 1.5.3.12 | **PILETA** |  | 30d | 2025-08-25 | 2025-10-03 |  | 2025-09-29 | 2025-11-07 | 29d | 179d |  |  |  |  | 240h | 515 |
| 173 | 1.5.3.12.1 | Piscina con desborde infinito |  | 30d | 2025-08-25 | 2025-10-03 | 71 | 2025-09-29 | 2025-11-07 | 30d | 179d |  |  |  | Mariana V | 240h | 43 |
| 174 | 1.5.4 | Firma Acta recepcion Provisoria | milestone | 0d | 2027-05-04 | 2027-05-04 | 19 | 2027-03-03 | 2027-03-03 |  | -213d | 0d |  | 2026-06-25 | Mariana V |  |  |
| 175 | 1.6 | Postobra Activo |  | 33d | 2027-03-19 | 2027-05-04 | 174FF | 2027-01-18 | 2027-03-03 | 33d | 249d |  |  |  | Posventa | 264h |  |
| 176 | 1.7 | Firma Acta recepcion Definitiva | milestone | 0d | 2028-04-28 | 2028-04-28 | 174FS+12emo | 2028-02-26 | 2028-02-26 |  | 0d |  |  |  | Posventa |  |  |
| 177 | 1.8 | Interiorismo |  | 110d | 2026-12-02 | 2027-05-04 | 19FF | 2026-10-01 | 2027-03-03 | 110d | 247d |  |  |  | Mariana V | 880h |  |
| 178 | 1.9 | StanBy Por definición de cliente |  | 186d | 2025-10-01 | 2026-06-17 |  |  |  |  | 465d |  | start no earlier than 2025-10-01 |  | Mariana V | 1488h |  |

Notes:
- 166: Postergado por demoras en las compras por parte del cliente
